# Plan_AN_AT_CC_29052018v2.xls

How a schedule from MS Project changed from version to version. A marks actual dates.

## Version 1 (data date 2018-05-29, saved 2018-05-30, file Plan_AN_AT_CC_29052018v2.xls.mpp)

Note of the change: Merge pull request #1 from ProyectoInicial/master

| ID | WBS | Task | Duration | Start | Finish | Predecessors | Complete | Total float | Constraint |
| --- | --- | --- | --- | --- | --- | --- | --- | --- | --- |
| 1 | 1 | **001-ITSC_TMS Plan de Analisis y Desarrollo** | 99.25d? | 2018-06-04 A | 2018-08-10 |  | 1% | 0d |  |
| 2 | 1.1 | **AN_Analisis** | 66.14d? | 2018-06-04 A | 2018-07-19 |  | 2% | 33.11d |  |
| 3 | 1.1.1 | **AN Analisis de Negocio** | 36.1d? | 2018-06-04 A | 2018-06-28 |  | 7% | 63.15d |  |
| 4 | 1.1.1.1 | **AN - Modulo Catalogos Maestros** | 36.1d? | 2018-06-04 A | 2018-06-28 |  | 4% | 63.15d |  |
| 5 | 1.1.1.1.1 | **AN - Catalogo Rol** | 4d | 2018-06-04 | 2018-06-05 |  |  | 63.75d |  |
| 6 |  | AN - Requerimientos de Negocio | 0.5d | 2018-06-04 | 2018-06-04 |  |  | 66d |  |
| 7 |  | AN - Casos de Uso | 1.25d | 2018-06-05 | 2018-06-05 | 6 |  | 63.75d | finish no earlier than 2018-06-05 |
| 8 | 1.1.1.1.2 | **AN - Catalogo Actores** | 1.75d? | 2018-06-06 | 2018-06-06 |  |  | 63.75d |  |
| 9 |  | AN - Requerimientos de Negocio | 0.5d? | 2018-06-06 | 2018-06-06 | 7 |  | 63.75d |  |
| 10 |  | AN - Casos de Uso | 1.25d? | 2018-06-06 | 2018-06-06 | 9 |  | 63.75d |  |
| 11 | 1.1.1.1.3 | **AN - Catalogo Actores-Roles** | 19.85d? | 2018-06-06 | 2018-06-20 |  |  | 63.15d |  |
| 12 |  | AN - Requerimientos de Negocio | 0.5d? | 2018-06-06 | 2018-06-07 | 10 |  | 63.75d |  |
| 13 |  | AN - Casos de Uso | 1.25d? | 2018-06-19 | 2018-06-20 | 12 |  | 63.15d |  |
| 14 | 1.1.1.1.4 | **AN - Catalogo Contratos** | 1.75d? | 2018-06-20 | 2018-06-21 |  |  | 63.15d |  |
| 15 |  | AN - Requerimientos de Negocio | 0.5d? | 2018-06-20 | 2018-06-21 | 13 |  | 63.15d |  |
| 16 |  | AN - Casos de Uso | 1.25d? | 2018-06-21 | 2018-06-21 | 15 |  | 63.15d |  |
| 17 | 1.1.1.1.5 | **AN - Catalogo Tipos de Tarifa** | 1.75d? | 2018-06-21 | 2018-06-22 |  |  | 63.15d |  |
| 18 |  | AN - Requerimientos de Negocio | 0.5d? | 2018-06-21 | 2018-06-21 | 16 |  | 63.15d |  |
| 19 |  | AN - Casos de Uso | 1.25d? | 2018-06-21 | 2018-06-22 | 18 |  | 63.15d |  |
| 20 | 1.1.1.1.6 | **AN - Catalogo Tarifa** | 1.75d? | 2018-06-22 | 2018-06-25 |  |  | 63.15d |  |
| 21 |  | AN - Requerimientos de Negocio | 0.5d? | 2018-06-22 | 2018-06-22 | 19 |  | 63.15d |  |
| 22 |  | AN - Casos de Uso | 1.25d? | 2018-06-22 | 2018-06-25 | 21 |  | 63.15d |  |
| 23 | 1.1.1.1.7 | **AN - Catalogo Conceptos de Tarifa** | 1.75d? | 2018-06-25 | 2018-06-26 |  |  | 63.15d |  |
| 24 |  | AN - Requerimientos de Negocio | 0.5d? | 2018-06-25 | 2018-06-25 | 22 |  | 63.15d |  |
| 25 |  | AN - Casos de Uso | 1.25d? | 2018-06-25 | 2018-06-26 | 24 |  | 63.15d |  |
| 26 | 1.1.1.1.8 | **AN - Catalogo Choferes** | 1.75d? | 2018-06-26 | 2018-06-27 |  |  | 63.15d |  |
| 27 |  | AN - Requerimientos de Negocio | 0.5d? | 2018-06-26 | 2018-06-26 | 25 |  | 63.15d |  |
| 28 |  | AN - Casos de Uso | 1.25d? | 2018-06-26 | 2018-06-27 | 27 |  | 63.15d |  |
| 29 | 1.1.1.1.9 | **AN - Catalogo Camiones** | 1.75d? | 2018-06-27 | 2018-06-28 |  |  | 63.15d |  |
| 30 |  | AN - Requerimientos de Negocio | 0.5d? | 2018-06-27 | 2018-06-27 | 28 |  | 63.15d |  |
| 31 |  | AN - Casos de Uso | 1.25d? | 2018-06-27 | 2018-06-28 | 30 |  | 63.15d |  |
| 32 | 1.1.1.1.10 | **AN - Catalogo Responsables de Incidencias** | 2.62d? | 2018-06-04 A | 2018-06-05 |  | 32% | 38.8d |  |
| 33 |  | AN - Requerimientos de Negocio | 0.5d? | 2018-06-04 A | 2018-06-04 A | 31 | 100% |  |  |
| 34 |  | AN - Casos de Uso | 2.62d? | 2018-06-04 A | 2018-06-05 | 33 | 19% | 38.8d |  |
| 35 | 1.1.1.1.11 | **AN - Catalogo Tipos de Incidencias** | 1.75d? | 2018-06-05 | 2018-06-06 |  |  | 38.8d |  |
| 36 |  | AN - Requerimientos de Negocio | 0.5d? | 2018-06-05 | 2018-06-05 | 34 |  | 38.8d |  |
| 37 |  | AN - Casos de Uso | 1.25d? | 2018-06-05 | 2018-06-06 | 36 |  | 38.8d |  |
| 38 | 1.1.1.1.12 | **AN - Catalogo Tipos de Viaje** | 1.75d? | 2018-06-06 | 2018-06-07 |  |  | 38.8d |  |
| 39 |  | AN - Requerimientos de Negocio | 0.5d? | 2018-06-06 | 2018-06-06 | 37 |  | 38.8d |  |
| 40 |  | AN - Casos de Uso | 1.25d? | 2018-06-06 | 2018-06-07 | 39 |  | 38.8d |  |
| 41 | 1.1.1.1.13 | **AN - Catalogo Tipos de Carga/Descarga** | 1.75d? | 2018-06-07 | 2018-06-07 |  |  | 38.8d |  |
| 42 |  | AN - Requerimientos de Negocio | 0.5d? | 2018-06-07 | 2018-06-07 | 40 |  | 38.8d |  |
| 43 |  | AN - Casos de Uso | 1.25d? | 2018-06-07 | 2018-06-07 | 42 |  | 38.8d |  |
| 44 | 1.1.1.1.14 | **AN - Catalogo Clientes de Entrega** | 1.75d? | 2018-06-07 | 2018-06-08 |  |  | 38.8d |  |
| 45 |  | AN - Requerimientos de Negocio | 0.5d? | 2018-06-07 | 2018-06-08 | 43 |  | 38.8d |  |
| 46 |  | AN - Casos de Uso | 1.25d? | 2018-06-08 | 2018-06-08 | 45 |  | 38.8d |  |
| 47 | 1.1.1.1.15 | **AN - Catalogo Clientes Solicidates** | 1.75d? | 2018-06-08 | 2018-06-11 |  |  | 38.8d |  |
| 48 |  | AN - Requerimientos de Negocio | 0.5d? | 2018-06-08 | 2018-06-11 | 46 |  | 38.8d |  |
| 49 |  | AN - Casos de Uso | 1.25d? | 2018-06-11 | 2018-06-11 | 48 |  | 38.8d |  |
| 50 | 1.1.1.2 | **AN - Modulo Seguridad** | 4.5d? | 2018-06-11 | 2018-06-13 |  |  | 38.8d |  |
| 51 | 1.1.1.2.1 | **AN - Roles** | 1.5d? | 2018-06-11 | 2018-06-12 |  |  | 38.8d |  |
| 52 |  | AN - Requerimientos de Negocio | 0.75d? | 2018-06-11 | 2018-06-12 | 49 |  | 38.8d |  |
| 53 |  | AN - Casos de Uso | 0.75d? | 2018-06-12 | 2018-06-12 | 52 |  | 38.8d |  |
| 54 | 1.1.1.2.2 | **AN - Configuracion** | 1.5d? | 2018-06-12 | 2018-06-13 |  |  | 38.8d |  |
| 55 |  | AN - Requerimientos de Negocio | 0.75d? | 2018-06-12 | 2018-06-12 | 53 |  | 38.8d |  |
| 56 |  | AN - Casos de Uso | 0.75d? | 2018-06-12 | 2018-06-13 | 55 |  | 38.8d |  |
| 57 | 1.1.1.2.3 | **AN - Permisos** | 1.5d? | 2018-06-13 | 2018-06-13 |  |  | 38.8d |  |
| 58 |  | AN - Requerimientos de Negocio | 0.75d? | 2018-06-13 | 2018-06-13 | 56 |  | 38.8d |  |
| 59 |  | AN - Casos de Uso | 0.75d? | 2018-06-13 | 2018-06-13 | 58 |  | 38.8d |  |
| 60 | 1.1.1.3 | **AN - Modulo Alarmas/Reportes/Indicadores de gestión** | 4.5d? | 2018-06-13 | 2018-06-18 |  |  | 38.8d |  |
| 61 | 1.1.1.3.1 | **AN - Alarmas** | 1.5d? | 2018-06-13 | 2018-06-14 |  |  | 38.8d |  |
| 62 |  | AN - Requerimientos de Negocio | 0.75d? | 2018-06-13 | 2018-06-14 | 59 |  | 38.8d |  |
| 63 |  | AN - Casos de Uso | 0.75d? | 2018-06-14 | 2018-06-14 | 62 |  | 38.8d |  |
| 64 | 1.1.1.3.2 | **AN - Reportes** | 1.5d? | 2018-06-14 | 2018-06-15 |  |  | 38.8d |  |
| 65 |  | AN - Requerimientos de Negocio | 0.75d? | 2018-06-14 | 2018-06-15 | 63 |  | 38.8d |  |
| 66 |  | AN - Casos de Uso | 0.75d? | 2018-06-15 | 2018-06-15 | 65 |  | 38.8d |  |
| 67 | 1.1.1.3.3 | **AN - Indicadores de gestión** | 1.5d? | 2018-06-15 | 2018-06-18 |  |  | 38.8d |  |
| 68 |  | AN - Requerimientos de Negocio | 0.75d? | 2018-06-15 | 2018-06-15 | 66 |  | 38.8d |  |
| 69 |  | AN - Casos de Uso | 0.75d? | 2018-06-15 | 2018-06-18 | 68 |  | 38.8d |  |
| 70 |  | AT - Revisión interna | 2d | 2018-06-08 A | 2018-06-08 A | 69 | 100% |  |  |

| ID | WBS | Task | Duration | Start | Finish | Predecessors | Complete | Total float |
| --- | --- | --- | --- | --- | --- | --- | --- | --- |
| 71 |  | AT - Ajustes de comentarios del usuario | 1.33d | 2018-06-11 | 2018-06-11 | 70 |  | 33.11d |
| 72 |  | AT - Peer Review y Vo Bo | 0.73d | 2018-06-11 | 2018-06-12 | 71 |  | 33.11d |
| 73 | 1.1.2 | **AT Analisis de Tecnico** | 66.14d? | 2018-06-04 A | 2018-07-19 |  | 1% | 33.11d |
| 74 | 1.1.2.1 | **IAT - Revisión de documentación entregada por Negocio** | 18.38d? | 2018-06-12 | 2018-06-25 |  |  | 33.11d |
| 75 |  | AT - Requerimientos de Negocio | 1.5d | 2018-06-12 | 2018-06-12 | 72 |  | 33.11d |
| 76 |  | AT - Casos de Uso | 16.88d? | 2018-06-12 | 2018-06-25 | 75 |  | 33.11d |
| 77 | 1.1.2.2 | **AT - Elaboracion de propuesta de Arquitectura de Solucion** | 14d? | 2018-06-25 | 2018-07-04 |  |  | 33.11d |
| 78 |  | AT - Requerimientos tecnicos | 2d? | 2018-06-25 | 2018-06-26 | 76 |  | 33.11d |
| 79 |  | AT - Analisis tecnico | 2d? | 2018-06-26 | 2018-06-27 | 78 |  | 33.11d |
| 80 |  | AT - Requerimientos de solucion | 2d? | 2018-06-27 | 2018-06-28 | 79 |  | 33.11d |
| 81 |  | AT - Escalabilidad | 2d? | 2018-06-28 | 2018-06-29 | 80 |  | 33.11d |
| 82 |  | AT - Modelado BD | 2d? | 2018-06-29 | 2018-07-02 | 81 |  | 33.11d |
| 83 |  | AT - Herramientas para solucion | 2d? | 2018-07-02 | 2018-07-03 | 82 |  | 33.11d |
| 84 |  | AT - Aplicación responsiva para navegadores web | 2d? | 2018-07-03 | 2018-07-04 | 83 |  | 33.11d |
| 85 |  | AT - Peer Review y Vo Bo Arquitectura de Solucion | 1d | 2018-07-04 | 2018-07-04 | 84 |  | 33.11d |
| 86 | 1.1.2.4 | **AT - Elaboración de documentos AT** | 66.14d? | 2018-06-04 A | 2018-07-19 |  | 1% | 33.11d |
| 87 | 1.1.2.4.1 | **AT - Modulo Catalogos Maestros** | 66.14d? | 2018-06-04 A | 2018-07-19 |  | 1% | 33.11d |
| 88 | 1.1.2.4.1.1 | **AT - Catalogo Rol** | 4.8d | 2018-07-04 | 2018-07-09 |  |  | 49.01d |
| 89 |  | AT - Elaboración Bocetos de Archivos | 1.6d | 2018-07-04 | 2018-07-05 | 85 |  | 49.01d |
| 90 |  | AT - Elaboración Bocetos de Pantallas | 3.2d | 2018-07-05 | 2018-07-09 | 89 |  | 49.01d |
| 91 | 1.1.2.4.1.2 | **AT - Catalogo Actores** | 1.5d? | 2018-07-04 | 2018-07-05 |  |  | 33.11d |
| 92 |  | AT - Elaboración Bocetos de Archivos | 0.5d? | 2018-07-04 | 2018-07-04 | 85 |  | 33.11d |
| 93 |  | AT - Elaboración Bocetos de Pantallas | 1d? | 2018-07-04 | 2018-07-05 | 92 |  | 33.11d |
| 94 | 1.1.2.4.1.3 | **AT - Catalogo Actores-Roles** | 4.8d? | 2018-07-05 | 2018-07-09 |  |  | 47.51d |
| 95 |  | AT - Elaboración Bocetos de Archivos | 1.6d? | 2018-07-05 | 2018-07-06 | 93 |  | 47.51d |
| 96 |  | AT - Elaboración Bocetos de Pantallas | 3.2d? | 2018-07-06 | 2018-07-09 | 95 |  | 47.51d |
| 97 | 1.1.2.4.1.4 | **AT - Catalogo Contratos** | 4.8d? | 2018-07-05 | 2018-07-09 |  |  | 33.11d |
| 98 |  | AT - Elaboración Bocetos de Archivos | 1.6d? | 2018-07-05 | 2018-07-06 | 93 |  | 33.11d |
| 99 |  | AT - Elaboración Bocetos de Pantallas | 3.2d? | 2018-07-06 | 2018-07-09 | 98 |  | 33.11d |
| 100 | 1.1.2.4.1.5 | **AT - Catalogo Tipos de Tarifa** | 4.8d? | 2018-07-09 | 2018-07-12 |  |  | 42.71d |
| 101 |  | AT - Elaboración Bocetos de Archivos | 1.6d? | 2018-07-09 | 2018-07-10 | 99 |  | 42.71d |
| 102 |  | AT - Elaboración Bocetos de Pantallas | 3.2d? | 2018-07-10 | 2018-07-12 | 101 |  | 42.71d |
| 103 | 1.1.2.4.1.6 | **AT - Catalogo Tarifa** | 4.8d? | 2018-07-09 | 2018-07-12 |  |  | 33.11d |
| 104 |  | AT - Elaboración Bocetos de Archivos | 1.6d? | 2018-07-09 | 2018-07-10 | 99 |  | 33.11d |
| 105 |  | AT - Elaboración Bocetos de Pantallas | 3.2d? | 2018-07-10 | 2018-07-12 | 104 |  | 33.11d |
| 106 | 1.1.2.4.1.7 | **AT - Catalogo Conceptos de Tarifa** | 4.8d? | 2018-07-12 | 2018-07-16 |  |  | 33.11d |
| 107 |  | AT - Elaboración Bocetos de Archivos | 1.6d? | 2018-07-12 | 2018-07-13 | 105 |  | 33.11d |
| 108 |  | AT - Elaboración Bocetos de Pantallas | 3.2d? | 2018-07-13 | 2018-07-16 | 107 |  | 37.91d |
| 109 | 1.1.2.4.1.8 | **AT - Catalogo Choferes** | 4.8d? | 2018-07-12 | 2018-07-16 |  |  | 34.71d |
| 110 |  | AT - Elaboración Bocetos de Archivos | 1.6d? | 2018-07-12 | 2018-07-13 | 105 |  | 41.11d |
| 111 |  | AT - Elaboración Bocetos de Pantallas | 3.2d? | 2018-07-13 | 2018-07-16 | 107 |  | 33.11d |
| 112 | 1.1.2.4.1.9 | **AT - Catalogo Camiones** | 4.8d? | 2018-07-16 | 2018-07-19 |  |  | 33.11d |
| 113 |  | AT - Elaboración Bocetos de Archivos | 1.6d? | 2018-07-16 | 2018-07-17 | 111 |  | 33.11d |
| 114 |  | AT - Elaboración Bocetos de Pantallas | 3.2d? | 2018-07-17 | 2018-07-19 | 113 |  | 33.11d |
| 115 | 1.1.2.4.1.10 | **AT - Catalogo Responsables de Incidencias** | 2.38d? | 2018-06-04 A | 2018-06-05 |  | 35% | 0d |
| 116 |  | AT - Elaboración Bocetos de Archivos | 0.5d? | 2018-06-04 A | 2018-06-04 A | 111 | 100% |  |
| 117 |  | AT - Elaboración Bocetos de Pantallas | 2.38d? | 2018-06-04 A | 2018-06-05 | 116 | 21% | 0d |
| 118 | 1.1.2.4.1.11 | **AT - Catalogo Tipos de Incidencias** | 4.8d? | 2018-06-05 | 2018-06-07 |  |  | 92.07d |
| 119 |  | AT - Elaboración Bocetos de Archivos | 1.6d? | 2018-06-05 | 2018-06-05 | 117 |  | 92.07d |
| 120 |  | AT - Elaboración Bocetos de Pantallas | 3.2d? | 2018-06-05 | 2018-06-07 | 119 |  | 92.07d |
| 121 | 1.1.2.4.1.12 | **AT - Catalogo Tipos de Viaje** | 4.8d? | 2018-06-05 | 2018-06-07 |  |  | 0d |
| 122 |  | AT - Elaboración Bocetos de Archivos | 1.6d? | 2018-06-05 | 2018-06-05 | 117 |  | 0d |
| 123 |  | AT - Elaboración Bocetos de Pantallas | 3.2d? | 2018-06-05 | 2018-06-07 | 122 |  | 0d |
| 124 | 1.1.2.4.1.13 | **AT - Catalogo Tipos de Carga/Descarga** | 4.8d? | 2018-06-07 | 2018-06-11 |  |  | 87.27d |
| 125 |  | AT - Elaboración Bocetos de Archivos | 1.6d? | 2018-06-07 | 2018-06-08 | 123 |  | 87.27d |
| 126 |  | AT - Elaboración Bocetos de Pantallas | 3.2d? | 2018-06-08 | 2018-06-11 | 125 |  | 87.27d |
| 127 | 1.1.2.4.1.14 | **AT - Catalogo Clientes de Entrega** | 4.8d? | 2018-06-07 | 2018-06-11 |  |  | 87.27d |
| 128 |  | AT - Elaboración Bocetos de Archivos | 1.6d? | 2018-06-07 | 2018-06-08 | 123 |  | 87.27d |
| 129 |  | AT - Elaboración Bocetos de Pantallas | 3.2d? | 2018-06-08 | 2018-06-11 | 128 |  | 87.27d |
| 130 | 1.1.2.4.1.15 | **AT - Catalogo Clientes Solicidates** | 4.8d? | 2018-06-07 | 2018-06-11 |  |  | 0d |
| 131 |  | AT - Elaboración Bocetos de Archivos | 1.6d? | 2018-06-07 | 2018-06-08 | 123 |  | 0d |
| 132 |  | AT - Elaboración Bocetos de Pantallas | 3.2d? | 2018-06-08 | 2018-06-11 | 131 |  | 0d |
| 133 | 1.1.2.4.2 | **AT - Modulo Seguridad** | 11.2d? | 2018-06-11 | 2018-06-19 |  |  | 0d |
| 134 | 1.1.2.4.2.1 | **AT - Roles** | 6.4d? | 2018-06-11 | 2018-06-15 |  |  | 80.87d |
| 135 |  | AT - Elaboración Bocetos de Archivos | 2.4d? | 2018-06-11 | 2018-06-13 | 132 |  | 80.87d |
| 136 |  | AT - Elaboración Bocetos de Pantallas | 4d? | 2018-06-13 | 2018-06-15 | 135 |  | 80.87d |
| 137 | 1.1.2.4.2.2 | **AT - Configuracion** | 6.4d? | 2018-06-11 | 2018-06-15 |  |  | 0d |
| 138 |  | AT - Elaboración Bocetos de Archivos | 2.4d? | 2018-06-11 | 2018-06-13 | 132 |  | 0d |
| 139 |  | AT - Elaboración Bocetos de Pantallas | 4d? | 2018-06-13 | 2018-06-15 | 138 |  | 0d |
| 140 | 1.1.2.4.2.3 | **AT - Permisos** | 4.8d? | 2018-06-15 | 2018-06-19 |  |  | 0d |

| ID | WBS | Task | Duration | Start | Finish | Predecessors | Total float |
| --- | --- | --- | --- | --- | --- | --- | --- |
| 141 |  | AT - Elaboración Bocetos de Archivos | 2.4d? | 2018-06-15 | 2018-06-18 | 139 | 0d |
| 142 |  | AT - Elaboración Bocetos de Pantallas | 2.4d? | 2018-06-18 | 2018-06-19 | 141 | 0d |
| 143 | 1.1.2.4.3 | **AT - Modulo Solicitudes** | 26.67d? | 2018-06-19 | 2018-07-06 |  | 0d |
| 144 | 1.1.2.4.3.1 | **AT - Cliente - Solicitud de Transporte** | 5.33d? | 2018-06-19 | 2018-06-22 |  | 0d |
| 145 |  | AT - Elaboración Bocetos de Archivos | 2d? | 2018-06-19 | 2018-06-20 | 142 | 0d |
| 146 |  | AT - Elaboración Bocetos de Pantallas | 3.33d? | 2018-06-20 | 2018-06-22 | 145 | 0d |
| 147 | 1.1.2.4.3.2 | **AT - Trafico - Valoracion del Viaje** | 5.33d? | 2018-06-22 | 2018-06-26 |  | 0d |
| 148 |  | AT - Elaboración Bocetos de Archivos | 2d? | 2018-06-22 | 2018-06-25 | 146 | 0d |
| 149 |  | AT - Elaboración Bocetos de Pantallas | 3.33d? | 2018-06-25 | 2018-06-26 | 148 | 0d |
| 150 | 1.1.2.4.3.3 | **AT - Distribucion - Asugnacion de Unidad y Carga** | 5.33d? | 2018-06-26 | 2018-06-29 |  | 0d |
| 151 |  | AT - Elaboración Bocetos de Archivos | 2d? | 2018-06-26 | 2018-06-27 | 149 | 0d |
| 152 |  | AT - Elaboración Bocetos de Pantallas | 3.33d? | 2018-06-27 | 2018-06-29 | 151 | 0d |
| 153 | 1.1.2.4.3.4 | **AT - Operador CL - Operación y Descarga** | 5.33d? | 2018-06-29 | 2018-07-04 |  | 0d |
| 154 |  | AT - Elaboración Bocetos de Archivos | 2d? | 2018-06-29 | 2018-07-02 | 152 | 0d |
| 155 |  | AT - Elaboración Bocetos de Pantallas | 3.33d? | 2018-07-02 | 2018-07-04 | 154 | 0d |
| 156 | 1.1.2.4.3.5 | **AT - Distribucion - Cierre del Viaje y Facturacion** | 5.33d? | 2018-07-04 | 2018-07-06 |  | 0d |
| 157 |  | AT - Elaboración Bocetos de Archivos | 2d? | 2018-07-04 | 2018-07-05 | 155 | 0d |
| 158 |  | AT - Elaboración Bocetos de Pantallas | 3.33d? | 2018-07-05 | 2018-07-06 | 157 | 0d |
| 159 | 1.1.2.4.4 | **AT - Modulo Alarmas/Reportes/Indicadores de gestión** | 9.33d? | 2018-07-06 | 2018-07-13 |  | 0d |
| 160 | 1.1.2.4.4.1 | **AT - Alarmas** | 4.67d? | 2018-07-06 | 2018-07-11 |  | 44.74d |
| 161 |  | AT - Elaboración Bocetos de Archivos | 2.67d? | 2018-07-06 | 2018-07-10 | 158 | 44.74d |
| 162 |  | AT - Elaboración Bocetos de Pantallas | 2d? | 2018-07-10 | 2018-07-11 | 161 | 44.74d |
| 163 | 1.1.2.4.4.2 | **AT - Reportes** | 4.67d? | 2018-07-06 | 2018-07-11 |  | 0d |
| 164 |  | AT - Elaboración Bocetos de Archivos | 2.67d? | 2018-07-06 | 2018-07-10 | 158 | 0d |
| 165 |  | AT - Elaboración Bocetos de Pantallas | 2d? | 2018-07-10 | 2018-07-11 | 164 | 0d |
| 166 | 1.1.2.4.4.3 | **AT - Indicadores de gestión** | 4.67d? | 2018-07-11 | 2018-07-13 |  | 0d |
| 167 |  | AT - Elaboración Bocetos de Archivos | 2.67d? | 2018-07-11 | 2018-07-12 | 165 | 0d |
| 168 |  | AT - Elaboración Bocetos de Pantallas | 2d? | 2018-07-12 | 2018-07-13 | 167 | 0d |
| 169 |  | AT - Revisión con el usuario | 1d? | 2018-07-13 | 2018-07-16 | 142, 158, 168, 59, 69 | 0d |
| 170 |  | AT - Ajustes de comentarios del usuario | 1.5d? | 2018-07-16 | 2018-07-16 | 169 | 0d |
| 171 |  | AT - Peer Review y Vo Bo | 0.5d? | 2018-07-16 | 2018-07-17 | 170 | 0d |
| 172 |  | Validacion de documentacion, ultimos ajustes | 1.5d? | 2018-07-17 | 2018-07-17 | 171 | 0d |
| 173 | 1.3 | **CC_Desarrollo** | 92.07d? | 2018-06-07 | 2018-08-10 |  | 0d |
| 174 | 1.3.1 | **Diseño y Construcción** | 92.07d? | 2018-06-07 | 2018-08-10 |  | 0d |
| 175 |  | CC - Revision del documento de Arquitectura de Solucion | 0.75d? | 2018-07-04 | 2018-07-05 | 85 | 47.31d |
| 176 | 1.3.1.2 | **CC - Instalacion y Configuracion** | 5.75d? | 2018-07-05 | 2018-07-09 |  | 47.31d |
| 177 |  | CC - Instalacion de herramientas de desarrollo | 2.25d? | 2018-07-05 | 2018-07-06 | 175 | 47.31d |
| 178 |  | CC - Instalacion de herramientas de gestion de Bases de Datos | 2.25d? | 2018-07-06 | 2018-07-09 | 177 | 47.31d |
| 179 |  | CC - Instalacion de herramienta para soportar aplicaciones web | 1.25d? | 2018-07-09 | 2018-07-09 | 178 | 47.31d |
| 180 | 1.3.1.3 | **CC - Desarrollo** | 92.07d? | 2018-06-07 | 2018-08-10 |  | 0d |
| 181 | 1.3.1.3.1 | **CC - Modulo Catalogos Maestros** | 15d? | 2018-07-17 | 2018-07-27 |  | 0d |
| 182 |  | CC - Catalogo Rol | 1d? | 2018-07-17 | 2018-07-18 | 172 | 0d |
| 183 |  | CC - Catalogo Actores | 1d? | 2018-07-18 | 2018-07-18 | 182 | 0d |
| 184 |  | CC - Catalogo Actores-Roles | 1d? | 2018-07-18 | 2018-07-19 | 183 | 0d |
| 185 |  | CC - Catalogo Contratos | 1d? | 2018-07-19 | 2018-07-19 | 184 | 0d |
| 186 |  | CC - Catalogo Tipos de Tarifa | 1d? | 2018-07-19 | 2018-07-20 | 185 | 0d |
| 187 |  | CC - Catalogo Tarifa | 1d? | 2018-07-20 | 2018-07-20 | 186 | 0d |
| 188 |  | CC - Catalogo Conceptos de Tarifa | 1d? | 2018-07-20 | 2018-07-23 | 187 | 0d |
| 189 |  | CC - Catalogo Choferes | 1d? | 2018-07-23 | 2018-07-23 | 188 | 0d |
| 190 |  | CC - Catalogo Camiones | 1d? | 2018-07-23 | 2018-07-24 | 189 | 0d |
| 191 |  | CC - Catalogo Responsables de Incidencias | 1d? | 2018-07-24 | 2018-07-24 | 190 | 0d |
| 192 |  | CC - Catalogo Tipos de Incidencias | 1d? | 2018-07-24 | 2018-07-25 | 191 | 0d |
| 193 |  | CC - Catalogo Tipos de Viaje | 1d? | 2018-07-25 | 2018-07-25 | 192 | 0d |
| 194 |  | CC - Catalogo Tipos de Carga/Descarga | 1d? | 2018-07-25 | 2018-07-26 | 193 | 0d |
| 195 |  | CC - Catalogo Clientes de Entrega | 1d? | 2018-07-26 | 2018-07-26 | 194 | 0d |
| 196 |  | CC - Catalogo Clientes Solicidates | 1d? | 2018-07-26 | 2018-07-27 | 195 | 0d |
| 197 | 1.3.1.3.2 | **CC - Modulo Seguridad** | 5.5d? | 2018-07-27 | 2018-08-01 |  | 0d |
| 198 |  | CC - Roles | 1.75d? | 2018-07-27 | 2018-07-30 | 196 | 0d |
| 199 |  | CC - Configuracion | 1.75d? | 2018-07-30 | 2018-07-31 | 198 | 0d |
| 200 |  | CC - Permisos | 2d? | 2018-07-31 | 2018-08-01 | 199 | 0d |
| 201 | 1.3.1.3.3 | **CC - Modulo Solicitudes** | 15.07d? | 2018-08-01 | 2018-08-10 |  | 0d |
| 202 |  | CC - Cliente - Solicitud de Transporte | 1.75d? | 2018-08-01 | 2018-08-01 | 200 | 0d |
| 203 |  | CC - Trafico - Valoracion del Viaje | 1.75d? | 2018-08-01 | 2018-08-02 | 202 | 0d |
| 204 |  | CC - Distribucion - Asugnacion de Unidad y Carga | 1.75d? | 2018-08-02 | 2018-08-03 | 203 | 0d |
| 205 |  | CC - Operador CL - Operación y Descarga | 1.75d? | 2018-08-03 | 2018-08-06 | 204 | 0d |
| 206 |  | CC - Distribucion - Cierre del Viaje y Facturacion | 1.75d? | 2018-08-06 | 2018-08-07 | 205 | 0d |
| 207 | 1.3.1.3.3.6 | **CC - Primer Check point operativo** | 4d? | 2018-08-07 | 2018-08-09 |  | 0d |
| 208 |  | CC - Primer Check point operativo | 2d? | 2018-08-07 | 2018-08-08 | 206 | 0d |
| 209 |  | CC - Actualizacion de los puntos del primer Ckeckpoint | 2d? | 2018-08-08 | 2018-08-09 | 208 | 0d |
| 210 | 1.3.1.3.3.7 | **CC - Segundo Check point operativo** | 2.32d? | 2018-08-09 | 2018-08-10 |  | 0d |

| ID | WBS | Task | Duration | Start | Finish | Predecessors | Total float |
| --- | --- | --- | --- | --- | --- | --- | --- |
| 211 |  | CC - Segundo Check point operativo | 0.57d? | 2018-08-09 | 2018-08-09 | 209 | 0d |
| 212 |  | CC - Actualizacion de los puntos del segundo Check point operativo | 1.75d? | 2018-08-09 | 2018-08-10 | 211 | 0d |
| 213 | 1.3.1.3.4 | **CC - Modulo Alarmas/Reportes/Indicadores de gestión** | 6d? | 2018-06-07 | 2018-06-12 |  | 66.32d |
| 214 |  | CC - Alarmas | 2d? | 2018-06-07 | 2018-06-08 | 121 | 66.32d |
| 215 |  | CC - Reportes | 2d? | 2018-06-08 | 2018-06-11 | 214 | 66.32d |
| 216 |  | CC - Indicadores de gestión | 2d? | 2018-06-11 | 2018-06-12 | 215 | 66.32d |
| 217 | 1.3.1.4 | **PU - Pruebas Untarias** | 84.5d? | 2018-06-08 | 2018-08-07 |  | 5.57d |
| 218 | 1.3.1.4.1 | **PU - Modulo Catalogos Maestros** | 14.5d? | 2018-07-18 | 2018-07-27 |  | 20.07d |
| 219 |  | PU - Catalogo Rol | 0.5d? | 2018-07-18 | 2018-07-18 | 182 | 34.07d |
| 220 |  | PU - Catalogo Actores | 0.5d? | 2018-07-18 | 2018-07-19 | 183 | 33.07d |
| 221 |  | PU - Catalogo Actores-Roles | 0.5d? | 2018-07-19 | 2018-07-19 | 184 | 32.07d |
| 222 |  | PU - Catalogo Contratos | 0.5d? | 2018-07-19 | 2018-07-20 | 185 | 31.07d |
| 223 |  | PU - Catalogo Tipos de Tarifa | 0.5d? | 2018-07-20 | 2018-07-20 | 186 | 30.07d |
| 224 |  | PU - Catalogo Tarifa | 0.5d? | 2018-07-20 | 2018-07-23 | 187 | 29.07d |
| 225 |  | PU - Catalogo Conceptos de Tarifa | 0.5d? | 2018-07-23 | 2018-07-23 | 188 | 28.07d |
| 226 |  | PU - Catalogo Choferes | 0.5d? | 2018-07-23 | 2018-07-24 | 189 | 27.07d |
| 227 |  | PU - Catalogo Camiones | 0.5d? | 2018-07-24 | 2018-07-24 | 190 | 26.07d |
| 228 |  | PU - Catalogo Responsables de Incidencias | 0.5d? | 2018-07-24 | 2018-07-25 | 191 | 25.07d |
| 229 |  | PU - Catalogo Tipos de Incidencias | 0.5d? | 2018-07-25 | 2018-07-25 | 192 | 24.07d |
| 230 |  | PU - Catalogo Tipos de Viaje | 0.5d? | 2018-07-25 | 2018-07-26 | 193 | 23.07d |
| 231 |  | PU - Catalogo Tipos de Carga/Descarga | 0.5d? | 2018-07-26 | 2018-07-26 | 194 | 22.07d |
| 232 |  | PU - Catalogo Clientes de Entrega | 0.5d? | 2018-07-26 | 2018-07-27 | 195 | 21.07d |
| 233 |  | PU - Catalogo Clientes Solicidates | 0.5d? | 2018-07-27 | 2018-07-27 | 196 | 20.07d |
| 234 | 1.3.1.4.2 | **PU - Modulo Seguridad** | 4.25d? | 2018-07-30 | 2018-08-01 |  | 14.57d |
| 235 |  | PU - Roles | 0.5d? | 2018-07-30 | 2018-07-30 | 198 | 18.32d |
| 236 |  | PU - Configuracion | 0.5d? | 2018-07-31 | 2018-07-31 | 199 | 16.57d |
| 237 |  | PU - Permisos | 0.5d? | 2018-08-01 | 2018-08-01 | 200 | 14.57d |
| 238 | 1.3.1.4.3 | **PU - Modulo Solicitudes** | 7.75d? | 2018-08-01 | 2018-08-07 |  | 5.57d |
| 239 |  | PU - Cliente - Solicitud de Transporte | 0.75d? | 2018-08-01 | 2018-08-02 | 202 | 12.57d |
| 240 |  | PU - Trafico - Valoracion del Viaje | 0.75d? | 2018-08-02 | 2018-08-03 | 203 | 10.82d |
| 241 |  | PU - Distribucion - Asugnacion de Unidad y Carga | 0.75d? | 2018-08-03 | 2018-08-06 | 204 | 9.07d |
| 242 |  | PU - Operador CL - Operación y Descarga | 0.75d? | 2018-08-06 | 2018-08-06 | 205 | 7.32d |
| 243 |  | PU - Distribucion - Cierre del Viaje y Facturacion | 0.75d? | 2018-08-07 | 2018-08-07 | 206 | 5.57d |
| 244 | 1.3.1.4.4 | **PU - Modulo Alarmas/Reportes/Indicadores de gestión** | 6d? | 2018-06-08 | 2018-06-13 |  | 70.32d |
| 245 |  | PU - Alarmas | 2d? | 2018-06-08 | 2018-06-11 | 214 | 88.07d |
| 246 |  | PU - Reportes | 2d? | 2018-06-11 | 2018-06-12 | 215 | 86.07d |
| 247 |  | PU - Indicadores de gestión | 2d? | 2018-06-12 | 2018-06-13 | 216 | 66.32d |
| 248 | 1.3.1.5 | **TD - Termina Desarrollo** | 9.5d? | 2018-06-13 | 2018-06-20 |  | 66.32d |
| 249 | 1.3.1.5.1 | **TD - Configuracion en Ambiente QA o TEST** | 9.5d? | 2018-06-13 | 2018-06-20 |  | 66.32d |
| 250 |  | Configuracion de Java 7 u 8 | 1.5d? | 2018-06-13 | 2018-06-14 | 247 | 66.32d |
| 251 |  | Configuracion de Mysql y complementos | 1.5d? | 2018-06-14 | 2018-06-15 | 250 | 66.32d |
| 252 |  | Configuracion de Apache Tomcat | 1.5d? | 2018-06-15 | 2018-06-15 | 251 | 66.32d |
| 253 |  | Configuracion AppWeb v1 | 5d? | 2018-06-15 | 2018-06-20 | 252 | 66.32d |
| 254 | 1.3.1.6 | **PI - Pruebas Integrales** | 5.75d? | 2018-06-20 | 2018-06-25 |  | 66.32d |
| 255 | 1.3.1.6.1 | **PI - Modulo Catalogos Maestros** | 0.5d? | 2018-06-20 | 2018-06-20 |  | 66.32d |
| 256 |  | PI - Catalogo Rol | 0.25d? | 2018-06-20 | 2018-06-20 | 249 | 74.32d |
| 257 |  | PI - Catalogo Actores | 0.25d? | 2018-06-20 | 2018-06-20 | 249 | 74.32d |
| 258 |  | PI - Catalogo Actores-Roles | 0.25d? | 2018-06-20 | 2018-06-20 | 249 | 74.32d |
| 259 |  | PI - Catalogo Contratos | 0.25d? | 2018-06-20 | 2018-06-20 | 249 | 74.32d |
| 260 |  | PI - Catalogo Tipos de Tarifa | 0.25d? | 2018-06-20 | 2018-06-20 | 249 | 74.32d |
| 261 |  | PI - Catalogo Tarifa | 0.25d? | 2018-06-20 | 2018-06-20 | 249 | 74.32d |
| 262 |  | PI - Catalogo Conceptos de Tarifa | 0.25d? | 2018-06-20 | 2018-06-20 | 249 | 74.32d |
| 263 |  | PI - Catalogo Choferes | 0.25d? | 2018-06-20 | 2018-06-20 | 249 | 74.32d |
| 264 |  | PI - Catalogo Camiones | 0.25d? | 2018-06-20 | 2018-06-20 | 249 | 74.32d |
| 265 |  | PI - Catalogo Responsables de Incidencias | 0.25d? | 2018-06-20 | 2018-06-20 | 249 | 66.32d |
| 266 |  | PI - Catalogo Tipos de Incidencias | 0.25d? | 2018-06-20 | 2018-06-20 | 265 | 74.07d |
| 267 |  | PI - Catalogo Tipos de Viaje | 0.25d? | 2018-06-20 | 2018-06-20 | 265 | 74.07d |
| 268 |  | PI - Catalogo Tipos de Carga/Descarga | 0.25d? | 2018-06-20 | 2018-06-20 | 265 | 74.07d |
| 269 |  | PI - Catalogo Clientes de Entrega | 0.25d? | 2018-06-20 | 2018-06-20 | 265 | 74.07d |
| 270 |  | PI - Catalogo Clientes Solicidates | 0.25d? | 2018-06-20 | 2018-06-20 | 265 | 66.32d |
| 271 | 1.3.1.6.2 | **PI - Modulo Seguridad** | 0.25d? | 2018-06-20 | 2018-06-20 |  | 66.32d |
| 272 |  | PI - Roles | 0.25d? | 2018-06-20 | 2018-06-20 | 270 | 73.82d |
| 273 |  | PI - Configuracion | 0.25d? | 2018-06-20 | 2018-06-20 | 270 | 73.82d |
| 274 |  | PI - Permisos | 0.25d? | 2018-06-20 | 2018-06-20 | 270 | 66.32d |
| 275 | 1.3.1.6.3 | **PI - Modulo Solicitudes** | 1d? | 2018-06-20 | 2018-06-21 |  | 66.32d |
| 276 |  | PI - Cliente - Solicitud de Transporte | 0.5d? | 2018-06-20 | 2018-06-20 | 274 | 73.32d |
| 277 |  | PI - Trafico - Valoracion del Viaje | 0.5d? | 2018-06-20 | 2018-06-20 | 274 | 73.32d |
| 278 |  | PI - Distribucion - Asugnacion de Unidad y Carga | 0.5d? | 2018-06-20 | 2018-06-20 | 274 | 66.32d |
| 279 |  | PI - Operador CL - Operación y Descarga | 0.5d? | 2018-06-20 | 2018-06-21 | 278 | 72.82d |
| 280 |  | PI - Distribucion - Cierre del Viaje y Facturacion | 0.5d? | 2018-06-20 | 2018-06-21 | 278 | 66.32d |

| ID | WBS | Task | Duration | Start | Finish | Predecessors | Complete | Total float |
| --- | --- | --- | --- | --- | --- | --- | --- | --- |
| 281 | 1.3.1.6.4 | **PI - Modulo Alarmas/Reportes/Indicadores de gestión** | 4d? | 2018-06-21 | 2018-06-25 |  |  | 66.32d |
| 282 |  | PI - Alarmas | 2d? | 2018-06-21 | 2018-06-22 | 280 |  | 70.82d |
| 283 |  | PI - Reportes | 2d? | 2018-06-21 | 2018-06-22 | 280 |  | 66.32d |
| 284 |  | PI - Indicadores de gestión | 2d? | 2018-06-22 | 2018-06-25 | 283 |  | 66.32d |
| 285 |  | PI - Cierre Pruebas Integrales | 0.5d? | 2018-06-25 | 2018-06-25 | 284 |  | 66.32d |
| 286 | 2 | **LB - Liberacion a Produccion** | 2d? | 2018-06-25 | 2018-06-26 |  |  | 66.32d |
| 287 |  | LB - Liberacion y Cierre | 2d? | 2018-06-25 | 2018-06-26 | 285 |  | 66.32d |
| 288 |  | Monitoreo y Control | 2d? | 2018-06-04 A | 2018-06-04 A |  | 100% |  |

## Version 2 (data date 2018-05-29, saved 2018-05-30, file Plan_AN_AT_CC_29052018v3.xls.mpp)

Note of the change: planes

Last finish 2018-08-10 → 2018-08-09 (-1d). Complete tasks 4 → 5.

Added:

| ID | Task | Duration | Start | Finish | Constraint |
| --- | --- | --- | --- | --- | --- |
| 2 | Inicio de Actividades | 1d? | 2018-06-01 19:00 | 2018-06-01 23:00 | start no earlier than 2018-06-01 19:00 |

Changed:

| ID | Task | Start | Finish | Duration | Complete | Total float | Predecessors | Other |
| --- | --- | --- | --- | --- | --- | --- | --- | --- |
| 1 | **001-ITSC_TMS Plan de Analisis y Desarrollo** | 2018-06-04 A → 2018-06-01 19:00 A (-3d) | 2018-08-10 → 2018-08-09 23:00 (-1d) | 99.25d? → 50d? |  |  |  | baseline start 2018-05-24 → 2018-05-24 09:00; baseline finish 2018-08-21 → 2018-08-21 09:54 |
| 3 | **AN_Analisis** | 2018-06-04 A → 2018-06-04 09:00 A | 2018-07-19 → 2018-08-09 23:00 (+21d) | 66.14d? → 49d? |  | 33.11d → 0d |  | baseline start 2018-05-24 → 2018-05-24 09:00; baseline finish 2018-08-02 → 2018-08-02 15:54 |
| 4 | **AN Analisis de Negocio** | 2018-06-04 A → 2018-06-04 09:00 A | 2018-06-28 → 2018-07-20 11:00 (+22d) | 36.1d? → 34d? | 7% → 6% | 63.15d → 14d |  | baseline start 2018-05-24 → 2018-05-24 09:00; baseline finish 2018-05-30 → 2018-05-30 19:00 |
| 5 | **AN - Modulo Catalogos Maestros** | 2018-06-04 A → 2018-06-04 09:00 A | 2018-06-28 → 2018-07-09 23:00 (+11d) | 36.1d? → 26d? | 4% → 2% | 63.15d → 22d |  | baseline start 2018-05-24 → 2018-05-24 09:00; baseline finish 2018-07-05 → 2018-07-05 17:30 |
| 6 | **AN - Catalogo Rol** | 2018-06-04 → 2018-06-04 09:00 | 2018-06-05 → 2018-06-05 23:00 | 4d → 2d |  | 63.75d → 45d |  | baseline start 2018-06-15 → 2018-06-15 12:30; baseline finish 2018-06-19 → 2018-06-19 17:42 |
| 7 | AN - Requerimientos de Negocio | 2018-06-04 → 2018-06-04 09:00 | 2018-06-04 → 2018-06-04 11:00 |  |  | 66d → 46d | none → 2 | baseline start 2018-06-15 → 2018-06-15 12:30; baseline finish 2018-06-18 → 2018-06-18 16:06 |
| 8 | AN - Casos de Uso | 2018-06-05 → 2018-06-05 12:00 | 2018-06-05 → 2018-06-05 23:00 |  |  | 63.75d → 45d |  | constraint finish no earlier than 2018-06-05 → finish no earlier than 2018-06-05 23:00; baseline start 2018-06-18 → 2018-06-18 16:06; baseline finish 2018-06-19 → 2018-06-19 17:42 |
| 9 | **AN - Catalogo Actores** | 2018-06-06 → 2018-06-04 09:00 (-2d) | 2018-06-06 → 2018-06-05 23:00 (-1d) | 1.75d? → 2d? |  | 63.75d → 46d |  | baseline start 2018-06-15 → 2018-06-15 12:30; baseline finish 2018-06-18 → 2018-06-18 10:30 |
| 10 | AN - Requerimientos de Negocio | 2018-06-06 → 2018-06-04 09:00 (-2d) | 2018-06-06 → 2018-06-04 11:00 (-2d) |  |  | 63.75d → 47d | 8 → 2, 8 | resources Fernando Nava → Omar Santiago; baseline start 2018-06-15 → 2018-06-15 12:30; baseline finish 2018-06-15 → 2018-06-15 17:30 |
| 11 | AN - Casos de Uso | 2018-06-06 → 2018-06-05 12:00 (-1d) | 2018-06-06 → 2018-06-05 23:00 (-1d) |  |  | 63.75d → 46d |  | constraint none → finish no earlier than 2018-06-05 23:00; resources Fernando Nava → Omar Santiago; baseline start 2018-06-15 → 2018-06-15 17:30; baseline finish 2018-06-18 → 2018-06-18 10:30 |
| 12 | **AN - Catalogo Actores-Roles** | 2018-06-06 → 2018-06-06 09:00 | 2018-06-20 → 2018-06-07 12:42 (-13d) | 19.85d? → 1d? |  | 63.15d → 45d |  | baseline start 2018-06-18 → 2018-06-18 10:30; baseline finish 2018-06-20 → 2018-06-20 15:42 |
| 13 | AN - Requerimientos de Negocio | 2018-06-06 → 2018-06-06 09:00 | 2018-06-07 → 2018-06-06 11:00 (-1d) |  |  | 63.75d → 45d | 11 → 8, 11 | baseline start 2018-06-18 → 2018-06-18 10:30; baseline finish 2018-06-19 → 2018-06-19 12:06 |
| 14 | AN - Casos de Uso | 2018-06-19 → 2018-06-06 11:00 (-13d) | 2018-06-20 → 2018-06-07 12:42 (-13d) |  |  | 63.15d → 45d |  | baseline start 2018-06-19 → 2018-06-19 12:06; baseline finish 2018-06-20 → 2018-06-20 15:42 |
| 15 | **AN - Catalogo Contratos** | 2018-06-20 → 2018-06-06 09:00 (-14d) | 2018-06-21 → 2018-06-07 23:00 (-14d) | 1.75d? → 2d? |  | 63.15d → 44d |  | baseline start 2018-06-18 → 2018-06-18 10:30; baseline finish 2018-06-20 → 2018-06-20 15:42 |
| 16 | AN - Requerimientos de Negocio | 2018-06-20 → 2018-06-06 09:00 (-14d) | 2018-06-21 → 2018-06-06 11:00 (-15d) |  |  | 63.15d → 46d | 14 → 11, 14 | resources Fernando Nava → Omar Santiago; baseline start 2018-06-18 → 2018-06-18 10:30; baseline finish 2018-06-19 → 2018-06-19 12:06 |
| 17 | AN - Casos de Uso | 2018-06-21 → 2018-06-07 12:00 (-14d) | 2018-06-21 → 2018-06-07 23:00 (-14d) |  |  | 63.15d → 44d |  | constraint none → finish no earlier than 2018-06-07 23:00; resources Fernando Nava → Omar Santiago; baseline start 2018-06-19 → 2018-06-19 12:06; baseline finish 2018-06-20 → 2018-06-20 15:42 |
| 18 | **AN - Catalogo Tipos de Tarifa** | 2018-06-21 → 2018-06-04 09:00 (-17d) | 2018-06-22 → 2018-06-04 16:00 (-18d) | 1.75d? → 0d? |  | 63.15d → 48d |  | baseline start 2018-06-20 → 2018-06-20 15:42; baseline finish 2018-06-22 → 2018-06-22 18:54 |
| 19 | AN - Requerimientos de Negocio | 2018-06-21 → 2018-06-04 09:00 (-17d) | 2018-06-21 → 2018-06-04 11:00 (-17d) |  |  | 63.15d → 48d |  | baseline start 2018-06-20 → 2018-06-20 15:42; baseline finish 2018-06-21 → 2018-06-21 17:18 |
| 20 | AN - Casos de Uso | 2018-06-21 → 2018-06-04 09:00 (-17d) | 2018-06-22 → 2018-06-04 16:00 (-18d) |  |  | 63.15d → 48d |  | baseline start 2018-06-21 → 2018-06-21 17:18; baseline finish 2018-06-22 → 2018-06-22 18:54 |
| 21 | **AN - Catalogo Tarifa** | 2018-06-22 → 2018-06-04 09:00 (-18d) | 2018-06-25 → 2018-06-04 16:00 (-21d) | 1.75d? → 0d? |  | 63.15d → 48d |  | baseline start 2018-06-20 → 2018-06-20 15:42; baseline finish 2018-06-22 → 2018-06-22 18:54 |
| 22 | AN - Requerimientos de Negocio | 2018-06-22 → 2018-06-04 09:00 (-18d) | 2018-06-22 → 2018-06-04 11:00 (-18d) |  |  | 63.15d → 48d |  | resources Fernando Nava → Omar Santiago; baseline start 2018-06-20 → 2018-06-20 15:42; baseline finish 2018-06-21 → 2018-06-21 17:18 |
| 23 | AN - Casos de Uso | 2018-06-22 → 2018-06-04 09:00 (-18d) | 2018-06-25 → 2018-06-04 16:00 (-21d) |  |  | 63.15d → 48d |  | resources Fernando Nava → Omar Santiago; baseline start 2018-06-21 → 2018-06-21 17:18; baseline finish 2018-06-22 → 2018-06-22 18:54 |
| 24 | **AN - Catalogo Conceptos de Tarifa** | 2018-06-25 → 2018-06-04 09:00 (-21d) | 2018-06-26 → 2018-06-15 23:00 (-11d) | 1.75d? → 10d? |  | 63.15d → 38d |  | baseline start 2018-06-22 → 2018-06-22 18:54; baseline finish 2018-06-27 → 2018-06-27 12:06 |
| 25 | AN - Requerimientos de Negocio | 2018-06-25 → 2018-06-04 09:00 (-21d) | 2018-06-25 → 2018-06-04 11:00 (-21d) |  |  | 63.15d → 48d |  | baseline start 2018-06-22 → 2018-06-22 18:54; baseline finish 2018-06-26 → 2018-06-26 10:30 |
| 26 | AN - Casos de Uso | 2018-06-25 → 2018-06-15 12:00 (-10d) | 2018-06-26 → 2018-06-15 23:00 (-11d) |  |  | 63.15d → 38d |  | constraint none → finish no earlier than 2018-06-15 23:00; baseline start 2018-06-26 → 2018-06-26 10:30; baseline finish 2018-06-27 → 2018-06-27 12:06 |
| 27 | **AN - Catalogo Choferes** | 2018-06-26 → 2018-06-18 09:00 (-8d) | 2018-06-27 → 2018-06-19 23:00 (-8d) | 1.75d? → 2d? |  | 63.15d → 36d |  | baseline start 2018-06-22 → 2018-06-22 18:54; baseline finish 2018-06-27 → 2018-06-27 12:06 |
| 28 | AN - Requerimientos de Negocio | 2018-06-26 → 2018-06-18 09:00 (-8d) | 2018-06-26 → 2018-06-18 11:00 (-8d) |  |  | 63.15d → 38d |  | constraint none → start no earlier than 2018-06-15 19:00; resources Fernando Nava → Omar Santiago; baseline start 2018-06-22 → 2018-06-22 18:54; baseline finish 2018-06-26 → 2018-06-26 10:30 |
| 29 | AN - Casos de Uso | 2018-06-26 → 2018-06-19 12:00 (-7d) | 2018-06-27 → 2018-06-19 23:00 (-8d) |  |  | 63.15d → 36d |  | constraint none → finish no earlier than 2018-06-19 23:00; resources Fernando Nava → Omar Santiago; baseline start 2018-06-26 → 2018-06-26 10:30; baseline finish 2018-06-27 → 2018-06-27 12:06 |
| 30 | **AN - Catalogo Camiones** | 2018-06-27 → 2018-06-20 09:00 (-7d) | 2018-06-28 → 2018-06-21 23:00 (-7d) | 1.75d? → 2d? |  | 63.15d → 34d |  | baseline start 2018-06-27 → 2018-06-27 12:06; baseline finish 2018-06-29 → 2018-06-29 17:18 |
| 31 | AN - Requerimientos de Negocio | 2018-06-27 → 2018-06-20 09:00 (-7d) | 2018-06-27 → 2018-06-20 11:00 (-7d) |  |  | 63.15d → 36d |  | constraint none → start no earlier than 2018-06-19 19:00; baseline start 2018-06-27 → 2018-06-27 12:06; baseline finish 2018-06-28 → 2018-06-28 15:42 |
| 32 | AN - Casos de Uso | 2018-06-27 → 2018-06-21 12:00 (-6d) | 2018-06-28 → 2018-06-21 23:00 (-7d) |  |  | 63.15d → 34d |  | constraint none → finish no earlier than 2018-06-21 23:00; baseline start 2018-06-28 → 2018-06-28 15:42; baseline finish 2018-06-29 → 2018-06-29 17:18 |
| 33 | **AN - Catalogo Responsables de Incidencias** | 2018-06-04 A → 2018-06-21 19:00 A (+17d) | 2018-06-05 → 2018-06-25 23:00 A (+20d) | 2.62d? → 3d? | 32% → 100% | 38.8d → none |  | baseline start 2018-05-24 → 2018-05-24 09:00; baseline finish 2018-06-29 → 2018-06-29 09:06 |
| 34 | AN - Requerimientos de Negocio | 2018-06-04 A → 2018-06-21 19:00 A (+17d) | 2018-06-04 A → 2018-06-22 11:00 A (+18d) |  |  |  |  | resources Fernando Nava → Omar Santiago; baseline start 2018-05-24 → 2018-05-24 09:00; baseline finish 2018-06-28 → 2018-06-28 10:36 |
| 35 | AN - Casos de Uso | 2018-06-04 A → 2018-06-25 19:00 A (+21d) | 2018-06-05 → 2018-06-25 23:00 A (+20d) | 2.62d? → 0d? | 19% → 100% | 38.8d → none |  | constraint none → finish no earlier than 2018-06-25 23:00; resources Fernando Nava → Omar Santiago; baseline start 2018-05-24 → 2018-05-24 09:00; baseline finish 2018-06-29 → 2018-06-29 09:06 |
| 36 | **AN - Catalogo Tipos de Incidencias** | 2018-06-05 → 2018-06-26 09:00 (+21d) | 2018-06-06 → 2018-06-27 19:00 (+21d) | 1.75d? → 1d? |  | 38.8d → 31d |  | baseline start 2018-06-29 → 2018-06-29 09:06; baseline finish 2018-07-03 → 2018-07-03 12:18 |
| 37 | AN - Requerimientos de Negocio | 2018-06-05 → 2018-06-26 09:00 (+21d) | 2018-06-05 → 2018-06-26 11:00 (+21d) |  |  | 38.8d → 32d |  | constraint none → start no earlier than 2018-06-25 19:00; baseline start 2018-06-29 → 2018-06-29 09:06; baseline finish 2018-07-02 → 2018-07-02 10:42 |
| 38 | AN - Casos de Uso | 2018-06-05 → 2018-06-27 09:00 (+22d) | 2018-06-06 → 2018-06-27 19:00 (+21d) | 1.25d? → 2d? |  | 38.8d → 31d |  | constraint none → start no earlier than 2018-06-26 19:00; baseline start 2018-07-02 → 2018-07-02 10:42; baseline finish 2018-07-03 → 2018-07-03 12:18 |
| 39 | **AN - Catalogo Tipos de Viaje** | 2018-06-06 → 2018-06-28 09:00 (+22d) | 2018-06-07 → 2018-06-29 23:00 (+22d) | 1.75d? → 2d? |  | 38.8d → 28d |  | baseline start 2018-06-29 → 2018-06-29 09:06; baseline finish 2018-07-03 → 2018-07-03 12:18 |
| 40 | AN - Requerimientos de Negocio | 2018-06-06 → 2018-06-28 09:00 (+22d) | 2018-06-06 → 2018-06-28 11:00 (+22d) |  |  | 38.8d → 30d |  | constraint none → start no earlier than 2018-06-27 19:00; resources Fernando Nava → Omar Santiago; baseline start 2018-06-29 → 2018-06-29 09:06; baseline finish 2018-07-02 → 2018-07-02 10:42 |
| 41 | AN - Casos de Uso | 2018-06-06 → 2018-06-29 12:00 (+23d) | 2018-06-07 → 2018-06-29 23:00 (+22d) |  |  | 38.8d → 28d |  | constraint none → finish no earlier than 2018-06-29 23:00; resources Fernando Nava → Omar Santiago; baseline start 2018-07-02 → 2018-07-02 10:42; baseline finish 2018-07-03 → 2018-07-03 12:18 |
| 42 | **AN - Catalogo Tipos de Carga/Descarga** | 2018-06-07 → 2018-06-04 09:00 (-3d) | 2018-06-07 → 2018-07-03 23:00 (+26d) | 1.75d? → 22d? |  | 38.8d → 26d |  | baseline start 2018-07-03 → 2018-07-03 12:18; baseline finish 2018-07-05 → 2018-07-05 17:30 |
| 43 | AN - Requerimientos de Negocio | 2018-06-07 → 2018-06-04 09:00 (-3d) | 2018-06-07 → 2018-06-04 11:00 (-3d) |  |  | 38.8d → 48d |  | baseline start 2018-07-03 → 2018-07-03 12:18; baseline finish 2018-07-04 → 2018-07-04 15:54 |
| 44 | AN - Casos de Uso | 2018-06-07 → 2018-07-03 12:00 (+26d) | 2018-06-07 → 2018-07-03 23:00 (+26d) |  |  | 38.8d → 26d |  | constraint none → finish no earlier than 2018-07-03 23:00; baseline start 2018-07-04 → 2018-07-04 15:54; baseline finish 2018-07-05 → 2018-07-05 17:30 |
| 45 | **AN - Catalogo Clientes de Entrega** | 2018-06-07 → 2018-06-04 09:00 (-3d) | 2018-06-08 → 2018-07-05 23:00 (+27d) | 1.75d? → 24d? |  | 38.8d → 24d |  | baseline start 2018-07-03 → 2018-07-03 12:18; baseline finish 2018-07-05 → 2018-07-05 17:30 |
| 46 | AN - Requerimientos de Negocio | 2018-06-07 → 2018-06-04 09:00 (-3d) | 2018-06-08 → 2018-06-04 11:00 (-4d) |  |  | 38.8d → 48d |  | resources Fernando Nava → Omar Santiago; baseline start 2018-07-03 → 2018-07-03 12:18; baseline finish 2018-07-04 → 2018-07-04 15:54 |
| 47 | AN - Casos de Uso | 2018-06-08 → 2018-07-05 12:00 (+27d) | 2018-06-08 → 2018-07-05 23:00 (+27d) |  |  | 38.8d → 24d |  | constraint none → finish no earlier than 2018-07-05 23:00; resources Fernando Nava → Omar Santiago; baseline start 2018-07-04 → 2018-07-04 15:54; baseline finish 2018-07-05 → 2018-07-05 17:30 |
| 48 | **AN - Catalogo Clientes Solicidates** | 2018-06-08 → 2018-06-04 09:00 (-4d) | 2018-06-11 → 2018-07-09 23:00 (+28d) | 1.75d? → 26d? |  | 38.8d → 22d |  | baseline start 2018-07-03 → 2018-07-03 12:18; baseline finish 2018-07-05 → 2018-07-05 17:30 |
| 49 | AN - Requerimientos de Negocio | 2018-06-08 → 2018-06-04 09:00 (-4d) | 2018-06-11 → 2018-06-04 11:00 (-7d) |  |  | 38.8d → 48d |  | baseline start 2018-07-03 → 2018-07-03 12:18; baseline finish 2018-07-04 → 2018-07-04 15:54 |
| 50 | AN - Casos de Uso | 2018-06-11 → 2018-07-09 12:00 (+28d) | 2018-06-11 → 2018-07-09 23:00 (+28d) |  |  | 38.8d → 22d |  | constraint none → finish no earlier than 2018-07-09 23:00; baseline start 2018-07-04 → 2018-07-04 15:54; baseline finish 2018-07-05 → 2018-07-05 17:30 |
| 51 | **AN - Modulo Seguridad** | 2018-06-11 → 2018-06-04 09:00 (-7d) | 2018-06-13 → 2018-07-17 23:00 (+34d) | 4.5d? → 32d? |  | 38.8d → 16d |  | baseline start 2018-07-05 → 2018-07-05 17:30; baseline finish 2018-07-12 → 2018-07-12 15:54 |
| 52 | **AN - Roles** | 2018-06-11 → 2018-06-04 09:00 (-7d) | 2018-06-12 → 2018-07-11 23:00 (+29d) | 1.5d? → 28d? |  | 38.8d → 20d |  | baseline start 2018-07-05 → 2018-07-05 17:30; baseline finish 2018-07-10 → 2018-07-10 10:42 |
| 53 | AN - Requerimientos de Negocio | 2018-06-11 → 2018-06-04 09:00 (-7d) | 2018-06-12 → 2018-06-04 12:00 (-8d) |  |  | 38.8d → 48d |  | resources Fernando Nava → Omar Santiago; baseline start 2018-07-05 → 2018-07-05 17:30; baseline finish 2018-07-09 → 2018-07-09 09:06 |
| 54 | AN - Casos de Uso | 2018-06-12 → 2018-07-11 16:00 (+29d) | 2018-06-12 → 2018-07-11 23:00 (+29d) |  |  | 38.8d → 20d |  | constraint none → finish no earlier than 2018-07-11 23:00; resources Fernando Nava → Omar Santiago; baseline start 2018-07-09 → 2018-07-09 09:06; baseline finish 2018-07-10 → 2018-07-10 10:42 |
| 55 | **AN - Configuracion** | 2018-06-12 → 2018-06-04 09:00 (-8d) | 2018-06-13 → 2018-07-13 23:00 (+30d) | 1.5d? → 30d? |  | 38.8d → 18d |  | baseline start 2018-07-05 → 2018-07-05 17:30; baseline finish 2018-07-10 → 2018-07-10 10:42 |
| 56 | AN - Requerimientos de Negocio | 2018-06-12 → 2018-06-04 09:00 (-8d) | 2018-06-12 → 2018-06-04 12:00 (-8d) |  |  | 38.8d → 48d |  | baseline start 2018-07-05 → 2018-07-05 17:30; baseline finish 2018-07-09 → 2018-07-09 09:06 |
| 57 | AN - Casos de Uso | 2018-06-12 → 2018-07-13 16:00 (+31d) | 2018-06-13 → 2018-07-13 23:00 (+30d) |  |  | 38.8d → 18d |  | constraint none → finish no earlier than 2018-07-13 23:00; baseline start 2018-07-09 → 2018-07-09 09:06; baseline finish 2018-07-10 → 2018-07-10 10:42 |
| 58 | **AN - Permisos** | 2018-06-13 → 2018-07-16 09:00 (+33d) | 2018-06-13 → 2018-07-17 23:00 (+34d) | 1.5d? → 2d? |  | 38.8d → 14d |  | baseline start 2018-07-10 → 2018-07-10 10:42; baseline finish 2018-07-12 → 2018-07-12 15:54 |
| 59 | AN - Requerimientos de Negocio | 2018-06-13 → 2018-07-16 09:00 (+33d) | 2018-06-13 → 2018-07-16 12:00 (+33d) |  |  | 38.8d → 18d |  | constraint none → start no earlier than 2018-07-13 19:00; resources Fernando Nava → Omar Santiago; baseline start 2018-07-10 → 2018-07-10 10:42; baseline finish 2018-07-11 → 2018-07-11 12:18 |
| 60 | AN - Casos de Uso | 2018-06-13 → 2018-07-17 16:00 (+34d) | 2018-06-13 → 2018-07-17 23:00 (+34d) |  |  | 38.8d → 13d |  | constraint none → finish no earlier than 2018-07-17 23:00; resources Fernando Nava → Omar Santiago; baseline start 2018-07-11 → 2018-07-11 12:18; baseline finish 2018-07-12 → 2018-07-12 15:54 |
| 61 | **AN - Modulo Alarmas/Reportes/Indicadores de gestión** | 2018-06-13 → 2018-07-18 09:00 (+35d) | 2018-06-18 → 2018-07-20 11:00 (+32d) | 4.5d? → 2d? |  | 38.8d → 13d |  | baseline start 2018-07-24 → 2018-07-24 15:54; baseline finish 2018-07-30 → 2018-07-30 15:54 |
| 62 | **AN - Alarmas** | 2018-06-13 → 2018-07-18 09:00 (+35d) | 2018-06-14 → 2018-07-18 17:00 (+34d) | 1.5d? → 0d? |  | 38.8d → 13d |  | baseline start 2018-07-24 → 2018-07-24 15:54; baseline finish 2018-07-26 → 2018-07-26 15:54 |
| 63 | AN - Requerimientos de Negocio | 2018-06-13 → 2018-07-18 09:00 (+35d) | 2018-06-14 → 2018-07-18 12:00 (+34d) |  |  | 38.8d → 13d |  | baseline start 2018-07-24 → 2018-07-24 15:54; baseline finish 2018-07-25 → 2018-07-25 15:54 |
| 64 | AN - Casos de Uso | 2018-06-14 → 2018-07-18 12:00 (+34d) | 2018-06-14 → 2018-07-18 17:00 (+34d) |  |  | 38.8d → 13d |  | baseline start 2018-07-25 → 2018-07-25 15:54; baseline finish 2018-07-26 → 2018-07-26 15:54 |
| 65 | **AN - Reportes** | 2018-06-14 → 2018-07-18 17:00 (+34d) | 2018-06-15 → 2018-07-19 13:00 (+34d) | 1.5d? → 1d? |  | 38.8d → 13d |  | baseline start 2018-07-24 → 2018-07-24 15:54; baseline finish 2018-07-26 → 2018-07-26 15:54 |
| 66 | AN - Requerimientos de Negocio | 2018-06-14 → 2018-07-18 17:00 (+34d) | 2018-06-15 → 2018-07-19 10:00 (+34d) |  |  | 38.8d → 13d |  | resources Fernando Nava → Omar Santiago; baseline start 2018-07-24 → 2018-07-24 15:54; baseline finish 2018-07-25 → 2018-07-25 15:54 |
| 67 | AN - Casos de Uso | 2018-06-15 → 2018-07-19 10:00 (+34d) | 2018-06-15 → 2018-07-19 13:00 (+34d) |  |  | 38.8d → 13d |  | resources Fernando Nava → Omar Santiago; baseline start 2018-07-25 → 2018-07-25 15:54; baseline finish 2018-07-26 → 2018-07-26 15:54 |
| 68 | **AN - Indicadores de gestión** | 2018-06-15 → 2018-07-19 15:00 (+34d) | 2018-06-18 → 2018-07-20 11:00 (+32d) | 1.5d? → 1d? |  | 38.8d → 13d |  | baseline start 2018-07-26 → 2018-07-26 15:54; baseline finish 2018-07-30 → 2018-07-30 15:54 |
| 69 | AN - Requerimientos de Negocio | 2018-06-15 → 2018-07-19 15:00 (+34d) | 2018-06-15 → 2018-07-19 18:00 (+34d) |  |  | 38.8d → 13d |  | baseline start 2018-07-26 → 2018-07-26 15:54; baseline finish 2018-07-27 → 2018-07-27 15:54 |
| 70 | AN - Casos de Uso | 2018-06-15 → 2018-07-19 18:00 (+34d) | 2018-06-18 → 2018-07-20 11:00 (+32d) |  |  | 38.8d → 13d |  | baseline start 2018-07-27 → 2018-07-27 15:54; baseline finish 2018-07-30 → 2018-07-30 15:54 |
| 71 | AT - Revisión interna | 2018-06-08 A → 2018-07-18 19:00 A (+40d) | 2018-06-08 A → 2018-07-19 19:00 A (+41d) |  |  |  |  | baseline start 2018-05-28 → 2018-05-28 09:00; baseline finish 2018-05-28 → 2018-05-28 19:00 |

| ID | Task | Start | Finish | Duration | Total float | Predecessors | Other |
| --- | --- | --- | --- | --- | --- | --- | --- |
| 72 | AT - Ajustes de comentarios del usuario | 2018-06-11 → 2018-06-04 09:00 (-7d) | 2018-06-11 → 2018-06-04 16:20 (-7d) |  | 33.11d → 48d |  | baseline start 2018-05-29 → 2018-05-29 09:00; baseline finish 2018-05-29 → 2018-05-29 19:00 |
| 73 | AT - Peer Review y Vo Bo | 2018-06-11 → 2018-06-04 09:00 (-7d) | 2018-06-12 → 2018-06-04 11:54 (-8d) |  | 33.11d → 39d | 72 → none | baseline start 2018-05-30 → 2018-05-30 09:00; baseline finish 2018-05-30 → 2018-05-30 19:00 |
| 74 | **AT Analisis de Tecnico** | 2018-06-04 A → 2018-06-04 09:00 A | 2018-07-19 → 2018-08-09 23:00 (+21d) | 66.14d? → 49d? | 33.11d → 0d |  | baseline start 2018-05-24 → 2018-05-24 09:00; baseline finish 2018-08-02 → 2018-08-02 15:54 |
| 75 | **IAT - Revisión de documentación entregada por Negocio** | 2018-06-12 → 2018-06-04 11:54 (-8d) | 2018-06-25 → 2018-06-15 15:24 (-10d) | 18.38d? → 9d? | 33.11d → 39d |  | baseline start 2018-05-31 → 2018-05-31 09:00; baseline finish 2018-06-13 → 2018-06-13 12:30 |
| 76 | AT - Requerimientos de Negocio | 2018-06-12 → 2018-06-04 11:54 (-8d) | 2018-06-12 → 2018-06-05 09:54 (-7d) |  | 33.11d → 39d |  | baseline start 2018-05-31 → 2018-05-31 09:00; baseline finish 2018-05-31 → 2018-05-31 19:00 |
| 77 | AT - Casos de Uso | 2018-06-12 → 2018-06-05 09:54 (-7d) | 2018-06-25 → 2018-06-15 15:24 (-10d) |  | 33.11d → 39d |  | baseline start 2018-06-01 → 2018-06-01 09:00; baseline finish 2018-06-13 → 2018-06-13 12:30 |
| 78 | **AT - Elaboracion de propuesta de Arquitectura de Solucion** | 2018-06-25 → 2018-06-04 09:00 (-21d) | 2018-07-04 → 2018-08-09 23:00 (+36d) | 14d? → 49d? | 33.11d → 0d |  | baseline start 2018-06-13 → 2018-06-13 12:30; baseline finish 2018-06-14 → 2018-06-14 12:30 |
| 79 | AT - Requerimientos tecnicos | 2018-06-25 → 2018-08-06 09:00 (+42d) | 2018-06-26 → 2018-08-06 18:00 (+41d) | 2d? → 1.75d? | 33.11d → 3d |  | constraint none → start no earlier than 2018-08-03 19:00; resources Omar Santiago [87.5%] → Omar Santiago; baseline start 2018-06-13 → 2018-06-13 12:30; baseline finish 2018-06-14 → 2018-06-14 12:30 |
| 80 | AT - Analisis tecnico | 2018-06-26 → 2018-08-07 10:00 (+42d) | 2018-06-27 → 2018-08-08 23:00 (+42d) | 2d? → 3.75d? | 33.11d → 0d |  | constraint none → finish no earlier than 2018-08-08 23:00; resources Omar Santiago [87.5%] → Omar Santiago; baseline start 2018-06-13 → 2018-06-13 12:30; baseline finish 2018-06-14 → 2018-06-14 12:30 |
| 81 | AT - Requerimientos de solucion | 2018-06-27 → 2018-08-09 09:00 (+43d) | 2018-06-28 → 2018-08-09 23:00 (+42d) |  | 33.11d → 0d |  | constraint none → finish no earlier than 2018-08-09 23:00; resources Omar Santiago [87.5%] → Omar Santiago; baseline start 2018-06-13 → 2018-06-13 12:30; baseline finish 2018-06-14 → 2018-06-14 12:30 |
| 82 | AT - Escalabilidad | 2018-06-28 → 2018-06-04 09:00 (-24d) | 2018-06-29 → 2018-06-04 18:00 (-25d) | 2d? → 1.75d? | 33.11d → 48d |  | resources Omar Santiago [87.5%] → Omar Santiago; baseline start 2018-06-13 → 2018-06-13 12:30; baseline finish 2018-06-14 → 2018-06-14 12:30 |
| 83 | AT - Modelado BD | 2018-06-29 → 2018-06-04 09:00 (-25d) | 2018-07-02 → 2018-06-04 18:00 (-28d) | 2d? → 1.75d? | 33.11d → 48d |  | resources Omar Santiago [87.5%] → Omar Santiago; baseline start 2018-06-13 → 2018-06-13 12:30; baseline finish 2018-06-14 → 2018-06-14 12:30 |
| 84 | AT - Herramientas para solucion | 2018-07-02 → 2018-06-04 09:00 (-28d) | 2018-07-03 → 2018-06-04 16:00 (-29d) | 2d? → 1.25d? | 33.11d → 48d |  | resources Omar Santiago [62.5%] → Omar Santiago; baseline start 2018-06-13 → 2018-06-13 12:30; baseline finish 2018-06-14 → 2018-06-14 12:30 |
| 85 | AT - Aplicación responsiva para navegadores web | 2018-07-03 → 2018-06-04 09:00 (-29d) | 2018-07-04 → 2018-06-04 16:00 (-30d) | 2d? → 1.25d? | 33.11d → 48d |  | resources Omar Santiago [62.5%] → Omar Santiago; baseline start 2018-06-13 → 2018-06-13 12:30; baseline finish 2018-06-14 → 2018-06-14 12:30 |
| 86 | AT - Peer Review y Vo Bo Arquitectura de Solucion | 2018-07-04 → 2018-06-04 09:00 (-30d) | 2018-07-04 → 2018-06-04 13:00 (-30d) |  | 33.11d → 38d |  | baseline start 2018-06-14 → 2018-06-14 12:30; baseline finish 2018-06-15 → 2018-06-15 12:30 |
| 87 | **AT - Elaboración de documentos AT** | 2018-06-04 A → 2018-06-04 09:00 A | 2018-07-19 → 2018-07-13 15:42 (-6d) | 66.14d? → 29d? | 33.11d → 19d |  | baseline start 2018-05-24 → 2018-05-24 09:00; baseline finish 2018-07-30 → 2018-07-30 15:54 |
| 88 | **AT - Modulo Catalogos Maestros** | 2018-06-04 A → 2018-06-04 09:00 A | 2018-07-19 → 2018-06-18 17:48 (-31d) | 66.14d? → 10d? | 33.11d → 38d |  | baseline start 2018-05-24 → 2018-05-24 09:00; baseline finish 2018-07-05 → 2018-07-05 17:30 |
| 89 | **AT - Catalogo Rol** | 2018-07-04 → 2018-06-04 15:00 (-30d) | 2018-07-09 → 2018-06-06 18:12 (-33d) | 4.8d → 2d | 49.01d → 46d |  | baseline start 2018-06-15 → 2018-06-15 12:30; baseline finish 2018-06-19 → 2018-06-19 17:42 |
| 90 | AT - Elaboración Bocetos de Archivos | 2018-07-04 → 2018-06-04 15:00 (-30d) | 2018-07-05 → 2018-06-05 11:24 (-30d) |  | 49.01d → 46d |  | baseline start 2018-06-15 → 2018-06-15 12:30; baseline finish 2018-06-18 → 2018-06-18 16:06 |
| 91 | AT - Elaboración Bocetos de Pantallas | 2018-07-05 → 2018-06-05 11:24 (-30d) | 2018-07-09 → 2018-06-06 18:12 (-33d) |  | 49.01d → 46d |  | baseline start 2018-06-18 → 2018-06-18 16:06; baseline finish 2018-06-19 → 2018-06-19 17:42 |
| 92 | **AT - Catalogo Actores** | 2018-07-04 → 2018-06-04 15:00 (-30d) | 2018-07-05 → 2018-06-05 11:00 (-30d) | 1.5d? → 1d? | 33.11d → 38d |  | baseline start 2018-06-15 → 2018-06-15 12:30; baseline finish 2018-06-18 → 2018-06-18 10:30 |
| 93 | AT - Elaboración Bocetos de Archivos | 2018-07-04 → 2018-06-04 15:00 (-30d) | 2018-07-04 → 2018-06-04 17:00 (-30d) |  | 33.11d → 38d |  | baseline start 2018-06-15 → 2018-06-15 12:30; baseline finish 2018-06-15 → 2018-06-15 17:30 |
| 94 | AT - Elaboración Bocetos de Pantallas | 2018-07-04 → 2018-06-04 17:00 (-30d) | 2018-07-05 → 2018-06-05 11:00 (-30d) |  | 33.11d → 38d |  | baseline start 2018-06-15 → 2018-06-15 17:30; baseline finish 2018-06-18 → 2018-06-18 10:30 |
| 95 | **AT - Catalogo Actores-Roles** | 2018-07-05 → 2018-06-05 11:00 (-30d) | 2018-07-09 → 2018-06-07 16:12 (-32d) | 4.8d? → 2d? | 47.51d → 45d |  | baseline start 2018-06-18 → 2018-06-18 10:30; baseline finish 2018-06-20 → 2018-06-20 15:42 |
| 96 | AT - Elaboración Bocetos de Archivos | 2018-07-05 → 2018-06-05 11:00 (-30d) | 2018-07-06 → 2018-06-06 09:24 (-30d) |  | 47.51d → 45d |  | baseline start 2018-06-18 → 2018-06-18 10:30; baseline finish 2018-06-19 → 2018-06-19 12:06 |
| 97 | AT - Elaboración Bocetos de Pantallas | 2018-07-06 → 2018-06-06 09:24 (-30d) | 2018-07-09 → 2018-06-07 16:12 (-32d) |  | 47.51d → 45d |  | baseline start 2018-06-19 → 2018-06-19 12:06; baseline finish 2018-06-20 → 2018-06-20 15:42 |
| 98 | **AT - Catalogo Contratos** | 2018-07-05 → 2018-06-05 11:00 (-30d) | 2018-07-09 → 2018-06-07 16:12 (-32d) | 4.8d? → 2d? | 33.11d → 38d |  | baseline start 2018-06-18 → 2018-06-18 10:30; baseline finish 2018-06-20 → 2018-06-20 15:42 |
| 99 | AT - Elaboración Bocetos de Archivos | 2018-07-05 → 2018-06-05 11:00 (-30d) | 2018-07-06 → 2018-06-06 09:24 (-30d) |  | 33.11d → 38d |  | baseline start 2018-06-18 → 2018-06-18 10:30; baseline finish 2018-06-19 → 2018-06-19 12:06 |
| 100 | AT - Elaboración Bocetos de Pantallas | 2018-07-06 → 2018-06-06 09:24 (-30d) | 2018-07-09 → 2018-06-07 16:12 (-32d) |  | 33.11d → 38d |  | baseline start 2018-06-19 → 2018-06-19 12:06; baseline finish 2018-06-20 → 2018-06-20 15:42 |
| 101 | **AT - Catalogo Tipos de Tarifa** | 2018-07-09 → 2018-06-07 16:12 (-32d) | 2018-07-12 → 2018-06-12 09:24 (-30d) | 4.8d? → 3d? | 42.71d → 42d |  | baseline start 2018-06-20 → 2018-06-20 15:42; baseline finish 2018-06-22 → 2018-06-22 18:54 |
| 102 | AT - Elaboración Bocetos de Archivos | 2018-07-09 → 2018-06-07 16:12 (-32d) | 2018-07-10 → 2018-06-08 12:36 (-32d) |  | 42.71d → 43d |  | baseline start 2018-06-20 → 2018-06-20 15:42; baseline finish 2018-06-21 → 2018-06-21 17:18 |
| 103 | AT - Elaboración Bocetos de Pantallas | 2018-07-10 → 2018-06-08 12:36 (-32d) | 2018-07-12 → 2018-06-12 09:24 (-30d) |  | 42.71d → 42d |  | baseline start 2018-06-21 → 2018-06-21 17:18; baseline finish 2018-06-22 → 2018-06-22 18:54 |
| 104 | **AT - Catalogo Tarifa** | 2018-07-09 → 2018-06-07 16:12 (-32d) | 2018-07-12 → 2018-06-12 09:24 (-30d) | 4.8d? → 3d? | 33.11d → 38d |  | baseline start 2018-06-20 → 2018-06-20 15:42; baseline finish 2018-06-22 → 2018-06-22 18:54 |
| 105 | AT - Elaboración Bocetos de Archivos | 2018-07-09 → 2018-06-07 16:12 (-32d) | 2018-07-10 → 2018-06-08 12:36 (-32d) |  | 33.11d → 38d |  | baseline start 2018-06-20 → 2018-06-20 15:42; baseline finish 2018-06-21 → 2018-06-21 17:18 |
| 106 | AT - Elaboración Bocetos de Pantallas | 2018-07-10 → 2018-06-08 12:36 (-32d) | 2018-07-12 → 2018-06-12 09:24 (-30d) |  | 33.11d → 38d |  | baseline start 2018-06-21 → 2018-06-21 17:18; baseline finish 2018-06-22 → 2018-06-22 18:54 |
| 107 | **AT - Catalogo Conceptos de Tarifa** | 2018-07-12 → 2018-06-12 09:24 (-30d) | 2018-07-16 → 2018-06-14 12:36 (-32d) | 4.8d? → 2d? | 33.11d → 38d |  | baseline start 2018-06-22 → 2018-06-22 18:54; baseline finish 2018-06-27 → 2018-06-27 12:06 |
| 108 | AT - Elaboración Bocetos de Archivos | 2018-07-12 → 2018-06-12 09:24 (-30d) | 2018-07-13 → 2018-06-12 17:48 (-31d) |  | 33.11d → 38d |  | baseline start 2018-06-22 → 2018-06-22 18:54; baseline finish 2018-06-26 → 2018-06-26 10:30 |
| 109 | AT - Elaboración Bocetos de Pantallas | 2018-07-13 → 2018-06-12 17:48 (-31d) | 2018-07-16 → 2018-06-14 12:36 (-32d) |  | 37.91d → 40d |  | baseline start 2018-06-26 → 2018-06-26 10:30; baseline finish 2018-06-27 → 2018-06-27 12:06 |
| 110 | **AT - Catalogo Choferes** | 2018-07-12 → 2018-06-12 09:24 (-30d) | 2018-07-16 → 2018-06-14 12:36 (-32d) | 4.8d? → 2d? | 34.71d → 39d |  | baseline start 2018-06-22 → 2018-06-22 18:54; baseline finish 2018-06-27 → 2018-06-27 12:06 |
| 111 | AT - Elaboración Bocetos de Archivos | 2018-07-12 → 2018-06-12 09:24 (-30d) | 2018-07-13 → 2018-06-12 17:48 (-31d) |  | 41.11d → 42d |  | baseline start 2018-06-22 → 2018-06-22 18:54; baseline finish 2018-06-26 → 2018-06-26 10:30 |
| 112 | AT - Elaboración Bocetos de Pantallas | 2018-07-13 → 2018-06-12 17:48 (-31d) | 2018-07-16 → 2018-06-14 12:36 (-32d) |  | 33.11d → 38d |  | baseline start 2018-06-26 → 2018-06-26 10:30; baseline finish 2018-06-27 → 2018-06-27 12:06 |
| 113 | **AT - Catalogo Camiones** | 2018-07-16 → 2018-06-14 12:36 (-32d) | 2018-07-19 → 2018-06-18 17:48 (-31d) | 4.8d? → 2d? | 33.11d → 38d |  | baseline start 2018-06-27 → 2018-06-27 12:06; baseline finish 2018-06-29 → 2018-06-29 17:18 |
| 114 | AT - Elaboración Bocetos de Archivos | 2018-07-16 → 2018-06-14 12:36 (-32d) | 2018-07-17 → 2018-06-15 11:00 (-32d) |  | 33.11d → 38d |  | baseline start 2018-06-27 → 2018-06-27 12:06; baseline finish 2018-06-28 → 2018-06-28 15:42 |
| 115 | AT - Elaboración Bocetos de Pantallas | 2018-07-17 → 2018-06-15 11:00 (-32d) | 2018-07-19 → 2018-06-18 17:48 (-31d) |  | 33.11d → 38d |  | baseline start 2018-06-28 → 2018-06-28 15:42; baseline finish 2018-06-29 → 2018-06-29 17:18 |
| 116 | **AT - Catalogo Responsables de Incidencias** | 2018-06-04 A → 2018-06-04 09:00 A | 2018-06-05 → 2018-06-05 10:30 | 2.38d? → 1d? | 0d → 18d |  | baseline start 2018-05-24 → 2018-05-24 09:00; baseline finish 2018-06-29 → 2018-06-29 09:06 |
| 117 | AT - Elaboración Bocetos de Archivos | 2018-06-04 A → 2018-06-04 09:00 A | 2018-06-04 A → 2018-06-04 11:00 A |  |  |  | baseline start 2018-05-24 → 2018-05-24 09:00; baseline finish 2018-06-28 → 2018-06-28 10:36 |
| 118 | AT - Elaboración Bocetos de Pantallas | 2018-06-04 A → 2018-06-04 09:00 A | 2018-06-05 → 2018-06-05 10:30 |  | 0d → 18d |  | baseline start 2018-05-24 → 2018-05-24 09:00; baseline finish 2018-06-29 → 2018-06-29 09:06 |
| 119 | **AT - Catalogo Tipos de Incidencias** | 2018-06-05 → 2018-06-05 10:30 | 2018-06-07 → 2018-06-07 15:42 | 4.8d? → 2d? | 92.07d → 45d |  | baseline start 2018-06-29 → 2018-06-29 09:06; baseline finish 2018-07-03 → 2018-07-03 12:18 |
| 120 | AT - Elaboración Bocetos de Archivos | 2018-06-05 → 2018-06-05 10:30 | 2018-06-05 → 2018-06-05 18:54 |  | 92.07d → 45d |  | baseline start 2018-06-29 → 2018-06-29 09:06; baseline finish 2018-07-02 → 2018-07-02 10:42 |
| 121 | AT - Elaboración Bocetos de Pantallas | 2018-06-05 → 2018-06-05 18:54 | 2018-06-07 → 2018-06-07 15:42 |  | 92.07d → 45d |  | baseline start 2018-07-02 → 2018-07-02 10:42; baseline finish 2018-07-03 → 2018-07-03 12:18 |
| 122 | **AT - Catalogo Tipos de Viaje** | 2018-06-05 → 2018-06-05 10:30 | 2018-06-07 → 2018-06-07 15:42 | 4.8d? → 2d? | 0d → 18d |  | baseline start 2018-06-29 → 2018-06-29 09:06; baseline finish 2018-07-03 → 2018-07-03 12:18 |
| 123 | AT - Elaboración Bocetos de Archivos | 2018-06-05 → 2018-06-05 10:30 | 2018-06-05 → 2018-06-05 18:54 |  | 0d → 18d |  | baseline start 2018-06-29 → 2018-06-29 09:06; baseline finish 2018-07-02 → 2018-07-02 10:42 |
| 124 | AT - Elaboración Bocetos de Pantallas | 2018-06-05 → 2018-06-05 18:54 | 2018-06-07 → 2018-06-07 15:42 |  | 0d → 18d |  | baseline start 2018-07-02 → 2018-07-02 10:42; baseline finish 2018-07-03 → 2018-07-03 12:18 |
| 125 | **AT - Catalogo Tipos de Carga/Descarga** | 2018-06-07 → 2018-06-07 15:42 | 2018-06-11 → 2018-06-11 18:54 | 4.8d? → 2d? | 87.27d → 43d |  | baseline start 2018-07-03 → 2018-07-03 12:18; baseline finish 2018-07-05 → 2018-07-05 17:30 |
| 126 | AT - Elaboración Bocetos de Archivos | 2018-06-07 → 2018-06-07 15:42 | 2018-06-08 → 2018-06-08 12:06 |  | 87.27d → 43d |  | baseline start 2018-07-03 → 2018-07-03 12:18; baseline finish 2018-07-04 → 2018-07-04 15:54 |
| 127 | AT - Elaboración Bocetos de Pantallas | 2018-06-08 → 2018-06-08 12:06 | 2018-06-11 → 2018-06-11 18:54 |  | 87.27d → 43d |  | baseline start 2018-07-04 → 2018-07-04 15:54; baseline finish 2018-07-05 → 2018-07-05 17:30 |
| 128 | **AT - Catalogo Clientes de Entrega** | 2018-06-07 → 2018-06-07 15:42 | 2018-06-11 → 2018-06-11 18:54 | 4.8d? → 2d? | 87.27d → 43d |  | baseline start 2018-07-03 → 2018-07-03 12:18; baseline finish 2018-07-05 → 2018-07-05 17:30 |
| 129 | AT - Elaboración Bocetos de Archivos | 2018-06-07 → 2018-06-07 15:42 | 2018-06-08 → 2018-06-08 12:06 |  | 87.27d → 43d |  | baseline start 2018-07-03 → 2018-07-03 12:18; baseline finish 2018-07-04 → 2018-07-04 15:54 |
| 130 | AT - Elaboración Bocetos de Pantallas | 2018-06-08 → 2018-06-08 12:06 | 2018-06-11 → 2018-06-11 18:54 |  | 87.27d → 43d |  | baseline start 2018-07-04 → 2018-07-04 15:54; baseline finish 2018-07-05 → 2018-07-05 17:30 |
| 131 | **AT - Catalogo Clientes Solicidates** | 2018-06-07 → 2018-06-07 15:42 | 2018-06-11 → 2018-06-11 18:54 | 4.8d? → 2d? | 0d → 18d |  | baseline start 2018-07-03 → 2018-07-03 12:18; baseline finish 2018-07-05 → 2018-07-05 17:30 |
| 132 | AT - Elaboración Bocetos de Archivos | 2018-06-07 → 2018-06-07 15:42 | 2018-06-08 → 2018-06-08 12:06 |  | 0d → 18d |  | baseline start 2018-07-03 → 2018-07-03 12:18; baseline finish 2018-07-04 → 2018-07-04 15:54 |
| 133 | AT - Elaboración Bocetos de Pantallas | 2018-06-08 → 2018-06-08 12:06 | 2018-06-11 → 2018-06-11 18:54 |  | 0d → 18d |  | baseline start 2018-07-04 → 2018-07-04 15:54; baseline finish 2018-07-05 → 2018-07-05 17:30 |
| 134 | **AT - Modulo Seguridad** | 2018-06-11 → 2018-06-11 18:54 | 2018-06-19 → 2018-06-19 15:42 | 11.2d? → 6d? | 0d → 18d |  | baseline start 2018-07-05 → 2018-07-05 17:30; baseline finish 2018-07-12 → 2018-07-12 15:54 |
| 135 | **AT - Roles** | 2018-06-11 → 2018-06-11 18:54 | 2018-06-15 → 2018-06-15 10:30 | 6.4d? → 4d? | 80.87d → 39d |  | baseline start 2018-07-05 → 2018-07-05 17:30; baseline finish 2018-07-10 → 2018-07-10 10:42 |
| 136 | AT - Elaboración Bocetos de Archivos | 2018-06-11 → 2018-06-11 18:54 | 2018-06-13 → 2018-06-13 10:30 |  | 80.87d → 39d |  | baseline start 2018-07-05 → 2018-07-05 17:30; baseline finish 2018-07-09 → 2018-07-09 09:06 |
| 137 | AT - Elaboración Bocetos de Pantallas | 2018-06-13 → 2018-06-13 10:30 | 2018-06-15 → 2018-06-15 10:30 |  | 80.87d → 39d |  | baseline start 2018-07-09 → 2018-07-09 09:06; baseline finish 2018-07-10 → 2018-07-10 10:42 |
| 138 | **AT - Configuracion** | 2018-06-11 → 2018-06-11 18:54 | 2018-06-15 → 2018-06-15 10:30 | 6.4d? → 4d? | 0d → 18d |  | baseline start 2018-07-05 → 2018-07-05 17:30; baseline finish 2018-07-10 → 2018-07-10 10:42 |
| 139 | AT - Elaboración Bocetos de Archivos | 2018-06-11 → 2018-06-11 18:54 | 2018-06-13 → 2018-06-13 10:30 |  | 0d → 18d |  | baseline start 2018-07-05 → 2018-07-05 17:30; baseline finish 2018-07-09 → 2018-07-09 09:06 |
| 140 | AT - Elaboración Bocetos de Pantallas | 2018-06-13 → 2018-06-13 10:30 | 2018-06-15 → 2018-06-15 10:30 |  | 0d → 18d |  | baseline start 2018-07-09 → 2018-07-09 09:06; baseline finish 2018-07-10 → 2018-07-10 10:42 |
| 141 | **AT - Permisos** | 2018-06-15 → 2018-06-15 10:30 | 2018-06-19 → 2018-06-19 15:42 | 4.8d? → 2d? | 0d → 18d |  | baseline start 2018-07-10 → 2018-07-10 10:42; baseline finish 2018-07-12 → 2018-07-12 15:54 |

| ID | Task | Start | Finish | Duration | Total float | Predecessors | Other |
| --- | --- | --- | --- | --- | --- | --- | --- |
| 142 | AT - Elaboración Bocetos de Archivos | 2018-06-15 → 2018-06-15 10:30 | 2018-06-18 → 2018-06-18 12:06 |  | 0d → 18d |  | baseline start 2018-07-10 → 2018-07-10 10:42; baseline finish 2018-07-11 → 2018-07-11 12:18 |
| 143 | AT - Elaboración Bocetos de Pantallas | 2018-06-18 → 2018-06-18 12:06 | 2018-06-19 → 2018-06-19 15:42 |  | 0d → 18d |  | baseline start 2018-07-11 → 2018-07-11 12:18; baseline finish 2018-07-12 → 2018-07-12 15:54 |
| 144 | **AT - Modulo Solicitudes** | 2018-06-19 → 2018-06-19 15:42 | 2018-07-06 → 2018-07-06 18:22 | 26.67d? → 13d? | 0d → 18d |  | baseline start 2018-07-12 → 2018-07-12 15:54; baseline finish 2018-07-24 → 2018-07-24 15:54 |
| 145 | **AT - Cliente - Solicitud de Transporte** | 2018-06-19 → 2018-06-19 15:42 | 2018-06-22 → 2018-06-22 11:02 | 5.33d? → 3d? | 0d → 18d |  | baseline start 2018-07-12 → 2018-07-12 15:54; baseline finish 2018-07-17 → 2018-07-17 11:14 |
| 146 | AT - Elaboración Bocetos de Archivos | 2018-06-19 → 2018-06-19 15:42 | 2018-06-20 → 2018-06-20 15:42 |  | 0d → 18d |  | baseline start 2018-07-12 → 2018-07-12 15:54; baseline finish 2018-07-13 → 2018-07-13 18:34 |
| 147 | AT - Elaboración Bocetos de Pantallas | 2018-06-20 → 2018-06-20 15:42 | 2018-06-22 → 2018-06-22 11:02 |  | 0d → 18d |  | baseline start 2018-07-13 → 2018-07-13 18:34; baseline finish 2018-07-17 → 2018-07-17 11:14 |
| 148 | **AT - Trafico - Valoracion del Viaje** | 2018-06-22 → 2018-06-22 11:02 | 2018-06-26 → 2018-06-26 18:22 | 5.33d? → 2d? | 0d → 18d |  | baseline start 2018-07-12 → 2018-07-12 15:54; baseline finish 2018-07-17 → 2018-07-17 11:14 |
| 149 | AT - Elaboración Bocetos de Archivos | 2018-06-22 → 2018-06-22 11:02 | 2018-06-25 → 2018-06-25 11:02 |  | 0d → 18d |  | baseline start 2018-07-12 → 2018-07-12 15:54; baseline finish 2018-07-13 → 2018-07-13 18:34 |
| 150 | AT - Elaboración Bocetos de Pantallas | 2018-06-25 → 2018-06-25 11:02 | 2018-06-26 → 2018-06-26 18:22 |  | 0d → 18d |  | baseline start 2018-07-13 → 2018-07-13 18:34; baseline finish 2018-07-17 → 2018-07-17 11:14 |
| 151 | **AT - Distribucion - Asugnacion de Unidad y Carga** | 2018-06-26 → 2018-06-26 18:22 | 2018-06-29 → 2018-06-29 15:42 | 5.33d? → 3d? | 0d → 18d |  | baseline start 2018-07-17 → 2018-07-17 11:14; baseline finish 2018-07-19 → 2018-07-19 18:34 |
| 152 | AT - Elaboración Bocetos de Archivos | 2018-06-26 → 2018-06-26 18:22 | 2018-06-27 → 2018-06-27 18:22 |  | 0d → 18d |  | baseline start 2018-07-17 → 2018-07-17 11:14; baseline finish 2018-07-18 → 2018-07-18 15:54 |
| 153 | AT - Elaboración Bocetos de Pantallas | 2018-06-27 → 2018-06-27 18:22 | 2018-06-29 → 2018-06-29 15:42 |  | 0d → 18d |  | baseline start 2018-07-18 → 2018-07-18 15:54; baseline finish 2018-07-19 → 2018-07-19 18:34 |
| 154 | **AT - Operador CL - Operación y Descarga** | 2018-06-29 → 2018-06-29 15:42 | 2018-07-04 → 2018-07-04 11:02 | 5.33d? → 3d? | 0d → 18d |  | baseline start 2018-07-17 → 2018-07-17 11:14; baseline finish 2018-07-19 → 2018-07-19 18:34 |
| 155 | AT - Elaboración Bocetos de Archivos | 2018-06-29 → 2018-06-29 15:42 | 2018-07-02 → 2018-07-02 15:42 |  | 0d → 18d |  | baseline start 2018-07-17 → 2018-07-17 11:14; baseline finish 2018-07-18 → 2018-07-18 15:54 |
| 156 | AT - Elaboración Bocetos de Pantallas | 2018-07-02 → 2018-07-02 15:42 | 2018-07-04 → 2018-07-04 11:02 |  | 0d → 18d |  | baseline start 2018-07-18 → 2018-07-18 15:54; baseline finish 2018-07-19 → 2018-07-19 18:34 |
| 157 | **AT - Distribucion - Cierre del Viaje y Facturacion** | 2018-07-04 → 2018-07-04 11:02 | 2018-07-06 → 2018-07-06 18:22 | 5.33d? → 2d? | 0d → 18d |  | baseline start 2018-07-19 → 2018-07-19 18:34; baseline finish 2018-07-24 → 2018-07-24 15:54 |
| 158 | AT - Elaboración Bocetos de Archivos | 2018-07-04 → 2018-07-04 11:02 | 2018-07-05 → 2018-07-05 11:02 |  | 0d → 18d |  | baseline start 2018-07-19 → 2018-07-19 18:34; baseline finish 2018-07-23 → 2018-07-23 11:14 |
| 159 | AT - Elaboración Bocetos de Pantallas | 2018-07-05 → 2018-07-05 11:02 | 2018-07-06 → 2018-07-06 18:22 |  | 0d → 18d |  | baseline start 2018-07-23 → 2018-07-23 11:14; baseline finish 2018-07-24 → 2018-07-24 15:54 |
| 160 | **AT - Modulo Alarmas/Reportes/Indicadores de gestión** | 2018-07-06 → 2018-07-06 18:22 | 2018-07-13 → 2018-07-13 15:42 | 9.33d? → 5d? | 0d → 18d |  | baseline start 2018-07-24 → 2018-07-24 15:54; baseline finish 2018-07-30 → 2018-07-30 15:54 |
| 161 | **AT - Alarmas** | 2018-07-06 → 2018-07-06 18:22 | 2018-07-11 → 2018-07-11 11:02 | 4.67d? → 3d? | 44.74d → 21d |  | baseline start 2018-07-24 → 2018-07-24 15:54; baseline finish 2018-07-26 → 2018-07-26 15:54 |
| 162 | AT - Elaboración Bocetos de Archivos | 2018-07-06 → 2018-07-06 18:22 | 2018-07-10 → 2018-07-10 11:02 |  | 44.74d → 21d |  | baseline start 2018-07-24 → 2018-07-24 15:54; baseline finish 2018-07-25 → 2018-07-25 15:54 |
| 163 | AT - Elaboración Bocetos de Pantallas | 2018-07-10 → 2018-07-10 11:02 | 2018-07-11 → 2018-07-11 11:02 |  | 44.74d → 21d |  | baseline start 2018-07-25 → 2018-07-25 15:54; baseline finish 2018-07-26 → 2018-07-26 15:54 |
| 164 | **AT - Reportes** | 2018-07-06 → 2018-07-06 18:22 | 2018-07-11 → 2018-07-11 11:02 | 4.67d? → 3d? | 0d → 18d |  | baseline start 2018-07-24 → 2018-07-24 15:54; baseline finish 2018-07-26 → 2018-07-26 15:54 |
| 165 | AT - Elaboración Bocetos de Archivos | 2018-07-06 → 2018-07-06 18:22 | 2018-07-10 → 2018-07-10 11:02 |  | 0d → 18d |  | baseline start 2018-07-24 → 2018-07-24 15:54; baseline finish 2018-07-25 → 2018-07-25 15:54 |
| 166 | AT - Elaboración Bocetos de Pantallas | 2018-07-10 → 2018-07-10 11:02 | 2018-07-11 → 2018-07-11 11:02 |  | 0d → 18d |  | baseline start 2018-07-25 → 2018-07-25 15:54; baseline finish 2018-07-26 → 2018-07-26 15:54 |
| 167 | **AT - Indicadores de gestión** | 2018-07-11 → 2018-07-11 11:02 | 2018-07-13 → 2018-07-13 15:42 | 4.67d? → 2d? | 0d → 18d |  | baseline start 2018-07-26 → 2018-07-26 15:54; baseline finish 2018-07-30 → 2018-07-30 15:54 |
| 168 | AT - Elaboración Bocetos de Archivos | 2018-07-11 → 2018-07-11 11:02 | 2018-07-12 → 2018-07-12 15:42 |  | 0d → 18d |  | baseline start 2018-07-26 → 2018-07-26 15:54; baseline finish 2018-07-27 → 2018-07-27 15:54 |
| 169 | AT - Elaboración Bocetos de Pantallas | 2018-07-12 → 2018-07-12 15:42 | 2018-07-13 → 2018-07-13 15:42 |  | 0d → 18d |  | baseline start 2018-07-27 → 2018-07-27 15:54; baseline finish 2018-07-30 → 2018-07-30 15:54 |
| 170 | AT - Revisión con el usuario | 2018-07-13 → 2018-07-20 11:00 (+7d) | 2018-07-16 → 2018-07-20 17:00 (+4d) |  | 0d → 13d |  | baseline start 2018-07-30 → 2018-07-30 15:54; baseline finish 2018-07-31 → 2018-07-31 15:54 |
| 171 | AT - Ajustes de comentarios del usuario | 2018-07-16 → 2018-07-20 17:00 (+4d) | 2018-07-16 → 2018-07-23 13:00 (+7d) |  | 0d → 13d |  | baseline start 2018-07-31 → 2018-07-31 15:54; baseline finish 2018-08-01 → 2018-08-01 15:54 |
| 172 | AT - Peer Review y Vo Bo | 2018-07-16 → 2018-07-23 15:00 (+7d) | 2018-07-17 → 2018-07-23 17:00 (+6d) |  | 0d → 13d |  | baseline start 2018-08-01 → 2018-08-01 15:54; baseline finish 2018-08-02 → 2018-08-02 15:54 |
| 173 | Validacion de documentacion, ultimos ajustes | 2018-07-17 → 2018-06-04 09:00 (-43d) | 2018-07-17 → 2018-06-04 17:00 (-43d) |  | 0d → 30d | 172 → none | baseline start 2018-08-02 → 2018-08-02 15:54; baseline finish 2018-08-03 → 2018-08-03 15:54 |
| 174 | **CC_Desarrollo** | 2018-06-07 → 2018-06-04 15:00 (-3d) | 2018-08-10 → 2018-07-03 11:00 (-38d) | 92.07d? → 21d? | 0d → 28d |  | baseline start 2018-06-15 → 2018-06-15 12:30; baseline finish 2018-08-21 → 2018-08-21 09:54 |
| 175 | **Diseño y Construcción** | 2018-06-07 → 2018-06-04 15:00 (-3d) | 2018-08-10 → 2018-06-29 23:00 (-42d) | 92.07d? → 20d? | 0d → 29d |  | baseline start 2018-06-15 → 2018-06-15 12:30; baseline finish 2018-08-20 → 2018-08-20 09:54 |
| 176 | CC - Revision del documento de Arquitectura de Solucion | 2018-07-04 → 2018-06-04 15:00 (-30d) | 2018-07-05 → 2018-06-04 18:00 (-31d) |  | 47.31d → 45d |  | baseline start 2018-06-15 → 2018-06-15 12:30; baseline finish 2018-06-18 → 2018-06-18 12:30 |
| 177 | **CC - Instalacion y Configuracion** | 2018-07-05 → 2018-06-04 18:00 (-31d) | 2018-07-09 → 2018-06-07 17:00 (-32d) | 5.75d? → 3d? | 47.31d → 45d |  | baseline start 2018-06-18 → 2018-06-18 12:30; baseline finish 2018-06-25 → 2018-06-25 09:50 |
| 178 | CC - Instalacion de herramientas de desarrollo | 2018-07-05 → 2018-06-04 18:00 (-31d) | 2018-07-06 → 2018-06-05 19:00 (-31d) |  | 47.31d → 46d |  | baseline start 2018-06-18 → 2018-06-18 12:30; baseline finish 2018-06-21 → 2018-06-21 12:30 |
| 179 | CC - Instalacion de herramientas de gestion de Bases de Datos | 2018-07-06 → 2018-06-06 09:00 (-30d) | 2018-07-09 → 2018-06-07 10:00 (-32d) |  | 47.31d → 45d |  | baseline start 2018-06-18 → 2018-06-18 12:30; baseline finish 2018-06-21 → 2018-06-21 12:30 |
| 180 | CC - Instalacion de herramienta para soportar aplicaciones web | 2018-07-09 → 2018-06-07 10:00 (-32d) | 2018-07-09 → 2018-06-07 17:00 (-32d) |  | 47.31d → 45d |  | baseline start 2018-06-21 → 2018-06-21 12:30; baseline finish 2018-06-25 → 2018-06-25 09:50 |
| 181 | **CC - Desarrollo** | 2018-06-07 → 2018-06-04 17:00 (-3d) | 2018-08-10 → 2018-06-28 15:17 (-43d) | 92.07d? → 18d? | 0d → 30d |  | baseline start 2018-06-18 → 2018-06-18 10:30; baseline finish 2018-07-31 → 2018-07-31 15:54 |
| 182 | **CC - Modulo Catalogos Maestros** | 2018-07-17 → 2018-06-04 17:00 (-43d) | 2018-07-27 → 2018-06-14 11:00 (-43d) | 15d? → 8d? | 0d → 30d |  | baseline start 2018-06-18 → 2018-06-18 10:30; baseline finish 2018-07-06 → 2018-07-06 17:30 |
| 183 | CC - Catalogo Rol | 2018-07-17 → 2018-06-04 17:00 (-43d) | 2018-07-18 → 2018-06-05 11:00 (-43d) |  | 0d → 30d |  | baseline start 2018-06-19 → 2018-06-19 17:42; baseline finish 2018-06-20 → 2018-06-20 17:42 |
| 184 | CC - Catalogo Actores | 2018-07-18 → 2018-06-05 11:00 (-43d) | 2018-07-18 → 2018-06-05 17:00 (-43d) |  | 0d → 30d |  | baseline start 2018-06-18 → 2018-06-18 10:30; baseline finish 2018-06-19 → 2018-06-19 10:30 |
| 185 | CC - Catalogo Actores-Roles | 2018-07-18 → 2018-06-05 17:00 (-43d) | 2018-07-19 → 2018-06-06 11:00 (-43d) |  | 0d → 30d |  | baseline start 2018-06-20 → 2018-06-20 15:42; baseline finish 2018-06-21 → 2018-06-21 15:42 |
| 186 | CC - Catalogo Contratos | 2018-07-19 → 2018-06-06 11:00 (-43d) | 2018-07-19 → 2018-06-06 17:00 (-43d) |  | 0d → 30d |  | baseline start 2018-06-20 → 2018-06-20 15:42; baseline finish 2018-06-21 → 2018-06-21 15:42 |
| 187 | CC - Catalogo Tipos de Tarifa | 2018-07-19 → 2018-06-06 17:00 (-43d) | 2018-07-20 → 2018-06-07 11:00 (-43d) |  | 0d → 30d |  | baseline start 2018-06-22 → 2018-06-22 18:54; baseline finish 2018-06-25 → 2018-06-25 18:54 |
| 188 | CC - Catalogo Tarifa | 2018-07-20 → 2018-06-07 11:00 (-43d) | 2018-07-20 → 2018-06-07 17:00 (-43d) |  | 0d → 30d |  | baseline start 2018-06-22 → 2018-06-22 18:54; baseline finish 2018-06-25 → 2018-06-25 18:54 |
| 189 | CC - Catalogo Conceptos de Tarifa | 2018-07-20 → 2018-06-07 17:00 (-43d) | 2018-07-23 → 2018-06-08 11:00 (-45d) |  | 0d → 30d |  | baseline start 2018-06-27 → 2018-06-27 12:06; baseline finish 2018-06-28 → 2018-06-28 12:06 |
| 190 | CC - Catalogo Choferes | 2018-07-23 → 2018-06-08 11:00 (-45d) | 2018-07-23 → 2018-06-08 17:00 (-45d) |  | 0d → 30d |  | baseline start 2018-06-27 → 2018-06-27 12:06; baseline finish 2018-06-28 → 2018-06-28 12:06 |
| 191 | CC - Catalogo Camiones | 2018-07-23 → 2018-06-08 17:00 (-45d) | 2018-07-24 → 2018-06-11 11:00 (-43d) |  | 0d → 30d |  | baseline start 2018-06-29 → 2018-06-29 17:18; baseline finish 2018-07-02 → 2018-07-02 17:18 |
| 192 | CC - Catalogo Responsables de Incidencias | 2018-07-24 → 2018-06-11 11:00 (-43d) | 2018-07-24 → 2018-06-11 17:00 (-43d) |  | 0d → 30d |  | baseline start 2018-06-29 → 2018-06-29 09:06; baseline finish 2018-07-02 → 2018-07-02 09:06 |
| 193 | CC - Catalogo Tipos de Incidencias | 2018-07-24 → 2018-06-11 17:00 (-43d) | 2018-07-25 → 2018-06-12 11:00 (-43d) |  | 0d → 30d |  | baseline start 2018-07-03 → 2018-07-03 12:18; baseline finish 2018-07-04 → 2018-07-04 12:18 |
| 194 | CC - Catalogo Tipos de Viaje | 2018-07-25 → 2018-06-12 11:00 (-43d) | 2018-07-25 → 2018-06-12 17:00 (-43d) |  | 0d → 30d |  | baseline start 2018-07-03 → 2018-07-03 12:18; baseline finish 2018-07-04 → 2018-07-04 12:18 |
| 195 | CC - Catalogo Tipos de Carga/Descarga | 2018-07-25 → 2018-06-12 17:00 (-43d) | 2018-07-26 → 2018-06-13 11:00 (-43d) |  | 0d → 30d |  | baseline start 2018-07-05 → 2018-07-05 17:30; baseline finish 2018-07-06 → 2018-07-06 17:30 |
| 196 | CC - Catalogo Clientes de Entrega | 2018-07-26 → 2018-06-13 11:00 (-43d) | 2018-07-26 → 2018-06-13 17:00 (-43d) |  | 0d → 30d |  | baseline start 2018-07-05 → 2018-07-05 17:30; baseline finish 2018-07-06 → 2018-07-06 17:30 |
| 197 | CC - Catalogo Clientes Solicidates | 2018-07-26 → 2018-06-13 17:00 (-43d) | 2018-07-27 → 2018-06-14 11:00 (-43d) |  | 0d → 30d |  | baseline start 2018-07-05 → 2018-07-05 17:30; baseline finish 2018-07-06 → 2018-07-06 17:30 |
| 198 | **CC - Modulo Seguridad** | 2018-07-27 → 2018-06-14 11:00 (-43d) | 2018-08-01 → 2018-06-18 19:00 (-44d) | 5.5d? → 2d? | 0d → 30d |  | baseline start 2018-07-10 → 2018-07-10 10:42; baseline finish 2018-07-16 → 2018-07-16 15:54 |
| 199 | CC - Roles | 2018-07-27 → 2018-06-14 11:00 (-43d) | 2018-07-30 → 2018-06-15 10:00 (-45d) |  | 0d → 30d |  | baseline start 2018-07-10 → 2018-07-10 10:42; baseline finish 2018-07-11 → 2018-07-11 18:42 |
| 200 | CC - Configuracion | 2018-07-30 → 2018-06-15 10:00 (-45d) | 2018-07-31 → 2018-06-15 19:00 (-46d) |  | 0d → 30d |  | baseline start 2018-07-10 → 2018-07-10 10:42; baseline finish 2018-07-11 → 2018-07-11 18:42 |
| 201 | CC - Permisos | 2018-07-31 → 2018-06-18 09:00 (-43d) | 2018-08-01 → 2018-06-18 19:00 (-44d) |  | 0d → 30d |  | baseline start 2018-07-12 → 2018-07-12 15:54; baseline finish 2018-07-16 → 2018-07-16 15:54 |
| 202 | **CC - Modulo Solicitudes** | 2018-08-01 → 2018-06-19 09:00 (-43d) | 2018-08-10 → 2018-06-28 15:17 (-43d) | 15.07d? → 7d? | 0d → 30d |  | baseline start 2018-07-17 → 2018-07-17 11:14; baseline finish 2018-07-30 → 2018-07-30 17:11 |
| 203 | CC - Cliente - Solicitud de Transporte | 2018-08-01 → 2018-06-19 09:00 (-43d) | 2018-08-01 → 2018-06-19 18:00 (-43d) |  | 0d → 30d |  | baseline start 2018-07-17 → 2018-07-17 11:14; baseline finish 2018-07-18 → 2018-07-18 11:14 |
| 204 | CC - Trafico - Valoracion del Viaje | 2018-08-01 → 2018-06-19 18:00 (-43d) | 2018-08-02 → 2018-06-20 17:00 (-43d) |  | 0d → 31d |  | baseline start 2018-07-17 → 2018-07-17 11:14; baseline finish 2018-07-18 → 2018-07-18 11:14 |
| 205 | CC - Distribucion - Asugnacion de Unidad y Carga | 2018-08-02 → 2018-06-20 17:00 (-43d) | 2018-08-03 → 2018-06-21 16:00 (-43d) |  | 0d → 31d |  | baseline start 2018-07-19 → 2018-07-19 18:34; baseline finish 2018-07-20 → 2018-07-20 18:34 |
| 206 | CC - Operador CL - Operación y Descarga | 2018-08-03 → 2018-06-21 16:00 (-43d) | 2018-08-06 → 2018-06-22 13:00 (-45d) |  | 0d → 30d |  | baseline start 2018-07-19 → 2018-07-19 18:34; baseline finish 2018-07-20 → 2018-07-20 18:34 |
| 207 | CC - Distribucion - Cierre del Viaje y Facturacion | 2018-08-06 → 2018-06-22 15:00 (-45d) | 2018-08-07 → 2018-06-25 12:00 (-43d) |  | 0d → 30d |  | baseline start 2018-07-24 → 2018-07-24 15:54; baseline finish 2018-07-25 → 2018-07-25 15:54 |
| 208 | **CC - Primer Check point operativo** | 2018-08-07 → 2018-06-25 12:00 (-43d) | 2018-08-09 → 2018-06-27 12:00 (-43d) | 4d? → 2d? | 0d → 30d |  | baseline start 2018-07-25 → 2018-07-25 15:54; baseline finish 2018-07-27 → 2018-07-27 15:54 |
| 209 | CC - Primer Check point operativo | 2018-08-07 → 2018-06-25 12:00 (-43d) | 2018-08-08 → 2018-06-26 12:00 (-43d) |  | 0d → 30d |  | baseline start 2018-07-25 → 2018-07-25 15:54; baseline finish 2018-07-26 → 2018-07-26 15:54 |
| 210 | CC - Actualizacion de los puntos del primer Ckeckpoint | 2018-08-08 → 2018-06-26 12:00 (-43d) | 2018-08-09 → 2018-06-27 12:00 (-43d) |  | 0d → 30d |  | baseline start 2018-07-26 → 2018-07-26 15:54; baseline finish 2018-07-27 → 2018-07-27 15:54 |
| 211 | **CC - Segundo Check point operativo** | 2018-08-09 → 2018-06-27 12:00 (-43d) | 2018-08-10 → 2018-06-28 15:17 (-43d) | 2.32d? → 1d? | 0d → 30d |  | baseline start 2018-07-27 → 2018-07-27 15:54; baseline finish 2018-07-30 → 2018-07-30 17:11 |

| ID | Task | Start | Finish | Duration | Total float | Other |
| --- | --- | --- | --- | --- | --- | --- |
| 212 | CC - Segundo Check point operativo | 2018-08-09 → 2018-06-27 12:00 (-43d) | 2018-08-09 → 2018-06-27 16:17 (-43d) |  | 0d → 30d | baseline start 2018-07-27 → 2018-07-27 15:54; baseline finish 2018-07-27 → 2018-07-27 18:11 |
| 213 | CC - Actualizacion de los puntos del segundo Check point operativo | 2018-08-09 → 2018-06-27 16:17 (-43d) | 2018-08-10 → 2018-06-28 15:17 (-43d) |  | 0d → 30d | baseline start 2018-07-27 → 2018-07-27 18:11; baseline finish 2018-07-30 → 2018-07-30 17:11 |
| 214 | **CC - Modulo Alarmas/Reportes/Indicadores de gestión** | 2018-06-07 → 2018-06-07 15:42 | 2018-06-12 → 2018-06-14 23:00 (+2d) |  | 66.32d → 27d | baseline start 2018-07-26 → 2018-07-26 15:54; baseline finish 2018-07-31 → 2018-07-31 15:54 |
| 215 | CC - Alarmas | 2018-06-07 → 2018-06-07 15:42 | 2018-06-08 → 2018-06-08 23:00 |  | 66.32d → 27d | baseline start 2018-07-26 → 2018-07-26 15:54; baseline finish 2018-07-27 → 2018-07-27 15:54 |
| 216 | CC - Reportes | 2018-06-08 → 2018-06-11 09:00 (+3d) | 2018-06-11 → 2018-06-12 23:00 (+1d) |  | 66.32d → 27d | baseline start 2018-07-26 → 2018-07-26 15:54; baseline finish 2018-07-27 → 2018-07-27 15:54 |
| 217 | CC - Indicadores de gestión | 2018-06-11 → 2018-06-13 09:00 (+2d) | 2018-06-12 → 2018-06-14 23:00 (+2d) |  | 66.32d → 27d | baseline start 2018-07-30 → 2018-07-30 15:54; baseline finish 2018-07-31 → 2018-07-31 15:54 |
| 218 | **PU - Pruebas Untarias** | 2018-06-08 → 2018-06-05 11:00 (-3d) | 2018-08-07 → 2018-06-25 17:00 (-43d) | 84.5d? → 14d? | 5.57d → 34d | baseline start 2018-06-19 → 2018-06-19 10:30; baseline finish 2018-08-01 → 2018-08-01 15:54 |
| 219 | **PU - Modulo Catalogos Maestros** | 2018-07-18 → 2018-06-05 11:00 (-43d) | 2018-07-27 → 2018-06-14 13:00 (-43d) | 14.5d? → 7d? | 20.07d → 40d | baseline start 2018-06-19 → 2018-06-19 10:30; baseline finish 2018-07-09 → 2018-07-09 17:30 |
| 220 | PU - Catalogo Rol | 2018-07-18 → 2018-06-05 11:00 (-43d) | 2018-07-18 → 2018-06-05 13:00 (-43d) |  | 34.07d → 47d | baseline start 2018-06-20 → 2018-06-20 17:42; baseline finish 2018-06-21 → 2018-06-21 17:42 |
| 221 | PU - Catalogo Actores | 2018-07-18 → 2018-06-05 17:00 (-43d) | 2018-07-19 → 2018-06-05 19:00 (-44d) |  | 33.07d → 47d | baseline start 2018-06-19 → 2018-06-19 10:30; baseline finish 2018-06-19 → 2018-06-19 12:30 |
| 222 | PU - Catalogo Actores-Roles | 2018-07-19 → 2018-06-06 11:00 (-43d) | 2018-07-19 → 2018-06-06 13:00 (-43d) |  | 32.07d → 46d | baseline start 2018-06-21 → 2018-06-21 15:42; baseline finish 2018-06-22 → 2018-06-22 15:42 |
| 223 | PU - Catalogo Contratos | 2018-07-19 → 2018-06-06 17:00 (-43d) | 2018-07-20 → 2018-06-06 19:00 (-44d) |  | 31.07d → 46d | baseline start 2018-06-21 → 2018-06-21 15:42; baseline finish 2018-06-22 → 2018-06-22 15:42 |
| 224 | PU - Catalogo Tipos de Tarifa | 2018-07-20 → 2018-06-07 11:00 (-43d) | 2018-07-20 → 2018-06-07 13:00 (-43d) |  | 30.07d → 45d | baseline start 2018-06-25 → 2018-06-25 18:54; baseline finish 2018-06-26 → 2018-06-26 18:54 |
| 225 | PU - Catalogo Tarifa | 2018-07-20 → 2018-06-07 17:00 (-43d) | 2018-07-23 → 2018-06-07 19:00 (-46d) |  | 29.07d → 45d | baseline start 2018-06-25 → 2018-06-25 18:54; baseline finish 2018-06-26 → 2018-06-26 18:54 |
| 226 | PU - Catalogo Conceptos de Tarifa | 2018-07-23 → 2018-06-08 11:00 (-45d) | 2018-07-23 → 2018-06-08 13:00 (-45d) |  | 28.07d → 44d | baseline start 2018-06-28 → 2018-06-28 12:06; baseline finish 2018-06-29 → 2018-06-29 12:06 |
| 227 | PU - Catalogo Choferes | 2018-07-23 → 2018-06-08 17:00 (-45d) | 2018-07-24 → 2018-06-08 19:00 (-46d) |  | 27.07d → 44d | baseline start 2018-06-28 → 2018-06-28 12:06; baseline finish 2018-06-29 → 2018-06-29 12:06 |
| 228 | PU - Catalogo Camiones | 2018-07-24 → 2018-06-11 11:00 (-43d) | 2018-07-24 → 2018-06-11 13:00 (-43d) |  | 26.07d → 43d | baseline start 2018-07-02 → 2018-07-02 17:18; baseline finish 2018-07-03 → 2018-07-03 17:18 |
| 229 | PU - Catalogo Responsables de Incidencias | 2018-07-24 → 2018-06-11 17:00 (-43d) | 2018-07-25 → 2018-06-11 19:00 (-44d) |  | 25.07d → 43d | baseline start 2018-07-02 → 2018-07-02 09:06; baseline finish 2018-07-03 → 2018-07-03 09:06 |
| 230 | PU - Catalogo Tipos de Incidencias | 2018-07-25 → 2018-06-12 11:00 (-43d) | 2018-07-25 → 2018-06-12 13:00 (-43d) |  | 24.07d → 42d | baseline start 2018-07-04 → 2018-07-04 12:18; baseline finish 2018-07-05 → 2018-07-05 12:18 |
| 231 | PU - Catalogo Tipos de Viaje | 2018-07-25 → 2018-06-12 17:00 (-43d) | 2018-07-26 → 2018-06-12 19:00 (-44d) |  | 23.07d → 42d | baseline start 2018-07-04 → 2018-07-04 12:18; baseline finish 2018-07-05 → 2018-07-05 12:18 |
| 232 | PU - Catalogo Tipos de Carga/Descarga | 2018-07-26 → 2018-06-13 11:00 (-43d) | 2018-07-26 → 2018-06-13 13:00 (-43d) |  | 22.07d → 41d | baseline start 2018-07-06 → 2018-07-06 17:30; baseline finish 2018-07-09 → 2018-07-09 17:30 |
| 233 | PU - Catalogo Clientes de Entrega | 2018-07-26 → 2018-06-13 17:00 (-43d) | 2018-07-27 → 2018-06-13 19:00 (-44d) |  | 21.07d → 41d | baseline start 2018-07-06 → 2018-07-06 17:30; baseline finish 2018-07-09 → 2018-07-09 17:30 |
| 234 | PU - Catalogo Clientes Solicidates | 2018-07-27 → 2018-06-14 11:00 (-43d) | 2018-07-27 → 2018-06-14 13:00 (-43d) |  | 20.07d → 40d | baseline start 2018-07-06 → 2018-07-06 17:30; baseline finish 2018-07-09 → 2018-07-09 17:30 |
| 235 | **PU - Modulo Seguridad** | 2018-07-30 → 2018-06-15 10:00 (-45d) | 2018-08-01 → 2018-06-19 11:00 (-43d) | 4.25d? → 2d? | 14.57d → 37d | baseline start 2018-07-11 → 2018-07-11 18:42; baseline finish 2018-07-17 → 2018-07-17 15:54 |
| 236 | PU - Roles | 2018-07-30 → 2018-06-15 10:00 (-45d) | 2018-07-30 → 2018-06-15 12:00 (-45d) |  | 18.32d → 39d | baseline start 2018-07-11 → 2018-07-11 18:42; baseline finish 2018-07-12 → 2018-07-12 18:42 |
| 237 | PU - Configuracion | 2018-07-31 → 2018-06-18 09:00 (-43d) | 2018-07-31 → 2018-06-18 11:00 (-43d) |  | 16.57d → 38d | baseline start 2018-07-11 → 2018-07-11 18:42; baseline finish 2018-07-12 → 2018-07-12 18:42 |
| 238 | PU - Permisos | 2018-08-01 → 2018-06-19 09:00 (-43d) | 2018-08-01 → 2018-06-19 11:00 (-43d) |  | 14.57d → 37d | baseline start 2018-07-16 → 2018-07-16 15:54; baseline finish 2018-07-17 → 2018-07-17 15:54 |
| 239 | **PU - Modulo Solicitudes** | 2018-08-01 → 2018-06-19 18:00 (-43d) | 2018-08-07 → 2018-06-25 17:00 (-43d) | 7.75d? → 4d? | 5.57d → 33d | baseline start 2018-07-18 → 2018-07-18 11:14; baseline finish 2018-07-26 → 2018-07-26 15:54 |
| 240 | PU - Cliente - Solicitud de Transporte | 2018-08-01 → 2018-06-19 18:00 (-43d) | 2018-08-02 → 2018-06-20 11:00 (-43d) |  | 12.57d → 36d | baseline start 2018-07-18 → 2018-07-18 11:14; baseline finish 2018-07-19 → 2018-07-19 11:14 |
| 241 | PU - Trafico - Valoracion del Viaje | 2018-08-02 → 2018-06-20 17:00 (-43d) | 2018-08-03 → 2018-06-21 10:00 (-43d) |  | 10.82d → 35d | baseline start 2018-07-18 → 2018-07-18 11:14; baseline finish 2018-07-19 → 2018-07-19 11:14 |
| 242 | PU - Distribucion - Asugnacion de Unidad y Carga | 2018-08-03 → 2018-06-21 16:00 (-43d) | 2018-08-06 → 2018-06-21 19:00 (-46d) |  | 9.07d → 35d | baseline start 2018-07-20 → 2018-07-20 18:34; baseline finish 2018-07-23 → 2018-07-23 18:34 |
| 243 | PU - Operador CL - Operación y Descarga | 2018-08-06 → 2018-06-22 15:00 (-45d) | 2018-08-06 → 2018-06-22 18:00 (-45d) |  | 7.32d → 34d | baseline start 2018-07-20 → 2018-07-20 18:34; baseline finish 2018-07-23 → 2018-07-23 18:34 |
| 244 | PU - Distribucion - Cierre del Viaje y Facturacion | 2018-08-07 → 2018-06-25 12:00 (-43d) | 2018-08-07 → 2018-06-25 17:00 (-43d) |  | 5.57d → 33d | baseline start 2018-07-25 → 2018-07-25 15:54; baseline finish 2018-07-26 → 2018-07-26 15:54 |
| 245 | **PU - Modulo Alarmas/Reportes/Indicadores de gestión** | 2018-06-08 → 2018-06-11 09:00 (+3d) | 2018-06-13 → 2018-06-18 23:00 (+5d) |  | 70.32d → 31d | baseline start 2018-07-27 → 2018-07-27 15:54; baseline finish 2018-08-01 → 2018-08-01 15:54 |
| 246 | PU - Alarmas | 2018-06-08 → 2018-06-11 09:00 (+3d) | 2018-06-11 → 2018-06-12 23:00 (+1d) |  | 88.07d → 42d | baseline start 2018-07-27 → 2018-07-27 15:54; baseline finish 2018-07-30 → 2018-07-30 15:54 |
| 247 | PU - Reportes | 2018-06-11 → 2018-06-13 09:00 (+2d) | 2018-06-12 → 2018-06-14 23:00 (+2d) |  | 86.07d → 40d | baseline start 2018-07-27 → 2018-07-27 15:54; baseline finish 2018-07-30 → 2018-07-30 15:54 |
| 248 | PU - Indicadores de gestión | 2018-06-12 → 2018-06-15 09:00 (+3d) | 2018-06-13 → 2018-06-18 23:00 (+5d) |  | 66.32d → 27d | baseline start 2018-07-31 → 2018-07-31 15:54; baseline finish 2018-08-01 → 2018-08-01 15:54 |
| 249 | **TD - Termina Desarrollo** | 2018-06-13 → 2018-06-19 09:00 (+6d) | 2018-06-20 → 2018-06-25 17:00 (+5d) | 9.5d? → 4d? | 66.32d → 27d | baseline start 2018-08-01 → 2018-08-01 15:54; baseline finish 2018-08-09 → 2018-08-09 09:54 |
| 250 | **TD - Configuracion en Ambiente QA o TEST** | 2018-06-13 → 2018-06-19 09:00 (+6d) | 2018-06-20 → 2018-06-25 17:00 (+5d) | 9.5d? → 4d? | 66.32d → 27d | baseline start 2018-08-01 → 2018-08-01 15:54; baseline finish 2018-08-09 → 2018-08-09 09:54 |
| 251 | Configuracion de Java 7 u 8 | 2018-06-13 → 2018-06-19 09:00 (+6d) | 2018-06-14 → 2018-06-19 17:00 (+5d) |  | 66.32d → 27d | baseline start 2018-08-01 → 2018-08-01 15:54; baseline finish 2018-08-02 → 2018-08-02 15:54 |
| 252 | Configuracion de Mysql y complementos | 2018-06-14 → 2018-06-19 17:00 (+5d) | 2018-06-15 → 2018-06-20 13:00 (+5d) |  | 66.32d → 27d | baseline start 2018-08-02 → 2018-08-02 15:54; baseline finish 2018-08-03 → 2018-08-03 15:54 |
| 253 | Configuracion de Apache Tomcat | 2018-06-15 → 2018-06-20 15:00 (+5d) | 2018-06-15 → 2018-06-21 11:00 (+6d) |  | 66.32d → 27d | baseline start 2018-08-03 → 2018-08-03 15:54; baseline finish 2018-08-06 → 2018-08-06 15:54 |
| 254 | Configuracion AppWeb v1 | 2018-06-15 → 2018-06-21 11:00 (+6d) | 2018-06-20 → 2018-06-25 17:00 (+5d) |  | 66.32d → 27d | baseline start 2018-08-06 → 2018-08-06 15:54; baseline finish 2018-08-09 → 2018-08-09 09:54 |
| 255 | **PI - Pruebas Integrales** | 2018-06-20 → 2018-06-25 17:00 (+5d) | 2018-06-25 → 2018-06-29 23:00 (+4d) | 5.75d? → 5d? | 66.32d → 28d | baseline start 2018-08-09 → 2018-08-09 09:54; baseline finish 2018-08-20 → 2018-08-20 09:54 |
| 256 | **PI - Modulo Catalogos Maestros** | 2018-06-20 → 2018-06-25 17:00 (+5d) | 2018-06-20 → 2018-06-25 19:00 (+5d) | 0.5d? → 0d? | 66.32d → 28d | baseline start 2018-08-09 → 2018-08-09 09:54; baseline finish 2018-08-13 → 2018-08-13 09:54 |
| 257 | PI - Catalogo Rol | 2018-06-20 → 2018-06-25 17:00 (+5d) | 2018-06-20 → 2018-06-25 18:00 (+5d) |  | 74.32d → 33d | baseline start 2018-08-09 → 2018-08-09 09:54; baseline finish 2018-08-10 → 2018-08-10 09:54 |
| 258 | PI - Catalogo Actores | 2018-06-20 → 2018-06-25 17:00 (+5d) | 2018-06-20 → 2018-06-25 18:00 (+5d) |  | 74.32d → 33d | baseline start 2018-08-09 → 2018-08-09 09:54; baseline finish 2018-08-10 → 2018-08-10 09:54 |
| 259 | PI - Catalogo Actores-Roles | 2018-06-20 → 2018-06-25 17:00 (+5d) | 2018-06-20 → 2018-06-25 18:00 (+5d) |  | 74.32d → 33d | baseline start 2018-08-09 → 2018-08-09 09:54; baseline finish 2018-08-10 → 2018-08-10 09:54 |
| 260 | PI - Catalogo Contratos | 2018-06-20 → 2018-06-25 17:00 (+5d) | 2018-06-20 → 2018-06-25 18:00 (+5d) |  | 74.32d → 33d | baseline start 2018-08-09 → 2018-08-09 09:54; baseline finish 2018-08-10 → 2018-08-10 09:54 |
| 261 | PI - Catalogo Tipos de Tarifa | 2018-06-20 → 2018-06-25 17:00 (+5d) | 2018-06-20 → 2018-06-25 18:00 (+5d) |  | 74.32d → 33d | baseline start 2018-08-09 → 2018-08-09 09:54; baseline finish 2018-08-10 → 2018-08-10 09:54 |
| 262 | PI - Catalogo Tarifa | 2018-06-20 → 2018-06-25 17:00 (+5d) | 2018-06-20 → 2018-06-25 18:00 (+5d) |  | 74.32d → 33d | baseline start 2018-08-09 → 2018-08-09 09:54; baseline finish 2018-08-10 → 2018-08-10 09:54 |
| 263 | PI - Catalogo Conceptos de Tarifa | 2018-06-20 → 2018-06-25 17:00 (+5d) | 2018-06-20 → 2018-06-25 18:00 (+5d) |  | 74.32d → 33d | baseline start 2018-08-09 → 2018-08-09 09:54; baseline finish 2018-08-10 → 2018-08-10 09:54 |
| 264 | PI - Catalogo Choferes | 2018-06-20 → 2018-06-25 17:00 (+5d) | 2018-06-20 → 2018-06-25 18:00 (+5d) |  | 74.32d → 33d | baseline start 2018-08-09 → 2018-08-09 09:54; baseline finish 2018-08-10 → 2018-08-10 09:54 |
| 265 | PI - Catalogo Camiones | 2018-06-20 → 2018-06-25 17:00 (+5d) | 2018-06-20 → 2018-06-25 18:00 (+5d) |  | 74.32d → 33d | baseline start 2018-08-09 → 2018-08-09 09:54; baseline finish 2018-08-10 → 2018-08-10 09:54 |
| 266 | PI - Catalogo Responsables de Incidencias | 2018-06-20 → 2018-06-25 17:00 (+5d) | 2018-06-20 → 2018-06-25 18:00 (+5d) |  | 66.32d → 28d | baseline start 2018-08-09 → 2018-08-09 09:54; baseline finish 2018-08-10 → 2018-08-10 09:54 |
| 267 | PI - Catalogo Tipos de Incidencias | 2018-06-20 → 2018-06-25 18:00 (+5d) | 2018-06-20 → 2018-06-25 19:00 (+5d) |  | 74.07d → 33d | baseline start 2018-08-10 → 2018-08-10 09:54; baseline finish 2018-08-13 → 2018-08-13 09:54 |
| 268 | PI - Catalogo Tipos de Viaje | 2018-06-20 → 2018-06-25 18:00 (+5d) | 2018-06-20 → 2018-06-25 19:00 (+5d) |  | 74.07d → 33d | baseline start 2018-08-10 → 2018-08-10 09:54; baseline finish 2018-08-13 → 2018-08-13 09:54 |
| 269 | PI - Catalogo Tipos de Carga/Descarga | 2018-06-20 → 2018-06-25 18:00 (+5d) | 2018-06-20 → 2018-06-25 19:00 (+5d) |  | 74.07d → 33d | baseline start 2018-08-10 → 2018-08-10 09:54; baseline finish 2018-08-13 → 2018-08-13 09:54 |
| 270 | PI - Catalogo Clientes de Entrega | 2018-06-20 → 2018-06-25 18:00 (+5d) | 2018-06-20 → 2018-06-25 19:00 (+5d) |  | 74.07d → 33d | baseline start 2018-08-10 → 2018-08-10 09:54; baseline finish 2018-08-13 → 2018-08-13 09:54 |
| 271 | PI - Catalogo Clientes Solicidates | 2018-06-20 → 2018-06-25 18:00 (+5d) | 2018-06-20 → 2018-06-25 19:00 (+5d) |  | 66.32d → 28d | baseline start 2018-08-10 → 2018-08-10 09:54; baseline finish 2018-08-13 → 2018-08-13 09:54 |
| 272 | **PI - Modulo Seguridad** | 2018-06-20 → 2018-06-26 09:00 (+6d) | 2018-06-20 → 2018-06-26 10:00 (+6d) | 0.25d? → 0d? | 66.32d → 27d | baseline start 2018-08-13 → 2018-08-13 09:54; baseline finish 2018-08-14 → 2018-08-14 09:54 |
| 273 | PI - Roles | 2018-06-20 → 2018-06-26 09:00 (+6d) | 2018-06-20 → 2018-06-26 10:00 (+6d) |  | 73.82d → 32d | baseline start 2018-08-13 → 2018-08-13 09:54; baseline finish 2018-08-14 → 2018-08-14 09:54 |
| 274 | PI - Configuracion | 2018-06-20 → 2018-06-26 09:00 (+6d) | 2018-06-20 → 2018-06-26 10:00 (+6d) |  | 73.82d → 32d | baseline start 2018-08-13 → 2018-08-13 09:54; baseline finish 2018-08-14 → 2018-08-14 09:54 |
| 275 | PI - Permisos | 2018-06-20 → 2018-06-26 09:00 (+6d) | 2018-06-20 → 2018-06-26 10:00 (+6d) |  | 66.32d → 27d | baseline start 2018-08-13 → 2018-08-13 09:54; baseline finish 2018-08-14 → 2018-08-14 09:54 |
| 276 | **PI - Modulo Solicitudes** | 2018-06-20 → 2018-06-26 10:00 (+6d) | 2018-06-21 → 2018-06-26 16:00 (+5d) | 1d? → 0d? | 66.32d → 27d | baseline start 2018-08-14 → 2018-08-14 09:54; baseline finish 2018-08-16 → 2018-08-16 09:54 |
| 277 | PI - Cliente - Solicitud de Transporte | 2018-06-20 → 2018-06-26 10:00 (+6d) | 2018-06-20 → 2018-06-26 12:00 (+6d) |  | 73.32d → 32d | baseline start 2018-08-14 → 2018-08-14 09:54; baseline finish 2018-08-15 → 2018-08-15 09:54 |
| 278 | PI - Trafico - Valoracion del Viaje | 2018-06-20 → 2018-06-26 10:00 (+6d) | 2018-06-20 → 2018-06-26 12:00 (+6d) |  | 73.32d → 32d | baseline start 2018-08-14 → 2018-08-14 09:54; baseline finish 2018-08-15 → 2018-08-15 09:54 |
| 279 | PI - Distribucion - Asugnacion de Unidad y Carga | 2018-06-20 → 2018-06-26 10:00 (+6d) | 2018-06-20 → 2018-06-26 12:00 (+6d) |  | 66.32d → 27d | baseline start 2018-08-14 → 2018-08-14 09:54; baseline finish 2018-08-15 → 2018-08-15 09:54 |
| 280 | PI - Operador CL - Operación y Descarga | 2018-06-20 → 2018-06-26 12:00 (+6d) | 2018-06-21 → 2018-06-26 16:00 (+5d) |  | 72.82d → 32d | baseline start 2018-08-15 → 2018-08-15 09:54; baseline finish 2018-08-16 → 2018-08-16 09:54 |
| 281 | PI - Distribucion - Cierre del Viaje y Facturacion | 2018-06-20 → 2018-06-26 12:00 (+6d) | 2018-06-21 → 2018-06-26 16:00 (+5d) |  | 66.32d → 27d | baseline start 2018-08-15 → 2018-08-15 09:54; baseline finish 2018-08-16 → 2018-08-16 09:54 |

| ID | Task | Start | Finish | Duration | Total float | Other |
| --- | --- | --- | --- | --- | --- | --- |
| 282 | **PI - Modulo Alarmas/Reportes/Indicadores de gestión** | 2018-06-21 → 2018-06-26 16:00 (+5d) | 2018-06-25 → 2018-06-29 23:00 (+4d) |  | 66.32d → 27d | baseline start 2018-08-16 → 2018-08-16 09:54; baseline finish 2018-08-20 → 2018-08-20 09:54 |
| 283 | PI - Alarmas | 2018-06-21 → 2018-06-26 16:00 (+5d) | 2018-06-22 → 2018-06-27 23:00 (+5d) |  | 70.82d → 31d | baseline start 2018-08-16 → 2018-08-16 09:54; baseline finish 2018-08-17 → 2018-08-17 09:54 |
| 284 | PI - Reportes | 2018-06-21 → 2018-06-26 16:00 (+5d) | 2018-06-22 → 2018-06-27 23:00 (+5d) |  | 66.32d → 27d | baseline start 2018-08-16 → 2018-08-16 09:54; baseline finish 2018-08-17 → 2018-08-17 09:54 |
| 285 | PI - Indicadores de gestión | 2018-06-22 → 2018-06-28 09:00 (+6d) | 2018-06-25 → 2018-06-29 23:00 (+4d) |  | 66.32d → 27d | baseline start 2018-08-17 → 2018-08-17 09:54; baseline finish 2018-08-20 → 2018-08-20 09:54 |
| 286 | PI - Cierre Pruebas Integrales | 2018-06-25 → 2018-07-02 09:00 (+7d) | 2018-06-25 → 2018-07-02 11:00 (+7d) |  | 66.32d → 27d | baseline start 2018-08-20 → 2018-08-20 09:54; baseline finish 2018-08-21 → 2018-08-21 09:54 |
| 287 | **LB - Liberacion a Produccion** | 2018-06-25 → 2018-07-02 11:00 (+7d) | 2018-06-26 → 2018-07-03 11:00 (+7d) | 2d? → 1d? | 66.32d → 27d | baseline start 2018-08-21 → 2018-08-21 09:54; baseline finish 2018-08-22 → 2018-08-22 09:54 |
| 288 | LB - Liberacion y Cierre | 2018-06-25 → 2018-07-02 11:00 (+7d) | 2018-06-26 → 2018-07-03 11:00 (+7d) |  | 66.32d → 27d | baseline start 2018-08-21 → 2018-08-21 09:54; baseline finish 2018-08-22 → 2018-08-22 09:54 |
| 289 | Monitoreo y Control | 2018-06-04 A → 2018-06-04 09:00 A | 2018-06-04 A → 2018-06-04 19:00 A |  |  | baseline start 2018-05-24 → 2018-05-24 09:00; baseline finish 2018-05-24 → 2018-05-24 19:00 |

## Version 3 (data date 2018-05-29, saved 2018-05-30, file Plan_AN_AT_CC_29052018v4.xls.mpp)

Note of the change: planes

Last finish stays 2018-08-09.

Changed:

| ID | Task | Start | Finish | Duration | Total float | Predecessors | Other |
| --- | --- | --- | --- | --- | --- | --- | --- |
| 18 | **AN - Catalogo Tipos de Tarifa** | 2018-06-04 09:00 → 2018-06-07 12:42 (+3d) | 2018-06-04 16:00 → 2018-06-08 11:42 (+4d) | 0d? → 1d? | 48d → 44d |  |  |
| 19 | AN - Requerimientos de Negocio | 2018-06-04 09:00 → 2018-06-07 12:42 (+3d) | 2018-06-04 11:00 → 2018-06-07 16:42 (+3d) |  | 48d → 45d | 17 → 14, 17 |  |
| 20 | AN - Casos de Uso | 2018-06-04 09:00 → 2018-06-07 16:42 (+3d) | 2018-06-04 16:00 → 2018-06-08 11:42 (+4d) |  | 48d → 44d |  |  |
| 21 | **AN - Catalogo Tarifa** | 2018-06-04 09:00 → 2018-06-07 19:00 (+3d) | 2018-06-04 16:00 → 2018-06-12 21:00 (+8d) | 0d? → 3.5d? | 48d → none |  |  |
| 22 | AN - Requerimientos de Negocio | 2018-06-04 09:00 → 2018-06-08 09:00 (+4d) | 2018-06-04 11:00 → 2018-06-08 11:00 (+4d) |  | 48d → 44d |  | constraint none → start no earlier than 2018-06-07 19:00 |
| 23 | AN - Casos de Uso | 2018-06-04 09:00 → 2018-06-08 12:00 (+4d) | 2018-06-04 16:00 → 2018-06-08 23:00 (+4d) |  | 48d → 43d |  | constraint none → finish no earlier than 2018-06-08 23:00 |

## Version 4 (data date 2018-05-29, saved 2018-05-30, file Plan_AN_AT_CC_29052018v5.xls.mpp)

Note of the change: planes

Last finish stays 2018-08-09.

Changed:

| ID | Task | Start | Finish | Duration | Complete | Total float | Predecessors | Other |
| --- | --- | --- | --- | --- | --- | --- | --- | --- |
| 4 | **AN Analisis de Negocio** |  |  |  | 6% → 7% |  |  |  |
| 15 | **AN - Catalogo Contratos** |  | 2018-06-07 23:00 → 2018-06-07 19:00 | 2d? → 1d? |  | 44d → 45d |  |  |
| 17 | AN - Casos de Uso | 2018-06-07 12:00 → 2018-06-07 19:00 | 2018-06-07 23:00 → 2018-06-07 19:00 | 1.25d? → 0d? |  | 44d → 45d |  | constraint finish no earlier than 2018-06-07 23:00 → start no earlier than 2018-06-07 19:00 |
| 21 | **AN - Catalogo Tarifa** | 2018-06-07 19:00 → 2018-06-08 09:00 (+1d) | 2018-06-12 21:00 → 2018-06-08 23:00 (-4d) | 3.5d? → 1d? |  | none → 43d |  |  |
| 22 | AN - Requerimientos de Negocio |  |  |  |  |  | 20 → 17, 20 |  |

## Version 5 (data date 2018-05-29, saved 2018-05-30, file Plan_AN_AT_CC_v29052018.xls.mpp)

Note of the change: Merge pull request #1 from ProyectoInicial/master

Last finish 2018-08-09 → 2018-08-29 (+20d). Complete tasks 5 → 4.

Removed: 2 Inicio de Actividades

Changed:

| ID | Task | Start | Finish | Duration | Complete | Total float | Predecessors | Other |
| --- | --- | --- | --- | --- | --- | --- | --- | --- |
| 1 | **001-ITSC_TMS Plan de Analisis y Desarrollo** | 2018-06-01 19:00 A → 2018-06-04 (+3d) | 2018-08-09 23:00 → 2018-08-29 (+20d) | 50d? → 124d? |  | 0d → none |  | baseline start 2018-05-24 09:00 → 2018-05-24; baseline finish 2018-08-21 09:54 → 2018-08-21 |
| 2 | **AN_Analisis** | 2018-06-04 09:00 A → 2018-05-24 A (-11d) | 2018-08-09 23:00 → 2018-07-19 (-21d) | 49d? → 80.17d? | 2% → 1% | 0d → 59.82d |  | baseline start 2018-05-24 09:00 → 2018-05-24; baseline finish 2018-08-02 15:54 → 2018-08-02 |
| 3 | **AN Analisis de Negocio** | 2018-06-04 09:00 A → 2018-05-24 A (-11d) | 2018-07-20 11:00 → 2018-07-13 (-7d) | 34d? → 72.53d? | 7% → 3% | 14d → 67.47d |  | baseline start 2018-05-24 09:00 → 2018-05-24; baseline finish 2018-05-30 19:00 → 2018-05-30 |
| 4 | **AN - Modulo Catalogos Maestros** | 2018-06-04 09:00 A → 2018-05-24 A (-11d) | 2018-07-09 23:00 → 2018-07-06 (-3d) | 26d? → 62.55d? | 2% → 1% | 22d → 77.45d |  | baseline start 2018-05-24 09:00 → 2018-05-24; baseline finish 2018-07-05 17:30 → 2018-07-05 |
| 5 | **AN - Catalogo Rol** | 2018-06-04 09:00 → 2018-06-05 (+1d) | 2018-06-05 23:00 → 2018-06-07 (+2d) | 2d → 5.6d |  | 44d → 77.45d |  | baseline start 2018-06-15 12:30 → 2018-06-15; baseline finish 2018-06-19 17:42 → 2018-06-19 |
| 6 | AN - Requerimientos de Negocio | 2018-06-04 09:00 → 2018-06-05 (+1d) | 2018-06-04 11:00 → 2018-06-05 (+1d) | 0.5d → 1.6d |  | 45d → 77.45d | Inicio de Actividades → none | resources Fernando Nava → Fernando Nava [31.2%]; baseline start 2018-06-15 12:30 → 2018-06-15; baseline finish 2018-06-18 16:06 → 2018-06-18 |
| 7 | AN - Casos de Uso | 2018-06-05 12:00 → 2018-06-05 | 2018-06-05 23:00 → 2018-06-07 (+2d) | 1.25d → 4d |  | 44d → 77.45d |  | constraint finish no earlier than 2018-06-05 23:00 → none; resources Fernando Nava → Fernando Nava [31.2%]; baseline start 2018-06-18 16:06 → 2018-06-18; baseline finish 2018-06-19 17:42 → 2018-06-19 |
| 8 | **AN - Catalogo Actores** | 2018-06-04 09:00 → 2018-06-07 (+3d) | 2018-06-05 23:00 → 2018-06-08 (+3d) | 2d? → 1.75d? |  | 45d → 77.45d |  | baseline start 2018-06-15 12:30 → 2018-06-15; baseline finish 2018-06-18 10:30 → 2018-06-18 |
| 9 | AN - Requerimientos de Negocio | 2018-06-04 09:00 → 2018-06-07 (+3d) | 2018-06-04 11:00 → 2018-06-08 (+4d) |  |  | 47d → 77.45d | Inicio de Actividades, 7 → 7 | resources Omar Santiago → Fernando Nava; baseline start 2018-06-15 12:30 → 2018-06-15; baseline finish 2018-06-15 17:30 → 2018-06-15 |
| 10 | AN - Casos de Uso | 2018-06-05 12:00 → 2018-06-08 (+3d) | 2018-06-05 23:00 → 2018-06-08 (+3d) |  |  | 45d → 77.45d |  | constraint finish no earlier than 2018-06-05 23:00 → none; resources Omar Santiago → Fernando Nava; baseline start 2018-06-15 17:30 → 2018-06-15; baseline finish 2018-06-18 10:30 → 2018-06-18 |
| 11 | **AN - Catalogo Actores-Roles** | 2018-06-06 09:00 → 2018-06-08 (+2d) | 2018-06-07 12:42 → 2018-06-13 (+6d) | 1d? → 5.6d? |  | 44d → 77.45d |  | baseline start 2018-06-18 10:30 → 2018-06-18; baseline finish 2018-06-20 15:42 → 2018-06-20 |
| 12 | AN - Requerimientos de Negocio | 2018-06-06 09:00 → 2018-06-08 (+2d) | 2018-06-06 11:00 → 2018-06-11 (+5d) | 0.5d? → 1.6d? |  | 44d → 77.45d | 7, 10 → 10 | resources Fernando Nava → Fernando Nava [31.2%]; baseline start 2018-06-18 10:30 → 2018-06-18; baseline finish 2018-06-19 12:06 → 2018-06-19 |
| 13 | AN - Casos de Uso | 2018-06-06 11:00 → 2018-06-11 (+5d) | 2018-06-07 12:42 → 2018-06-13 (+6d) | 1.25d? → 4d? |  | 44d → 77.45d |  | resources Fernando Nava → Fernando Nava [31.2%]; baseline start 2018-06-19 12:06 → 2018-06-19; baseline finish 2018-06-20 15:42 → 2018-06-20 |
| 14 | **AN - Catalogo Contratos** | 2018-06-06 09:00 → 2018-06-13 (+7d) | 2018-06-07 19:00 → 2018-06-18 (+11d) | 1d? → 5.6d? |  | 45d → 77.45d |  | baseline start 2018-06-18 10:30 → 2018-06-18; baseline finish 2018-06-20 15:42 → 2018-06-20 |
| 15 | AN - Requerimientos de Negocio | 2018-06-06 09:00 → 2018-06-13 (+7d) | 2018-06-06 11:00 → 2018-06-14 (+8d) | 0.5d? → 1.6d? |  | 45d → 77.45d | 10, 13 → 13 | resources Omar Santiago → Fernando Nava [31.2%]; baseline start 2018-06-18 10:30 → 2018-06-18; baseline finish 2018-06-19 12:06 → 2018-06-19 |
| 16 | AN - Casos de Uso | 2018-06-07 19:00 → 2018-06-14 (+7d) | 2018-06-07 19:00 → 2018-06-18 (+11d) | 0d? → 4d? |  | 45d → 77.45d |  | constraint start no earlier than 2018-06-07 19:00 → none; resources Omar Santiago → Fernando Nava [31.2%]; baseline start 2018-06-19 12:06 → 2018-06-19; baseline finish 2018-06-20 15:42 → 2018-06-20 |
| 17 | **AN - Catalogo Tipos de Tarifa** | 2018-06-07 12:42 → 2018-06-18 (+11d) | 2018-06-08 11:42 → 2018-06-21 (+13d) | 1d? → 5.6d? |  | 44d → 77.45d |  | baseline start 2018-06-20 15:42 → 2018-06-20; baseline finish 2018-06-22 18:54 → 2018-06-22 |
| 18 | AN - Requerimientos de Negocio | 2018-06-07 12:42 → 2018-06-18 (+11d) | 2018-06-07 16:42 → 2018-06-19 (+12d) | 0.5d? → 1.6d? |  | 45d → 77.45d | 13, 16 → 16 | resources Fernando Nava → Fernando Nava [31.2%]; baseline start 2018-06-20 15:42 → 2018-06-20; baseline finish 2018-06-21 17:18 → 2018-06-21 |
| 19 | AN - Casos de Uso | 2018-06-07 16:42 → 2018-06-19 (+12d) | 2018-06-08 11:42 → 2018-06-21 (+13d) | 1.25d? → 4d? |  | 44d → 77.45d |  | resources Fernando Nava → Fernando Nava [31.2%]; baseline start 2018-06-21 17:18 → 2018-06-21; baseline finish 2018-06-22 18:54 → 2018-06-22 |
| 20 | **AN - Catalogo Tarifa** | 2018-06-08 09:00 → 2018-06-21 (+13d) | 2018-06-08 23:00 → 2018-06-25 (+17d) | 1d? → 5.6d? |  | 43d → 77.45d |  | baseline start 2018-06-20 15:42 → 2018-06-20; baseline finish 2018-06-22 18:54 → 2018-06-22 |
| 21 | AN - Requerimientos de Negocio | 2018-06-08 09:00 → 2018-06-21 (+13d) | 2018-06-08 11:00 → 2018-06-21 (+13d) | 0.5d? → 1.6d? |  | 44d → 77.45d | 16, 19 → 19 | constraint start no earlier than 2018-06-07 19:00 → none; resources Omar Santiago → Fernando Nava [31.2%]; baseline start 2018-06-20 15:42 → 2018-06-20; baseline finish 2018-06-21 17:18 → 2018-06-21 |
| 22 | AN - Casos de Uso | 2018-06-08 12:00 → 2018-06-21 (+13d) | 2018-06-08 23:00 → 2018-06-25 (+17d) | 1.25d? → 4d? |  | 43d → 77.45d |  | constraint finish no earlier than 2018-06-08 23:00 → none; resources Omar Santiago → Fernando Nava [31.2%]; baseline start 2018-06-21 17:18 → 2018-06-21; baseline finish 2018-06-22 18:54 → 2018-06-22 |
| 23 | **AN - Catalogo Conceptos de Tarifa** | 2018-06-04 09:00 → 2018-06-25 (+21d) | 2018-06-15 23:00 → 2018-06-28 (+13d) | 10d? → 5.6d? |  | 38d → 77.45d |  | baseline start 2018-06-22 18:54 → 2018-06-22; baseline finish 2018-06-27 12:06 → 2018-06-27 |
| 24 | AN - Requerimientos de Negocio | 2018-06-04 09:00 → 2018-06-25 (+21d) | 2018-06-04 11:00 → 2018-06-26 (+22d) | 0.5d? → 1.6d? |  | 48d → 77.45d |  | resources Fernando Nava → Fernando Nava [31.2%]; baseline start 2018-06-22 18:54 → 2018-06-22; baseline finish 2018-06-26 10:30 → 2018-06-26 |
| 25 | AN - Casos de Uso | 2018-06-15 12:00 → 2018-06-26 (+11d) | 2018-06-15 23:00 → 2018-06-28 (+13d) | 1.25d? → 4d? |  | 38d → 77.45d |  | constraint finish no earlier than 2018-06-15 23:00 → none; resources Fernando Nava → Fernando Nava [31.2%]; baseline start 2018-06-26 10:30 → 2018-06-26; baseline finish 2018-06-27 12:06 → 2018-06-27 |
| 26 | **AN - Catalogo Choferes** | 2018-06-18 09:00 → 2018-06-28 (+10d) | 2018-06-19 23:00 → 2018-07-03 (+14d) | 2d? → 5.6d? |  | 36d → 77.45d |  | baseline start 2018-06-22 18:54 → 2018-06-22; baseline finish 2018-06-27 12:06 → 2018-06-27 |
| 27 | AN - Requerimientos de Negocio | 2018-06-18 09:00 → 2018-06-28 (+10d) | 2018-06-18 11:00 → 2018-06-29 (+11d) | 0.5d? → 1.6d? |  | 38d → 77.45d |  | constraint start no earlier than 2018-06-15 19:00 → none; resources Omar Santiago → Fernando Nava [31.2%]; baseline start 2018-06-22 18:54 → 2018-06-22; baseline finish 2018-06-26 10:30 → 2018-06-26 |
| 28 | AN - Casos de Uso | 2018-06-19 12:00 → 2018-06-29 (+10d) | 2018-06-19 23:00 → 2018-07-03 (+14d) | 1.25d? → 4d? |  | 36d → 77.45d |  | constraint finish no earlier than 2018-06-19 23:00 → none; resources Omar Santiago → Fernando Nava [31.2%]; baseline start 2018-06-26 10:30 → 2018-06-26; baseline finish 2018-06-27 12:06 → 2018-06-27 |
| 29 | **AN - Catalogo Camiones** | 2018-06-20 09:00 → 2018-07-03 (+13d) | 2018-06-21 23:00 → 2018-07-06 (+15d) | 2d? → 5.6d? |  | 34d → 77.45d |  | baseline start 2018-06-27 12:06 → 2018-06-27; baseline finish 2018-06-29 17:18 → 2018-06-29 |
| 30 | AN - Requerimientos de Negocio | 2018-06-20 09:00 → 2018-07-03 (+13d) | 2018-06-20 11:00 → 2018-07-04 (+14d) | 0.5d? → 1.6d? |  | 36d → 77.45d |  | constraint start no earlier than 2018-06-19 19:00 → none; resources Fernando Nava → Fernando Nava [31.2%]; baseline start 2018-06-27 12:06 → 2018-06-27; baseline finish 2018-06-28 15:42 → 2018-06-28 |
| 31 | AN - Casos de Uso | 2018-06-21 12:00 → 2018-07-04 (+13d) | 2018-06-21 23:00 → 2018-07-06 (+15d) | 1.25d? → 4d? |  | 34d → 77.45d |  | constraint finish no earlier than 2018-06-21 23:00 → none; resources Fernando Nava → Fernando Nava [31.2%]; baseline start 2018-06-28 15:42 → 2018-06-28; baseline finish 2018-06-29 17:18 → 2018-06-29 |
| 32 | **AN - Catalogo Responsables de Incidencias** | 2018-06-21 19:00 A → 2018-05-24 A (-28d) | 2018-06-25 23:00 A → 2018-06-06 (-19d) | 3d? → 18.12d? | 100% → 32% | none → 2.65d |  | baseline start 2018-05-24 09:00 → 2018-05-24; baseline finish 2018-06-29 09:06 → 2018-06-29 |
| 33 | AN - Requerimientos de Negocio | 2018-06-21 19:00 A → 2018-05-24 A (-28d) | 2018-06-22 11:00 A → 2018-05-24 A (-29d) |  |  |  |  | resources Omar Santiago → Fernando Nava; baseline start 2018-05-24 09:00 → 2018-05-24; baseline finish 2018-06-28 10:36 → 2018-06-28 |
| 34 | AN - Casos de Uso | 2018-06-25 19:00 A → 2018-05-24 A (-32d) | 2018-06-25 23:00 A → 2018-06-06 (-19d) | 0d? → 2.62d? | 100% → 19% | none → 2.65d |  | constraint finish no earlier than 2018-06-25 23:00 → none; resources Omar Santiago → Fernando Nava; baseline start 2018-05-24 09:00 → 2018-05-24; baseline finish 2018-06-29 09:06 → 2018-06-29 |
| 35 | **AN - Catalogo Tipos de Incidencias** | 2018-06-26 09:00 → 2018-06-06 (-20d) | 2018-06-27 19:00 → 2018-06-08 (-19d) | 1d? → 5.6d? |  | 31d → 2.65d |  | baseline start 2018-06-29 09:06 → 2018-06-29; baseline finish 2018-07-03 12:18 → 2018-07-03 |
| 36 | AN - Requerimientos de Negocio | 2018-06-26 09:00 → 2018-06-06 (-20d) | 2018-06-26 11:00 → 2018-06-06 (-20d) | 0.5d? → 1.6d? |  | 32d → 2.65d |  | constraint start no earlier than 2018-06-25 19:00 → none; resources Fernando Nava → Fernando Nava [31.2%]; baseline start 2018-06-29 09:06 → 2018-06-29; baseline finish 2018-07-02 10:42 → 2018-07-02 |
| 37 | AN - Casos de Uso | 2018-06-27 09:00 → 2018-06-06 (-21d) | 2018-06-27 19:00 → 2018-06-08 (-19d) | 2d? → 4d? |  | 31d → 2.65d |  | constraint start no earlier than 2018-06-26 19:00 → none; resources Fernando Nava → Fernando Nava [31.2%]; baseline start 2018-07-02 10:42 → 2018-07-02; baseline finish 2018-07-03 12:18 → 2018-07-03 |
| 38 | **AN - Catalogo Tipos de Viaje** | 2018-06-28 09:00 → 2018-06-08 (-20d) | 2018-06-29 23:00 → 2018-06-13 (-16d) | 2d? → 5.6d? |  | 28d → 2.65d |  | baseline start 2018-06-29 09:06 → 2018-06-29; baseline finish 2018-07-03 12:18 → 2018-07-03 |
| 39 | AN - Requerimientos de Negocio | 2018-06-28 09:00 → 2018-06-08 (-20d) | 2018-06-28 11:00 → 2018-06-11 (-17d) | 0.5d? → 1.6d? |  | 30d → 2.65d |  | constraint start no earlier than 2018-06-27 19:00 → none; resources Omar Santiago → Fernando Nava [31.2%]; baseline start 2018-06-29 09:06 → 2018-06-29; baseline finish 2018-07-02 10:42 → 2018-07-02 |
| 40 | AN - Casos de Uso | 2018-06-29 12:00 → 2018-06-11 (-18d) | 2018-06-29 23:00 → 2018-06-13 (-16d) | 1.25d? → 4d? |  | 28d → 2.65d |  | constraint finish no earlier than 2018-06-29 23:00 → none; resources Omar Santiago → Fernando Nava [31.2%]; baseline start 2018-07-02 10:42 → 2018-07-02; baseline finish 2018-07-03 12:18 → 2018-07-03 |
| 41 | **AN - Catalogo Tipos de Carga/Descarga** | 2018-06-04 09:00 → 2018-06-13 (+9d) | 2018-07-03 23:00 → 2018-06-18 (-15d) | 22d? → 5.6d? |  | 26d → 2.65d |  | baseline start 2018-07-03 12:18 → 2018-07-03; baseline finish 2018-07-05 17:30 → 2018-07-05 |
| 42 | AN - Requerimientos de Negocio | 2018-06-04 09:00 → 2018-06-13 (+9d) | 2018-06-04 11:00 → 2018-06-14 (+10d) | 0.5d? → 1.6d? |  | 48d → 2.65d |  | resources Fernando Nava → Fernando Nava [31.2%]; baseline start 2018-07-03 12:18 → 2018-07-03; baseline finish 2018-07-04 15:54 → 2018-07-04 |
| 43 | AN - Casos de Uso | 2018-07-03 12:00 → 2018-06-14 (-19d) | 2018-07-03 23:00 → 2018-06-18 (-15d) | 1.25d? → 4d? |  | 26d → 2.65d |  | constraint finish no earlier than 2018-07-03 23:00 → none; resources Fernando Nava → Fernando Nava [31.2%]; baseline start 2018-07-04 15:54 → 2018-07-04; baseline finish 2018-07-05 17:30 → 2018-07-05 |
| 44 | **AN - Catalogo Clientes de Entrega** | 2018-06-04 09:00 → 2018-06-18 (+14d) | 2018-07-05 23:00 → 2018-06-21 (-14d) | 24d? → 5.6d? |  | 24d → 2.65d |  | baseline start 2018-07-03 12:18 → 2018-07-03; baseline finish 2018-07-05 17:30 → 2018-07-05 |
| 45 | AN - Requerimientos de Negocio | 2018-06-04 09:00 → 2018-06-18 (+14d) | 2018-06-04 11:00 → 2018-06-19 (+15d) | 0.5d? → 1.6d? |  | 48d → 2.65d |  | resources Omar Santiago → Fernando Nava [31.2%]; baseline start 2018-07-03 12:18 → 2018-07-03; baseline finish 2018-07-04 15:54 → 2018-07-04 |
| 46 | AN - Casos de Uso | 2018-07-05 12:00 → 2018-06-19 (-16d) | 2018-07-05 23:00 → 2018-06-21 (-14d) | 1.25d? → 4d? |  | 24d → 2.65d |  | constraint finish no earlier than 2018-07-05 23:00 → none; resources Omar Santiago → Fernando Nava [31.2%]; baseline start 2018-07-04 15:54 → 2018-07-04; baseline finish 2018-07-05 17:30 → 2018-07-05 |
| 47 | **AN - Catalogo Clientes Solicidates** | 2018-06-04 09:00 → 2018-06-21 (+17d) | 2018-07-09 23:00 → 2018-06-26 (-13d) | 26d? → 5.6d? |  | 22d → 2.65d |  | baseline start 2018-07-03 12:18 → 2018-07-03; baseline finish 2018-07-05 17:30 → 2018-07-05 |
| 48 | AN - Requerimientos de Negocio | 2018-06-04 09:00 → 2018-06-21 (+17d) | 2018-06-04 11:00 → 2018-06-22 (+18d) | 0.5d? → 1.6d? |  | 48d → 2.65d |  | resources Fernando Nava → Fernando Nava [31.2%]; baseline start 2018-07-03 12:18 → 2018-07-03; baseline finish 2018-07-04 15:54 → 2018-07-04 |
| 49 | AN - Casos de Uso | 2018-07-09 12:00 → 2018-06-22 (-17d) | 2018-07-09 23:00 → 2018-06-26 (-13d) | 1.25d? → 4d? |  | 22d → 2.65d |  | constraint finish no earlier than 2018-07-09 23:00 → none; resources Fernando Nava → Fernando Nava [31.2%]; baseline start 2018-07-04 15:54 → 2018-07-04; baseline finish 2018-07-05 17:30 → 2018-07-05 |
| 50 | **AN - Modulo Seguridad** | 2018-06-04 09:00 → 2018-06-26 (+22d) | 2018-07-17 23:00 → 2018-07-05 (-12d) | 32d? → 14.4d? |  | 16d → 2.65d |  | baseline start 2018-07-05 17:30 → 2018-07-05; baseline finish 2018-07-12 15:54 → 2018-07-12 |
| 51 | **AN - Roles** | 2018-06-04 09:00 → 2018-06-26 (+22d) | 2018-07-11 23:00 → 2018-06-28 (-13d) | 28d? → 4.8d? |  | 20d → 2.65d |  | baseline start 2018-07-05 17:30 → 2018-07-05; baseline finish 2018-07-10 10:42 → 2018-07-10 |
| 52 | AN - Requerimientos de Negocio | 2018-06-04 09:00 → 2018-06-26 (+22d) | 2018-06-04 12:00 → 2018-06-27 (+23d) | 0.75d? → 2.4d? |  | 48d → 2.65d |  | resources Omar Santiago → Fernando Nava [31.2%]; baseline start 2018-07-05 17:30 → 2018-07-05; baseline finish 2018-07-09 09:06 → 2018-07-09 |
| 53 | AN - Casos de Uso | 2018-07-11 16:00 → 2018-06-27 (-14d) | 2018-07-11 23:00 → 2018-06-28 (-13d) | 0.75d? → 2.4d? |  | 20d → 2.65d |  | constraint finish no earlier than 2018-07-11 23:00 → none; resources Omar Santiago → Fernando Nava [31.2%]; baseline start 2018-07-09 09:06 → 2018-07-09; baseline finish 2018-07-10 10:42 → 2018-07-10 |
| 54 | **AN - Configuracion** | 2018-06-04 09:00 → 2018-06-28 (+24d) | 2018-07-13 23:00 → 2018-07-02 (-11d) | 30d? → 4.8d? |  | 18d → 2.65d |  | baseline start 2018-07-05 17:30 → 2018-07-05; baseline finish 2018-07-10 10:42 → 2018-07-10 |
| 55 | AN - Requerimientos de Negocio | 2018-06-04 09:00 → 2018-06-28 (+24d) | 2018-06-04 12:00 → 2018-06-29 (+25d) | 0.75d? → 2.4d? |  | 48d → 2.65d |  | resources Fernando Nava → Fernando Nava [31.2%]; baseline start 2018-07-05 17:30 → 2018-07-05; baseline finish 2018-07-09 09:06 → 2018-07-09 |
| 56 | AN - Casos de Uso | 2018-07-13 16:00 → 2018-06-29 (-14d) | 2018-07-13 23:00 → 2018-07-02 (-11d) | 0.75d? → 2.4d? |  | 18d → 2.65d |  | constraint finish no earlier than 2018-07-13 23:00 → none; resources Fernando Nava → Fernando Nava [31.2%]; baseline start 2018-07-09 09:06 → 2018-07-09; baseline finish 2018-07-10 10:42 → 2018-07-10 |
| 57 | **AN - Permisos** | 2018-07-16 09:00 → 2018-07-02 (-14d) | 2018-07-17 23:00 → 2018-07-05 (-12d) | 2d? → 4.8d? |  | 14d → 2.65d |  | baseline start 2018-07-10 10:42 → 2018-07-10; baseline finish 2018-07-12 15:54 → 2018-07-12 |
| 58 | AN - Requerimientos de Negocio | 2018-07-16 09:00 → 2018-07-02 (-14d) | 2018-07-16 12:00 → 2018-07-04 (-12d) | 0.75d? → 2.4d? |  | 18d → 2.65d |  | constraint start no earlier than 2018-07-13 19:00 → none; resources Omar Santiago → Fernando Nava [31.2%]; baseline start 2018-07-10 10:42 → 2018-07-10; baseline finish 2018-07-11 12:18 → 2018-07-11 |
| 59 | AN - Casos de Uso | 2018-07-17 16:00 → 2018-07-04 (-13d) | 2018-07-17 23:00 → 2018-07-05 (-12d) | 0.75d? → 2.4d? |  | 13d → 2.65d |  | constraint finish no earlier than 2018-07-17 23:00 → none; resources Omar Santiago → Fernando Nava [31.2%]; baseline start 2018-07-11 12:18 → 2018-07-11; baseline finish 2018-07-12 15:54 → 2018-07-12 |
| 60 | **AN - Modulo Alarmas/Reportes/Indicadores de gestión** | 2018-07-18 09:00 → 2018-07-05 (-13d) | 2018-07-20 11:00 → 2018-07-13 (-7d) | 2d? → 12d? |  | 13d → 2.65d |  | baseline start 2018-07-24 15:54 → 2018-07-24; baseline finish 2018-07-30 15:54 → 2018-07-30 |
| 61 | **AN - Alarmas** | 2018-07-18 09:00 → 2018-07-05 (-13d) | 2018-07-18 17:00 → 2018-07-09 (-9d) | 0d? → 4d? |  | 13d → 2.65d |  | baseline start 2018-07-24 15:54 → 2018-07-24; baseline finish 2018-07-26 15:54 → 2018-07-26 |
| 62 | AN - Requerimientos de Negocio | 2018-07-18 09:00 → 2018-07-05 (-13d) | 2018-07-18 12:00 → 2018-07-06 (-12d) | 0.75d? → 2d? |  | 13d → 2.65d |  | resources Fernando Nava → Fernando Nava [37.5%]; baseline start 2018-07-24 15:54 → 2018-07-24; baseline finish 2018-07-25 15:54 → 2018-07-25 |
| 63 | AN - Casos de Uso | 2018-07-18 12:00 → 2018-07-06 (-12d) | 2018-07-18 17:00 → 2018-07-09 (-9d) | 0.75d? → 2d? |  | 13d → 2.65d |  | resources Fernando Nava → Fernando Nava [37.5%]; baseline start 2018-07-25 15:54 → 2018-07-25; baseline finish 2018-07-26 15:54 → 2018-07-26 |
| 64 | **AN - Reportes** | 2018-07-18 17:00 → 2018-07-09 (-9d) | 2018-07-19 13:00 → 2018-07-11 (-8d) | 1d? → 4d? |  | 13d → 2.65d |  | baseline start 2018-07-24 15:54 → 2018-07-24; baseline finish 2018-07-26 15:54 → 2018-07-26 |
| 65 | AN - Requerimientos de Negocio | 2018-07-18 17:00 → 2018-07-09 (-9d) | 2018-07-19 10:00 → 2018-07-10 (-9d) | 0.75d? → 2d? |  | 13d → 2.65d |  | resources Omar Santiago → Fernando Nava [37.5%]; baseline start 2018-07-24 15:54 → 2018-07-24; baseline finish 2018-07-25 15:54 → 2018-07-25 |
| 66 | AN - Casos de Uso | 2018-07-19 10:00 → 2018-07-10 (-9d) | 2018-07-19 13:00 → 2018-07-11 (-8d) | 0.75d? → 2d? |  | 13d → 2.65d |  | resources Omar Santiago → Fernando Nava [37.5%]; baseline start 2018-07-25 15:54 → 2018-07-25; baseline finish 2018-07-26 15:54 → 2018-07-26 |
| 67 | **AN - Indicadores de gestión** | 2018-07-19 15:00 → 2018-07-11 (-8d) | 2018-07-20 11:00 → 2018-07-13 (-7d) | 1d? → 4d? |  | 13d → 2.65d |  | baseline start 2018-07-26 15:54 → 2018-07-26; baseline finish 2018-07-30 15:54 → 2018-07-30 |
| 68 | AN - Requerimientos de Negocio | 2018-07-19 15:00 → 2018-07-11 (-8d) | 2018-07-19 18:00 → 2018-07-12 (-7d) | 0.75d? → 2d? |  | 13d → 2.65d |  | resources Fernando Nava → Fernando Nava [37.5%]; baseline start 2018-07-26 15:54 → 2018-07-26; baseline finish 2018-07-27 15:54 → 2018-07-27 |
| 69 | AN - Casos de Uso | 2018-07-19 18:00 → 2018-07-12 (-7d) | 2018-07-20 11:00 → 2018-07-13 (-7d) | 0.75d? → 2d? |  | 13d → 2.65d |  | resources Fernando Nava → Fernando Nava [37.5%]; baseline start 2018-07-27 15:54 → 2018-07-27; baseline finish 2018-07-30 15:54 → 2018-07-30 |
| 70 | AT - Revisión interna | 2018-07-18 19:00 A → 2018-05-28 A (-51d) | 2018-07-19 19:00 A → 2018-05-28 A (-52d) |  |  |  |  | resources ITSC → ITSC [12.5%]; baseline start 2018-05-28 09:00 → 2018-05-28; baseline finish 2018-05-28 19:00 → 2018-05-28 |

| ID | Task | Start | Finish | Duration | Total float | Predecessors | Other |
| --- | --- | --- | --- | --- | --- | --- | --- |
| 71 | AT - Ajustes de comentarios del usuario | 2018-06-04 09:00 → 2018-06-05 (+1d) | 2018-06-04 16:20 → 2018-06-05 (+1d) |  | 48d → 64.36d |  | resources ITSC; cliente → ITSC [12.5%]; cliente; baseline start 2018-05-29 09:00 → 2018-05-29; baseline finish 2018-05-29 19:00 → 2018-05-29 |
| 72 | AT - Peer Review y Vo Bo | 2018-06-04 09:00 → 2018-06-05 (+1d) | 2018-06-04 11:54 → 2018-06-06 (+2d) |  | 39d → 64.36d | none → 71 | baseline start 2018-05-30 09:00 → 2018-05-30; baseline finish 2018-05-30 19:00 → 2018-05-30 |
| 73 | **AT Analisis de Tecnico** | 2018-06-04 09:00 A → 2018-05-24 A (-11d) | 2018-08-09 23:00 → 2018-07-19 (-21d) | 49d? → 80.17d? | 0d → 59.82d |  | baseline start 2018-05-24 09:00 → 2018-05-24; baseline finish 2018-08-02 15:54 → 2018-08-02 |
| 74 | **IAT - Revisión de documentación entregada por Negocio** | 2018-06-04 11:54 → 2018-06-06 (+2d) | 2018-06-15 15:24 → 2018-06-19 (+4d) | 9d? → 18.88d? | 39d → 64.36d |  | baseline start 2018-05-31 09:00 → 2018-05-31; baseline finish 2018-06-13 12:30 → 2018-06-13 |
| 75 | AT - Requerimientos de Negocio | 2018-06-04 11:54 → 2018-06-06 (+2d) | 2018-06-05 09:54 → 2018-06-07 (+2d) | 1.5d → 2d | 39d → 64.36d |  | resources Omar Santiago/Fernando Nava → Omar Santiago/Fernando Nava [75%]; baseline start 2018-05-31 09:00 → 2018-05-31; baseline finish 2018-05-31 19:00 → 2018-05-31 |
| 76 | AT - Casos de Uso | 2018-06-05 09:54 → 2018-06-07 (+2d) | 2018-06-15 15:24 → 2018-06-19 (+4d) |  | 39d → 64.36d |  | baseline start 2018-06-01 09:00 → 2018-06-01; baseline finish 2018-06-13 12:30 → 2018-06-13 |
| 77 | **AT - Elaboracion de propuesta de Arquitectura de Solucion** | 2018-06-04 09:00 → 2018-06-19 (+15d) | 2018-08-09 23:00 → 2018-06-28 (-42d) | 49d? → 14d? | 0d → 64.36d |  | baseline start 2018-06-13 12:30 → 2018-06-13; baseline finish 2018-06-14 12:30 → 2018-06-14 |
| 78 | AT - Requerimientos tecnicos | 2018-08-06 09:00 → 2018-06-19 (-48d) | 2018-08-06 18:00 → 2018-06-20 (-47d) | 1.75d? → 2d? | 3d → 64.36d |  | constraint start no earlier than 2018-08-03 19:00 → none; resources Omar Santiago → Omar Santiago [87.5%]; baseline start 2018-06-13 12:30 → 2018-06-13; baseline finish 2018-06-14 12:30 → 2018-06-14 |
| 79 | AT - Analisis tecnico | 2018-08-07 10:00 → 2018-06-20 (-48d) | 2018-08-08 23:00 → 2018-06-21 (-48d) | 3.75d? → 2d? | 0d → 64.36d |  | constraint finish no earlier than 2018-08-08 23:00 → none; resources Omar Santiago → Omar Santiago [87.5%]; baseline start 2018-06-13 12:30 → 2018-06-13; baseline finish 2018-06-14 12:30 → 2018-06-14 |
| 80 | AT - Requerimientos de solucion | 2018-08-09 09:00 → 2018-06-21 (-49d) | 2018-08-09 23:00 → 2018-06-22 (-48d) |  | 0d → 64.36d |  | constraint finish no earlier than 2018-08-09 23:00 → none; resources Omar Santiago → Omar Santiago [87.5%]; baseline start 2018-06-13 12:30 → 2018-06-13; baseline finish 2018-06-14 12:30 → 2018-06-14 |
| 81 | AT - Escalabilidad | 2018-06-04 09:00 → 2018-06-22 (+18d) | 2018-06-04 18:00 → 2018-06-25 (+21d) | 1.75d? → 2d? | 48d → 64.36d |  | resources Omar Santiago → Omar Santiago [87.5%]; baseline start 2018-06-13 12:30 → 2018-06-13; baseline finish 2018-06-14 12:30 → 2018-06-14 |
| 82 | AT - Modelado BD | 2018-06-04 09:00 → 2018-06-25 (+21d) | 2018-06-04 18:00 → 2018-06-26 (+22d) | 1.75d? → 2d? | 48d → 64.36d |  | resources Omar Santiago → Omar Santiago [87.5%]; baseline start 2018-06-13 12:30 → 2018-06-13; baseline finish 2018-06-14 12:30 → 2018-06-14 |
| 83 | AT - Herramientas para solucion | 2018-06-04 09:00 → 2018-06-26 (+22d) | 2018-06-04 16:00 → 2018-06-27 (+23d) | 1.25d? → 2d? | 48d → 64.36d |  | resources Omar Santiago → Omar Santiago [62.5%]; baseline start 2018-06-13 12:30 → 2018-06-13; baseline finish 2018-06-14 12:30 → 2018-06-14 |
| 84 | AT - Aplicación responsiva para navegadores web | 2018-06-04 09:00 → 2018-06-27 (+23d) | 2018-06-04 16:00 → 2018-06-28 (+24d) | 1.25d? → 2d? | 48d → 64.36d |  | resources Omar Santiago → Omar Santiago [62.5%]; baseline start 2018-06-13 12:30 → 2018-06-13; baseline finish 2018-06-14 12:30 → 2018-06-14 |
| 85 | AT - Peer Review y Vo Bo Arquitectura de Solucion | 2018-06-04 09:00 → 2018-06-28 (+24d) | 2018-06-04 13:00 → 2018-07-02 (+28d) | 1d → 4d | 38d → 64.36d |  | resources Omar Santiago → Omar Santiago [25%]; baseline start 2018-06-14 12:30 → 2018-06-14; baseline finish 2018-06-15 12:30 → 2018-06-15 |
| 86 | **AT - Elaboración de documentos AT** | 2018-06-04 09:00 A → 2018-05-24 A (-11d) | 2018-07-13 15:42 → 2018-07-16 (+3d) | 29d? → 75.64d? | 19d → 64.36d |  | baseline start 2018-05-24 09:00 → 2018-05-24; baseline finish 2018-07-30 15:54 → 2018-07-30 |
| 87 | **AT - Modulo Catalogos Maestros** | 2018-06-04 09:00 A → 2018-05-24 A (-11d) | 2018-06-18 17:48 → 2018-07-16 (+28d) | 10d? → 75.64d? | 38d → 64.36d |  | baseline start 2018-05-24 09:00 → 2018-05-24; baseline finish 2018-07-05 17:30 → 2018-07-05 |
| 88 | **AT - Catalogo Rol** | 2018-06-04 15:00 → 2018-07-02 (+28d) | 2018-06-06 18:12 → 2018-07-04 (+28d) | 2d → 4.8d | 46d → 80.26d |  | baseline start 2018-06-15 12:30 → 2018-06-15; baseline finish 2018-06-19 17:42 → 2018-06-19 |
| 89 | AT - Elaboración Bocetos de Archivos | 2018-06-04 15:00 → 2018-07-02 (+28d) | 2018-06-05 11:24 → 2018-07-03 (+28d) |  | 46d → 80.26d |  | baseline start 2018-06-15 12:30 → 2018-06-15; baseline finish 2018-06-18 16:06 → 2018-06-18 |
| 90 | AT - Elaboración Bocetos de Pantallas | 2018-06-05 11:24 → 2018-07-03 (+28d) | 2018-06-06 18:12 → 2018-07-04 (+28d) |  | 46d → 80.26d |  | baseline start 2018-06-18 16:06 → 2018-06-18; baseline finish 2018-06-19 17:42 → 2018-06-19 |
| 91 | **AT - Catalogo Actores** | 2018-06-04 15:00 → 2018-07-02 (+28d) | 2018-06-05 11:00 → 2018-07-03 (+28d) | 1d? → 1.5d? | 38d → 64.36d |  | baseline start 2018-06-15 12:30 → 2018-06-15; baseline finish 2018-06-18 10:30 → 2018-06-18 |
| 92 | AT - Elaboración Bocetos de Archivos | 2018-06-04 15:00 → 2018-07-02 (+28d) | 2018-06-04 17:00 → 2018-07-02 (+28d) |  | 38d → 64.36d |  | baseline start 2018-06-15 12:30 → 2018-06-15; baseline finish 2018-06-15 17:30 → 2018-06-15 |
| 93 | AT - Elaboración Bocetos de Pantallas | 2018-06-04 17:00 → 2018-07-02 (+28d) | 2018-06-05 11:00 → 2018-07-03 (+28d) |  | 38d → 64.36d |  | baseline start 2018-06-15 17:30 → 2018-06-15; baseline finish 2018-06-18 10:30 → 2018-06-18 |
| 94 | **AT - Catalogo Actores-Roles** | 2018-06-05 11:00 → 2018-07-03 (+28d) | 2018-06-07 16:12 → 2018-07-05 (+28d) | 2d? → 4.8d? | 45d → 78.76d |  | baseline start 2018-06-18 10:30 → 2018-06-18; baseline finish 2018-06-20 15:42 → 2018-06-20 |
| 95 | AT - Elaboración Bocetos de Archivos | 2018-06-05 11:00 → 2018-07-03 (+28d) | 2018-06-06 09:24 → 2018-07-04 (+28d) |  | 45d → 78.76d |  | baseline start 2018-06-18 10:30 → 2018-06-18; baseline finish 2018-06-19 12:06 → 2018-06-19 |
| 96 | AT - Elaboración Bocetos de Pantallas | 2018-06-06 09:24 → 2018-07-04 (+28d) | 2018-06-07 16:12 → 2018-07-05 (+28d) |  | 45d → 78.76d |  | baseline start 2018-06-19 12:06 → 2018-06-19; baseline finish 2018-06-20 15:42 → 2018-06-20 |
| 97 | **AT - Catalogo Contratos** | 2018-06-05 11:00 → 2018-07-03 (+28d) | 2018-06-07 16:12 → 2018-07-05 (+28d) | 2d? → 4.8d? | 38d → 64.36d |  | baseline start 2018-06-18 10:30 → 2018-06-18; baseline finish 2018-06-20 15:42 → 2018-06-20 |
| 98 | AT - Elaboración Bocetos de Archivos | 2018-06-05 11:00 → 2018-07-03 (+28d) | 2018-06-06 09:24 → 2018-07-04 (+28d) |  | 38d → 64.36d |  | baseline start 2018-06-18 10:30 → 2018-06-18; baseline finish 2018-06-19 12:06 → 2018-06-19 |
| 99 | AT - Elaboración Bocetos de Pantallas | 2018-06-06 09:24 → 2018-07-04 (+28d) | 2018-06-07 16:12 → 2018-07-05 (+28d) |  | 38d → 64.36d |  | baseline start 2018-06-19 12:06 → 2018-06-19; baseline finish 2018-06-20 15:42 → 2018-06-20 |
| 100 | **AT - Catalogo Tipos de Tarifa** | 2018-06-07 16:12 → 2018-07-05 (+28d) | 2018-06-12 09:24 → 2018-07-10 (+28d) | 3d? → 4.8d? | 42d → 73.96d |  | baseline start 2018-06-20 15:42 → 2018-06-20; baseline finish 2018-06-22 18:54 → 2018-06-22 |
| 101 | AT - Elaboración Bocetos de Archivos | 2018-06-07 16:12 → 2018-07-05 (+28d) | 2018-06-08 12:36 → 2018-07-06 (+28d) |  | 43d → 73.96d |  | baseline start 2018-06-20 15:42 → 2018-06-20; baseline finish 2018-06-21 17:18 → 2018-06-21 |
| 102 | AT - Elaboración Bocetos de Pantallas | 2018-06-08 12:36 → 2018-07-06 (+28d) | 2018-06-12 09:24 → 2018-07-10 (+28d) |  | 42d → 73.96d |  | baseline start 2018-06-21 17:18 → 2018-06-21; baseline finish 2018-06-22 18:54 → 2018-06-22 |
| 103 | **AT - Catalogo Tarifa** | 2018-06-07 16:12 → 2018-07-05 (+28d) | 2018-06-12 09:24 → 2018-07-10 (+28d) | 3d? → 4.8d? | 38d → 64.36d |  | baseline start 2018-06-20 15:42 → 2018-06-20; baseline finish 2018-06-22 18:54 → 2018-06-22 |
| 104 | AT - Elaboración Bocetos de Archivos | 2018-06-07 16:12 → 2018-07-05 (+28d) | 2018-06-08 12:36 → 2018-07-06 (+28d) |  | 38d → 64.36d |  | baseline start 2018-06-20 15:42 → 2018-06-20; baseline finish 2018-06-21 17:18 → 2018-06-21 |
| 105 | AT - Elaboración Bocetos de Pantallas | 2018-06-08 12:36 → 2018-07-06 (+28d) | 2018-06-12 09:24 → 2018-07-10 (+28d) |  | 38d → 64.36d |  | baseline start 2018-06-21 17:18 → 2018-06-21; baseline finish 2018-06-22 18:54 → 2018-06-22 |
| 106 | **AT - Catalogo Conceptos de Tarifa** | 2018-06-12 09:24 → 2018-07-10 (+28d) | 2018-06-14 12:36 → 2018-07-12 (+28d) | 2d? → 4.8d? | 38d → 64.36d |  | baseline start 2018-06-22 18:54 → 2018-06-22; baseline finish 2018-06-27 12:06 → 2018-06-27 |
| 107 | AT - Elaboración Bocetos de Archivos | 2018-06-12 09:24 → 2018-07-10 (+28d) | 2018-06-12 17:48 → 2018-07-10 (+28d) |  | 38d → 64.36d |  | baseline start 2018-06-22 18:54 → 2018-06-22; baseline finish 2018-06-26 10:30 → 2018-06-26 |
| 108 | AT - Elaboración Bocetos de Pantallas | 2018-06-12 17:48 → 2018-07-10 (+28d) | 2018-06-14 12:36 → 2018-07-12 (+28d) |  | 40d → 69.16d |  | baseline start 2018-06-26 10:30 → 2018-06-26; baseline finish 2018-06-27 12:06 → 2018-06-27 |
| 109 | **AT - Catalogo Choferes** | 2018-06-12 09:24 → 2018-07-10 (+28d) | 2018-06-14 12:36 → 2018-07-12 (+28d) | 2d? → 4.8d? | 39d → 65.96d |  | baseline start 2018-06-22 18:54 → 2018-06-22; baseline finish 2018-06-27 12:06 → 2018-06-27 |
| 110 | AT - Elaboración Bocetos de Archivos | 2018-06-12 09:24 → 2018-07-10 (+28d) | 2018-06-12 17:48 → 2018-07-10 (+28d) |  | 42d → 72.36d |  | baseline start 2018-06-22 18:54 → 2018-06-22; baseline finish 2018-06-26 10:30 → 2018-06-26 |
| 111 | AT - Elaboración Bocetos de Pantallas | 2018-06-12 17:48 → 2018-07-10 (+28d) | 2018-06-14 12:36 → 2018-07-12 (+28d) |  | 38d → 64.36d |  | baseline start 2018-06-26 10:30 → 2018-06-26; baseline finish 2018-06-27 12:06 → 2018-06-27 |
| 112 | **AT - Catalogo Camiones** | 2018-06-14 12:36 → 2018-07-12 (+28d) | 2018-06-18 17:48 → 2018-07-16 (+28d) | 2d? → 4.8d? | 38d → 64.36d |  | baseline start 2018-06-27 12:06 → 2018-06-27; baseline finish 2018-06-29 17:18 → 2018-06-29 |
| 113 | AT - Elaboración Bocetos de Archivos | 2018-06-14 12:36 → 2018-07-12 (+28d) | 2018-06-15 11:00 → 2018-07-13 (+28d) |  | 38d → 64.36d |  | baseline start 2018-06-27 12:06 → 2018-06-27; baseline finish 2018-06-28 15:42 → 2018-06-28 |
| 114 | AT - Elaboración Bocetos de Pantallas | 2018-06-15 11:00 → 2018-07-13 (+28d) | 2018-06-18 17:48 → 2018-07-16 (+28d) |  | 38d → 64.36d |  | baseline start 2018-06-28 15:42 → 2018-06-28; baseline finish 2018-06-29 17:18 → 2018-06-29 |
| 115 | **AT - Catalogo Responsables de Incidencias** | 2018-06-04 09:00 A → 2018-05-24 A (-11d) | 2018-06-05 10:30 → 2018-06-05 | 1d? → 17.88d? | 18d → 0.5d |  | baseline start 2018-05-24 09:00 → 2018-05-24; baseline finish 2018-06-29 09:06 → 2018-06-29 |
| 116 | AT - Elaboración Bocetos de Archivos | 2018-06-04 09:00 A → 2018-05-24 A (-11d) | 2018-06-04 11:00 A → 2018-05-24 A (-11d) |  |  |  | baseline start 2018-05-24 09:00 → 2018-05-24; baseline finish 2018-06-28 10:36 → 2018-06-28 |
| 117 | AT - Elaboración Bocetos de Pantallas | 2018-06-04 09:00 A → 2018-05-24 A (-11d) | 2018-06-05 10:30 → 2018-06-05 |  | 18d → 0.5d |  | baseline start 2018-05-24 09:00 → 2018-05-24; baseline finish 2018-06-29 09:06 → 2018-06-29 |
| 118 | **AT - Catalogo Tipos de Incidencias** | 2018-06-05 10:30 → 2018-06-05 | 2018-06-07 15:42 → 2018-06-08 (+1d) | 2d? → 4.8d? | 45d → 117.32d |  | baseline start 2018-06-29 09:06 → 2018-06-29; baseline finish 2018-07-03 12:18 → 2018-07-03 |
| 119 | AT - Elaboración Bocetos de Archivos | 2018-06-05 10:30 → 2018-06-05 | 2018-06-05 18:54 → 2018-06-06 (+1d) |  | 45d → 117.32d |  | baseline start 2018-06-29 09:06 → 2018-06-29; baseline finish 2018-07-02 10:42 → 2018-07-02 |
| 120 | AT - Elaboración Bocetos de Pantallas | 2018-06-05 18:54 → 2018-06-06 (+1d) | 2018-06-07 15:42 → 2018-06-08 (+1d) |  | 45d → 117.32d |  | baseline start 2018-07-02 10:42 → 2018-07-02; baseline finish 2018-07-03 12:18 → 2018-07-03 |
| 121 | **AT - Catalogo Tipos de Viaje** | 2018-06-05 10:30 → 2018-06-05 | 2018-06-07 15:42 → 2018-06-08 (+1d) | 2d? → 4.8d? | 18d → 0.5d |  | baseline start 2018-06-29 09:06 → 2018-06-29; baseline finish 2018-07-03 12:18 → 2018-07-03 |
| 122 | AT - Elaboración Bocetos de Archivos | 2018-06-05 10:30 → 2018-06-05 | 2018-06-05 18:54 → 2018-06-06 (+1d) |  | 18d → 0.5d |  | baseline start 2018-06-29 09:06 → 2018-06-29; baseline finish 2018-07-02 10:42 → 2018-07-02 |
| 123 | AT - Elaboración Bocetos de Pantallas | 2018-06-05 18:54 → 2018-06-06 (+1d) | 2018-06-07 15:42 → 2018-06-08 (+1d) |  | 18d → 0.5d |  | baseline start 2018-07-02 10:42 → 2018-07-02; baseline finish 2018-07-03 12:18 → 2018-07-03 |
| 124 | **AT - Catalogo Tipos de Carga/Descarga** | 2018-06-07 15:42 → 2018-06-08 (+1d) | 2018-06-11 18:54 → 2018-06-12 (+1d) | 2d? → 4.8d? | 43d → 112.52d |  | baseline start 2018-07-03 12:18 → 2018-07-03; baseline finish 2018-07-05 17:30 → 2018-07-05 |
| 125 | AT - Elaboración Bocetos de Archivos | 2018-06-07 15:42 → 2018-06-08 (+1d) | 2018-06-08 12:06 → 2018-06-11 (+3d) |  | 43d → 112.52d |  | baseline start 2018-07-03 12:18 → 2018-07-03; baseline finish 2018-07-04 15:54 → 2018-07-04 |
| 126 | AT - Elaboración Bocetos de Pantallas | 2018-06-08 12:06 → 2018-06-11 (+3d) | 2018-06-11 18:54 → 2018-06-12 (+1d) |  | 43d → 112.52d |  | baseline start 2018-07-04 15:54 → 2018-07-04; baseline finish 2018-07-05 17:30 → 2018-07-05 |
| 127 | **AT - Catalogo Clientes de Entrega** | 2018-06-07 15:42 → 2018-06-08 (+1d) | 2018-06-11 18:54 → 2018-06-12 (+1d) | 2d? → 4.8d? | 43d → 112.52d |  | baseline start 2018-07-03 12:18 → 2018-07-03; baseline finish 2018-07-05 17:30 → 2018-07-05 |
| 128 | AT - Elaboración Bocetos de Archivos | 2018-06-07 15:42 → 2018-06-08 (+1d) | 2018-06-08 12:06 → 2018-06-11 (+3d) |  | 43d → 112.52d |  | baseline start 2018-07-03 12:18 → 2018-07-03; baseline finish 2018-07-04 15:54 → 2018-07-04 |
| 129 | AT - Elaboración Bocetos de Pantallas | 2018-06-08 12:06 → 2018-06-11 (+3d) | 2018-06-11 18:54 → 2018-06-12 (+1d) |  | 43d → 112.52d |  | baseline start 2018-07-04 15:54 → 2018-07-04; baseline finish 2018-07-05 17:30 → 2018-07-05 |
| 130 | **AT - Catalogo Clientes Solicidates** | 2018-06-07 15:42 → 2018-06-08 (+1d) | 2018-06-11 18:54 → 2018-06-12 (+1d) | 2d? → 4.8d? | 18d → 0.5d |  | baseline start 2018-07-03 12:18 → 2018-07-03; baseline finish 2018-07-05 17:30 → 2018-07-05 |
| 131 | AT - Elaboración Bocetos de Archivos | 2018-06-07 15:42 → 2018-06-08 (+1d) | 2018-06-08 12:06 → 2018-06-11 (+3d) |  | 18d → 0.5d |  | baseline start 2018-07-03 12:18 → 2018-07-03; baseline finish 2018-07-04 15:54 → 2018-07-04 |
| 132 | AT - Elaboración Bocetos de Pantallas | 2018-06-08 12:06 → 2018-06-11 (+3d) | 2018-06-11 18:54 → 2018-06-12 (+1d) |  | 18d → 0.5d |  | baseline start 2018-07-04 15:54 → 2018-07-04; baseline finish 2018-07-05 17:30 → 2018-07-05 |
| 133 | **AT - Modulo Seguridad** | 2018-06-11 18:54 → 2018-06-12 (+1d) | 2018-06-19 15:42 → 2018-06-20 (+1d) | 6d? → 11.2d? | 18d → 0.5d |  | baseline start 2018-07-05 17:30 → 2018-07-05; baseline finish 2018-07-12 15:54 → 2018-07-12 |
| 134 | **AT - Roles** | 2018-06-11 18:54 → 2018-06-12 (+1d) | 2018-06-15 10:30 → 2018-06-15 | 4d? → 6.4d? | 39d → 106.12d |  | baseline start 2018-07-05 17:30 → 2018-07-05; baseline finish 2018-07-10 10:42 → 2018-07-10 |
| 135 | AT - Elaboración Bocetos de Archivos | 2018-06-11 18:54 → 2018-06-12 (+1d) | 2018-06-13 10:30 → 2018-06-13 |  | 39d → 106.12d |  | baseline start 2018-07-05 17:30 → 2018-07-05; baseline finish 2018-07-09 09:06 → 2018-07-09 |
| 136 | AT - Elaboración Bocetos de Pantallas | 2018-06-13 10:30 → 2018-06-13 | 2018-06-15 10:30 → 2018-06-15 |  | 39d → 106.12d |  | baseline start 2018-07-09 09:06 → 2018-07-09; baseline finish 2018-07-10 10:42 → 2018-07-10 |
| 137 | **AT - Configuracion** | 2018-06-11 18:54 → 2018-06-12 (+1d) | 2018-06-15 10:30 → 2018-06-15 | 4d? → 6.4d? | 18d → 0.5d |  | baseline start 2018-07-05 17:30 → 2018-07-05; baseline finish 2018-07-10 10:42 → 2018-07-10 |
| 138 | AT - Elaboración Bocetos de Archivos | 2018-06-11 18:54 → 2018-06-12 (+1d) | 2018-06-13 10:30 → 2018-06-13 |  | 18d → 0.5d |  | baseline start 2018-07-05 17:30 → 2018-07-05; baseline finish 2018-07-09 09:06 → 2018-07-09 |
| 139 | AT - Elaboración Bocetos de Pantallas | 2018-06-13 10:30 → 2018-06-13 | 2018-06-15 10:30 → 2018-06-15 |  | 18d → 0.5d |  | baseline start 2018-07-09 09:06 → 2018-07-09; baseline finish 2018-07-10 10:42 → 2018-07-10 |
| 140 | **AT - Permisos** | 2018-06-15 10:30 → 2018-06-15 | 2018-06-19 15:42 → 2018-06-20 (+1d) | 2d? → 4.8d? | 18d → 0.5d |  | baseline start 2018-07-10 10:42 → 2018-07-10; baseline finish 2018-07-12 15:54 → 2018-07-12 |

| ID | Task | Start | Finish | Duration | Total float | Predecessors | Other |
| --- | --- | --- | --- | --- | --- | --- | --- |
| 141 | AT - Elaboración Bocetos de Archivos | 2018-06-15 10:30 → 2018-06-15 | 2018-06-18 12:06 → 2018-06-19 (+1d) |  | 18d → 0.5d |  | baseline start 2018-07-10 10:42 → 2018-07-10; baseline finish 2018-07-11 12:18 → 2018-07-11 |
| 142 | AT - Elaboración Bocetos de Pantallas | 2018-06-18 12:06 → 2018-06-19 (+1d) | 2018-06-19 15:42 → 2018-06-20 (+1d) |  | 18d → 0.5d |  | baseline start 2018-07-11 12:18 → 2018-07-11; baseline finish 2018-07-12 15:54 → 2018-07-12 |
| 143 | **AT - Modulo Solicitudes** | 2018-06-19 15:42 → 2018-06-20 (+1d) | 2018-07-06 18:22 → 2018-07-09 (+3d) | 13d? → 26.67d? | 18d → 0.5d |  | baseline start 2018-07-12 15:54 → 2018-07-12; baseline finish 2018-07-24 15:54 → 2018-07-24 |
| 144 | **AT - Cliente - Solicitud de Transporte** | 2018-06-19 15:42 → 2018-06-20 (+1d) | 2018-06-22 11:02 → 2018-06-25 (+3d) | 3d? → 5.33d? | 18d → 0.5d |  | baseline start 2018-07-12 15:54 → 2018-07-12; baseline finish 2018-07-17 11:14 → 2018-07-17 |
| 145 | AT - Elaboración Bocetos de Archivos | 2018-06-19 15:42 → 2018-06-20 (+1d) | 2018-06-20 15:42 → 2018-06-21 (+1d) |  | 18d → 0.5d |  | baseline start 2018-07-12 15:54 → 2018-07-12; baseline finish 2018-07-13 18:34 → 2018-07-13 |
| 146 | AT - Elaboración Bocetos de Pantallas | 2018-06-20 15:42 → 2018-06-21 (+1d) | 2018-06-22 11:02 → 2018-06-25 (+3d) |  | 18d → 0.5d |  | baseline start 2018-07-13 18:34 → 2018-07-13; baseline finish 2018-07-17 11:14 → 2018-07-17 |
| 147 | **AT - Trafico - Valoracion del Viaje** | 2018-06-22 11:02 → 2018-06-25 (+3d) | 2018-06-26 18:22 → 2018-06-27 (+1d) | 2d? → 5.33d? | 18d → 0.5d |  | baseline start 2018-07-12 15:54 → 2018-07-12; baseline finish 2018-07-17 11:14 → 2018-07-17 |
| 148 | AT - Elaboración Bocetos de Archivos | 2018-06-22 11:02 → 2018-06-25 (+3d) | 2018-06-25 11:02 → 2018-06-26 (+1d) |  | 18d → 0.5d |  | baseline start 2018-07-12 15:54 → 2018-07-12; baseline finish 2018-07-13 18:34 → 2018-07-13 |
| 149 | AT - Elaboración Bocetos de Pantallas | 2018-06-25 11:02 → 2018-06-26 (+1d) | 2018-06-26 18:22 → 2018-06-27 (+1d) |  | 18d → 0.5d |  | baseline start 2018-07-13 18:34 → 2018-07-13; baseline finish 2018-07-17 11:14 → 2018-07-17 |
| 150 | **AT - Distribucion - Asugnacion de Unidad y Carga** | 2018-06-26 18:22 → 2018-06-27 (+1d) | 2018-06-29 15:42 → 2018-07-02 (+3d) | 3d? → 5.33d? | 18d → 0.5d |  | baseline start 2018-07-17 11:14 → 2018-07-17; baseline finish 2018-07-19 18:34 → 2018-07-19 |
| 151 | AT - Elaboración Bocetos de Archivos | 2018-06-26 18:22 → 2018-06-27 (+1d) | 2018-06-27 18:22 → 2018-06-28 (+1d) |  | 18d → 0.5d |  | baseline start 2018-07-17 11:14 → 2018-07-17; baseline finish 2018-07-18 15:54 → 2018-07-18 |
| 152 | AT - Elaboración Bocetos de Pantallas | 2018-06-27 18:22 → 2018-06-28 (+1d) | 2018-06-29 15:42 → 2018-07-02 (+3d) |  | 18d → 0.5d |  | baseline start 2018-07-18 15:54 → 2018-07-18; baseline finish 2018-07-19 18:34 → 2018-07-19 |
| 153 | **AT - Operador CL - Operación y Descarga** | 2018-06-29 15:42 → 2018-07-02 (+3d) | 2018-07-04 11:02 → 2018-07-05 (+1d) | 3d? → 5.33d? | 18d → 0.5d |  | baseline start 2018-07-17 11:14 → 2018-07-17; baseline finish 2018-07-19 18:34 → 2018-07-19 |
| 154 | AT - Elaboración Bocetos de Archivos | 2018-06-29 15:42 → 2018-07-02 (+3d) | 2018-07-02 15:42 → 2018-07-03 (+1d) |  | 18d → 0.5d |  | baseline start 2018-07-17 11:14 → 2018-07-17; baseline finish 2018-07-18 15:54 → 2018-07-18 |
| 155 | AT - Elaboración Bocetos de Pantallas | 2018-07-02 15:42 → 2018-07-03 (+1d) | 2018-07-04 11:02 → 2018-07-05 (+1d) |  | 18d → 0.5d |  | baseline start 2018-07-18 15:54 → 2018-07-18; baseline finish 2018-07-19 18:34 → 2018-07-19 |
| 156 | **AT - Distribucion - Cierre del Viaje y Facturacion** | 2018-07-04 11:02 → 2018-07-05 (+1d) | 2018-07-06 18:22 → 2018-07-09 (+3d) | 2d? → 5.33d? | 18d → 0.5d |  | baseline start 2018-07-19 18:34 → 2018-07-19; baseline finish 2018-07-24 15:54 → 2018-07-24 |
| 157 | AT - Elaboración Bocetos de Archivos | 2018-07-04 11:02 → 2018-07-05 (+1d) | 2018-07-05 11:02 → 2018-07-06 (+1d) |  | 18d → 0.5d |  | baseline start 2018-07-19 18:34 → 2018-07-19; baseline finish 2018-07-23 11:14 → 2018-07-23 |
| 158 | AT - Elaboración Bocetos de Pantallas | 2018-07-05 11:02 → 2018-07-06 (+1d) | 2018-07-06 18:22 → 2018-07-09 (+3d) |  | 18d → 0.5d |  | baseline start 2018-07-23 11:14 → 2018-07-23; baseline finish 2018-07-24 15:54 → 2018-07-24 |
| 159 | **AT - Modulo Alarmas/Reportes/Indicadores de gestión** | 2018-07-06 18:22 → 2018-07-09 (+3d) | 2018-07-13 15:42 → 2018-07-16 (+3d) | 5d? → 9.33d? | 18d → 0.5d |  | baseline start 2018-07-24 15:54 → 2018-07-24; baseline finish 2018-07-30 15:54 → 2018-07-30 |
| 160 | **AT - Alarmas** | 2018-07-06 18:22 → 2018-07-09 (+3d) | 2018-07-11 11:02 → 2018-07-12 (+1d) | 3d? → 4.67d? | 21d → 69.99d |  | baseline start 2018-07-24 15:54 → 2018-07-24; baseline finish 2018-07-26 15:54 → 2018-07-26 |
| 161 | AT - Elaboración Bocetos de Archivos | 2018-07-06 18:22 → 2018-07-09 (+3d) | 2018-07-10 11:02 → 2018-07-11 (+1d) |  | 21d → 69.99d |  | baseline start 2018-07-24 15:54 → 2018-07-24; baseline finish 2018-07-25 15:54 → 2018-07-25 |
| 162 | AT - Elaboración Bocetos de Pantallas | 2018-07-10 11:02 → 2018-07-11 (+1d) | 2018-07-11 11:02 → 2018-07-12 (+1d) |  | 21d → 69.99d |  | baseline start 2018-07-25 15:54 → 2018-07-25; baseline finish 2018-07-26 15:54 → 2018-07-26 |
| 163 | **AT - Reportes** | 2018-07-06 18:22 → 2018-07-09 (+3d) | 2018-07-11 11:02 → 2018-07-12 (+1d) | 3d? → 4.67d? | 18d → 0.5d |  | baseline start 2018-07-24 15:54 → 2018-07-24; baseline finish 2018-07-26 15:54 → 2018-07-26 |
| 164 | AT - Elaboración Bocetos de Archivos | 2018-07-06 18:22 → 2018-07-09 (+3d) | 2018-07-10 11:02 → 2018-07-11 (+1d) |  | 18d → 0.5d |  | baseline start 2018-07-24 15:54 → 2018-07-24; baseline finish 2018-07-25 15:54 → 2018-07-25 |
| 165 | AT - Elaboración Bocetos de Pantallas | 2018-07-10 11:02 → 2018-07-11 (+1d) | 2018-07-11 11:02 → 2018-07-12 (+1d) |  | 18d → 0.5d |  | baseline start 2018-07-25 15:54 → 2018-07-25; baseline finish 2018-07-26 15:54 → 2018-07-26 |
| 166 | **AT - Indicadores de gestión** | 2018-07-11 11:02 → 2018-07-12 (+1d) | 2018-07-13 15:42 → 2018-07-16 (+3d) | 2d? → 4.67d? | 18d → 0.5d |  | baseline start 2018-07-26 15:54 → 2018-07-26; baseline finish 2018-07-30 15:54 → 2018-07-30 |
| 167 | AT - Elaboración Bocetos de Archivos | 2018-07-11 11:02 → 2018-07-12 (+1d) | 2018-07-12 15:42 → 2018-07-13 (+1d) |  | 18d → 0.5d |  | baseline start 2018-07-26 15:54 → 2018-07-26; baseline finish 2018-07-27 15:54 → 2018-07-27 |
| 168 | AT - Elaboración Bocetos de Pantallas | 2018-07-12 15:42 → 2018-07-13 (+1d) | 2018-07-13 15:42 → 2018-07-16 (+3d) |  | 18d → 0.5d |  | baseline start 2018-07-27 15:54 → 2018-07-27; baseline finish 2018-07-30 15:54 → 2018-07-30 |
| 169 | AT - Revisión con el usuario | 2018-07-20 11:00 → 2018-07-16 (-4d) | 2018-07-20 17:00 → 2018-07-16 (-4d) |  | 13d → 0.5d |  | baseline start 2018-07-30 15:54 → 2018-07-30; baseline finish 2018-07-31 15:54 → 2018-07-31 |
| 170 | AT - Ajustes de comentarios del usuario | 2018-07-20 17:00 → 2018-07-16 (-4d) | 2018-07-23 13:00 → 2018-07-18 (-5d) | 1.5d? → 4d? | 13d → 0.5d |  | resources Omar Santiago/Fernando Nava → Omar Santiago/Fernando Nava [37.5%]; baseline start 2018-07-31 15:54 → 2018-07-31; baseline finish 2018-08-01 15:54 → 2018-08-01 |
| 171 | AT - Peer Review y Vo Bo | 2018-07-23 15:00 → 2018-07-18 (-5d) | 2018-07-23 17:00 → 2018-07-19 (-4d) |  | 13d → 0.5d |  | baseline start 2018-08-01 15:54 → 2018-08-01; baseline finish 2018-08-02 15:54 → 2018-08-02 |
| 172 | Validacion de documentacion, ultimos ajustes | 2018-06-04 09:00 → 2018-07-19 (+45d) | 2018-06-04 17:00 → 2018-07-20 (+46d) | 1.5d? → 2d? | 30d → 0.5d | none → 171 | resources Omar Santiago/Fernando Nava → Omar Santiago/Fernando Nava [75%]; baseline start 2018-08-02 15:54 → 2018-08-02; baseline finish 2018-08-03 15:54 → 2018-08-03 |
| 173 | **CC_Desarrollo** | 2018-06-04 15:00 → 2018-06-08 (+4d) | 2018-07-03 11:00 → 2018-08-29 (+57d) | 21d? → 116.82d? | 28d → 0.5d |  | baseline start 2018-06-15 12:30 → 2018-06-15; baseline finish 2018-08-21 09:54 → 2018-08-21 |
| 174 | **Diseño y Construcción** | 2018-06-04 15:00 → 2018-06-08 (+4d) | 2018-06-29 23:00 → 2018-08-29 (+61d) | 20d? → 116.82d? | 29d → 0.5d |  | baseline start 2018-06-15 12:30 → 2018-06-15; baseline finish 2018-08-20 09:54 → 2018-08-20 |
| 175 | CC - Revision del documento de Arquitectura de Solucion | 2018-06-04 15:00 → 2018-07-02 (+28d) | 2018-06-04 18:00 → 2018-07-03 (+29d) | 0.75d? → 2d? | 45d → 73.73d |  | resources Omar Santiago → Omar Santiago [37.5%]; baseline start 2018-06-15 12:30 → 2018-06-15; baseline finish 2018-06-18 12:30 → 2018-06-18 |
| 176 | **CC - Instalacion y Configuracion** | 2018-06-04 18:00 → 2018-07-03 (+29d) | 2018-06-07 17:00 → 2018-07-10 (+33d) | 3d? → 9.33d? | 45d → 73.73d |  | baseline start 2018-06-18 12:30 → 2018-06-18; baseline finish 2018-06-25 09:50 → 2018-06-25 |
| 177 | CC - Instalacion de herramientas de desarrollo | 2018-06-04 18:00 → 2018-07-03 (+29d) | 2018-06-05 19:00 → 2018-07-06 (+31d) | 2.25d? → 6d? | 46d → 77.06d |  | resources Omar Santiago → Omar Santiago [37.5%]; baseline start 2018-06-18 12:30 → 2018-06-18; baseline finish 2018-06-21 12:30 → 2018-06-21 |
| 178 | CC - Instalacion de herramientas de gestion de Bases de Datos | 2018-06-06 09:00 → 2018-07-03 (+27d) | 2018-06-07 10:00 → 2018-07-06 (+29d) | 2.25d? → 6d? | 45d → 73.73d | 177 → 175 | resources Omar Santiago → Omar Santiago [37.5%]; baseline start 2018-06-18 12:30 → 2018-06-18; baseline finish 2018-06-21 12:30 → 2018-06-21 |
| 179 | CC - Instalacion de herramienta para soportar aplicaciones web | 2018-06-07 10:00 → 2018-07-06 (+29d) | 2018-06-07 17:00 → 2018-07-10 (+33d) | 1.25d? → 3.33d? | 45d → 73.73d |  | resources Omar Santiago → Omar Santiago [37.5%]; baseline start 2018-06-21 12:30 → 2018-06-21; baseline finish 2018-06-25 09:50 → 2018-06-25 |
| 180 | **CC - Desarrollo** | 2018-06-04 17:00 → 2018-06-08 (+4d) | 2018-06-28 15:17 → 2018-08-29 (+62d) | 18d? → 116.82d? | 30d → 0.5d |  | baseline start 2018-06-18 10:30 → 2018-06-18; baseline finish 2018-07-31 15:54 → 2018-07-31 |
| 181 | **CC - Modulo Catalogos Maestros** | 2018-06-04 17:00 → 2018-07-20 (+46d) | 2018-06-14 11:00 → 2018-08-10 (+57d) | 8d? → 30d? | 30d → 0.5d |  | baseline start 2018-06-18 10:30 → 2018-06-18; baseline finish 2018-07-06 17:30 → 2018-07-06 |
| 182 | CC - Catalogo Rol | 2018-06-04 17:00 → 2018-07-20 (+46d) | 2018-06-05 11:00 → 2018-07-23 (+48d) | 1d? → 2d? | 30d → 0.5d |  | resources Omar Santiago → Omar Santiago [50%]; baseline start 2018-06-19 17:42 → 2018-06-19; baseline finish 2018-06-20 17:42 → 2018-06-20 |
| 183 | CC - Catalogo Actores | 2018-06-05 11:00 → 2018-07-23 (+48d) | 2018-06-05 17:00 → 2018-07-24 (+49d) | 1d? → 2d? | 30d → 0.5d |  | resources Omar Santiago → Omar Santiago [50%]; baseline start 2018-06-18 10:30 → 2018-06-18; baseline finish 2018-06-19 10:30 → 2018-06-19 |
| 184 | CC - Catalogo Actores-Roles | 2018-06-05 17:00 → 2018-07-24 (+49d) | 2018-06-06 11:00 → 2018-07-25 (+49d) | 1d? → 2d? | 30d → 0.5d |  | resources Omar Santiago → Omar Santiago [50%]; baseline start 2018-06-20 15:42 → 2018-06-20; baseline finish 2018-06-21 15:42 → 2018-06-21 |
| 185 | CC - Catalogo Contratos | 2018-06-06 11:00 → 2018-07-25 (+49d) | 2018-06-06 17:00 → 2018-07-26 (+50d) | 1d? → 2d? | 30d → 0.5d |  | resources Omar Santiago → Omar Santiago [50%]; baseline start 2018-06-20 15:42 → 2018-06-20; baseline finish 2018-06-21 15:42 → 2018-06-21 |
| 186 | CC - Catalogo Tipos de Tarifa | 2018-06-06 17:00 → 2018-07-26 (+50d) | 2018-06-07 11:00 → 2018-07-27 (+50d) | 1d? → 2d? | 30d → 0.5d |  | resources Omar Santiago → Omar Santiago [50%]; baseline start 2018-06-22 18:54 → 2018-06-22; baseline finish 2018-06-25 18:54 → 2018-06-25 |
| 187 | CC - Catalogo Tarifa | 2018-06-07 11:00 → 2018-07-27 (+50d) | 2018-06-07 17:00 → 2018-07-30 (+53d) | 1d? → 2d? | 30d → 0.5d |  | resources Omar Santiago → Omar Santiago [50%]; baseline start 2018-06-22 18:54 → 2018-06-22; baseline finish 2018-06-25 18:54 → 2018-06-25 |
| 188 | CC - Catalogo Conceptos de Tarifa | 2018-06-07 17:00 → 2018-07-30 (+53d) | 2018-06-08 11:00 → 2018-07-31 (+53d) | 1d? → 2d? | 30d → 0.5d |  | resources Omar Santiago → Omar Santiago [50%]; baseline start 2018-06-27 12:06 → 2018-06-27; baseline finish 2018-06-28 12:06 → 2018-06-28 |
| 189 | CC - Catalogo Choferes | 2018-06-08 11:00 → 2018-07-31 (+53d) | 2018-06-08 17:00 → 2018-08-01 (+54d) | 1d? → 2d? | 30d → 0.5d |  | resources Omar Santiago → Omar Santiago [50%]; baseline start 2018-06-27 12:06 → 2018-06-27; baseline finish 2018-06-28 12:06 → 2018-06-28 |
| 190 | CC - Catalogo Camiones | 2018-06-08 17:00 → 2018-08-01 (+54d) | 2018-06-11 11:00 → 2018-08-02 (+52d) | 1d? → 2d? | 30d → 0.5d |  | resources Omar Santiago → Omar Santiago [50%]; baseline start 2018-06-29 17:18 → 2018-06-29; baseline finish 2018-07-02 17:18 → 2018-07-02 |
| 191 | CC - Catalogo Responsables de Incidencias | 2018-06-11 11:00 → 2018-08-02 (+52d) | 2018-06-11 17:00 → 2018-08-03 (+53d) | 1d? → 2d? | 30d → 0.5d |  | resources Omar Santiago → Omar Santiago [50%]; baseline start 2018-06-29 09:06 → 2018-06-29; baseline finish 2018-07-02 09:06 → 2018-07-02 |
| 192 | CC - Catalogo Tipos de Incidencias | 2018-06-11 17:00 → 2018-08-03 (+53d) | 2018-06-12 11:00 → 2018-08-06 (+55d) | 1d? → 2d? | 30d → 0.5d |  | resources Omar Santiago → Omar Santiago [50%]; baseline start 2018-07-03 12:18 → 2018-07-03; baseline finish 2018-07-04 12:18 → 2018-07-04 |
| 193 | CC - Catalogo Tipos de Viaje | 2018-06-12 11:00 → 2018-08-06 (+55d) | 2018-06-12 17:00 → 2018-08-07 (+56d) | 1d? → 2d? | 30d → 0.5d |  | resources Omar Santiago → Omar Santiago [50%]; baseline start 2018-07-03 12:18 → 2018-07-03; baseline finish 2018-07-04 12:18 → 2018-07-04 |
| 194 | CC - Catalogo Tipos de Carga/Descarga | 2018-06-12 17:00 → 2018-08-07 (+56d) | 2018-06-13 11:00 → 2018-08-08 (+56d) | 1d? → 2d? | 30d → 0.5d |  | resources Omar Santiago → Omar Santiago [50%]; baseline start 2018-07-05 17:30 → 2018-07-05; baseline finish 2018-07-06 17:30 → 2018-07-06 |
| 195 | CC - Catalogo Clientes de Entrega | 2018-06-13 11:00 → 2018-08-08 (+56d) | 2018-06-13 17:00 → 2018-08-09 (+57d) | 1d? → 2d? | 30d → 0.5d |  | resources Omar Santiago → Omar Santiago [50%]; baseline start 2018-07-05 17:30 → 2018-07-05; baseline finish 2018-07-06 17:30 → 2018-07-06 |
| 196 | CC - Catalogo Clientes Solicidates | 2018-06-13 17:00 → 2018-08-09 (+57d) | 2018-06-14 11:00 → 2018-08-10 (+57d) | 1d? → 2d? | 30d → 0.5d |  | resources Omar Santiago → Omar Santiago [50%]; baseline start 2018-07-05 17:30 → 2018-07-05; baseline finish 2018-07-06 17:30 → 2018-07-06 |
| 197 | **CC - Modulo Seguridad** | 2018-06-14 11:00 → 2018-08-10 (+57d) | 2018-06-18 19:00 → 2018-08-17 (+60d) | 2d? → 11d? | 30d → 0.5d |  | baseline start 2018-07-10 10:42 → 2018-07-10; baseline finish 2018-07-16 15:54 → 2018-07-16 |
| 198 | CC - Roles | 2018-06-14 11:00 → 2018-08-10 (+57d) | 2018-06-15 10:00 → 2018-08-13 (+59d) | 1.75d? → 3.5d? | 30d → 0.5d |  | resources Omar Santiago → Omar Santiago [50%]; baseline start 2018-07-10 10:42 → 2018-07-10; baseline finish 2018-07-11 18:42 → 2018-07-11 |
| 199 | CC - Configuracion | 2018-06-15 10:00 → 2018-08-13 (+59d) | 2018-06-15 19:00 → 2018-08-15 (+61d) | 1.75d? → 3.5d? | 30d → 0.5d |  | resources Omar Santiago → Omar Santiago [50%]; baseline start 2018-07-10 10:42 → 2018-07-10; baseline finish 2018-07-11 18:42 → 2018-07-11 |
| 200 | CC - Permisos | 2018-06-18 09:00 → 2018-08-15 (+58d) | 2018-06-18 19:00 → 2018-08-17 (+60d) | 2d? → 4d? | 30d → 0.5d |  | resources Omar Santiago → Omar Santiago [50%]; baseline start 2018-07-12 15:54 → 2018-07-12; baseline finish 2018-07-16 15:54 → 2018-07-16 |
| 201 | **CC - Modulo Solicitudes** | 2018-06-19 09:00 → 2018-08-17 (+59d) | 2018-06-28 15:17 → 2018-08-29 (+62d) | 7d? → 16.32d? | 30d → 0.5d |  | baseline start 2018-07-17 11:14 → 2018-07-17; baseline finish 2018-07-30 17:11 → 2018-07-30 |
| 202 | CC - Cliente - Solicitud de Transporte | 2018-06-19 09:00 → 2018-08-17 (+59d) | 2018-06-19 18:00 → 2018-08-20 (+62d) | 1.75d? → 2d? | 30d → 0.5d |  | resources Omar Santiago → Omar Santiago [87.5%]; baseline start 2018-07-17 11:14 → 2018-07-17; baseline finish 2018-07-18 11:14 → 2018-07-18 |
| 203 | CC - Trafico - Valoracion del Viaje | 2018-06-19 18:00 → 2018-08-20 (+62d) | 2018-06-20 17:00 → 2018-08-21 (+62d) | 1.75d? → 2d? | 31d → 0.5d |  | resources Omar Santiago → Omar Santiago [87.5%]; baseline start 2018-07-17 11:14 → 2018-07-17; baseline finish 2018-07-18 11:14 → 2018-07-18 |
| 204 | CC - Distribucion - Asugnacion de Unidad y Carga | 2018-06-20 17:00 → 2018-08-21 (+62d) | 2018-06-21 16:00 → 2018-08-22 (+62d) | 1.75d? → 2d? | 31d → 0.5d |  | resources Omar Santiago → Omar Santiago [87.5%]; baseline start 2018-07-19 18:34 → 2018-07-19; baseline finish 2018-07-20 18:34 → 2018-07-20 |
| 205 | CC - Operador CL - Operación y Descarga | 2018-06-21 16:00 → 2018-08-22 (+62d) | 2018-06-22 13:00 → 2018-08-23 (+62d) | 1.75d? → 2d? | 30d → 0.5d |  | resources Omar Santiago → Omar Santiago [87.5%]; baseline start 2018-07-19 18:34 → 2018-07-19; baseline finish 2018-07-20 18:34 → 2018-07-20 |
| 206 | CC - Distribucion - Cierre del Viaje y Facturacion | 2018-06-22 15:00 → 2018-08-23 (+62d) | 2018-06-25 12:00 → 2018-08-24 (+60d) | 1.75d? → 2d? | 30d → 0.5d |  | resources Omar Santiago → Omar Santiago [87.5%]; baseline start 2018-07-24 15:54 → 2018-07-24; baseline finish 2018-07-25 15:54 → 2018-07-25 |
| 207 | **CC - Primer Check point operativo** | 2018-06-25 12:00 → 2018-08-24 (+60d) | 2018-06-27 12:00 → 2018-08-28 (+62d) | 2d? → 4d? | 30d → 0.5d |  | baseline start 2018-07-25 15:54 → 2018-07-25; baseline finish 2018-07-27 15:54 → 2018-07-27 |
| 208 | CC - Primer Check point operativo | 2018-06-25 12:00 → 2018-08-24 (+60d) | 2018-06-26 12:00 → 2018-08-27 (+62d) |  | 30d → 0.5d |  | baseline start 2018-07-25 15:54 → 2018-07-25; baseline finish 2018-07-26 15:54 → 2018-07-26 |
| 209 | CC - Actualizacion de los puntos del primer Ckeckpoint | 2018-06-26 12:00 → 2018-08-27 (+62d) | 2018-06-27 12:00 → 2018-08-28 (+62d) |  | 30d → 0.5d |  | baseline start 2018-07-26 15:54 → 2018-07-26; baseline finish 2018-07-27 15:54 → 2018-07-27 |
| 210 | **CC - Segundo Check point operativo** | 2018-06-27 12:00 → 2018-08-28 (+62d) | 2018-06-28 15:17 → 2018-08-29 (+62d) | 1d? → 2.32d? | 30d → 0.5d |  | baseline start 2018-07-27 15:54 → 2018-07-27; baseline finish 2018-07-30 17:11 → 2018-07-30 |

| ID | Task | Start | Finish | Duration | Total float | Other |
| --- | --- | --- | --- | --- | --- | --- |
| 211 | CC - Segundo Check point operativo | 2018-06-27 12:00 → 2018-08-28 (+62d) | 2018-06-27 16:17 → 2018-08-28 (+62d) |  | 30d → 0.5d | baseline start 2018-07-27 15:54 → 2018-07-27; baseline finish 2018-07-27 18:11 → 2018-07-27 |
| 212 | CC - Actualizacion de los puntos del segundo Check point operativo | 2018-06-27 16:17 → 2018-08-28 (+62d) | 2018-06-28 15:17 → 2018-08-29 (+62d) |  | 30d → 0.5d | baseline start 2018-07-27 18:11 → 2018-07-27; baseline finish 2018-07-30 17:11 → 2018-07-30 |
| 213 | **CC - Modulo Alarmas/Reportes/Indicadores de gestión** | 2018-06-07 15:42 → 2018-06-08 (+1d) | 2018-06-14 23:00 → 2018-06-13 (-1d) |  | 27d → 80.32d | baseline start 2018-07-26 15:54 → 2018-07-26; baseline finish 2018-07-31 15:54 → 2018-07-31 |
| 214 | CC - Alarmas | 2018-06-07 15:42 → 2018-06-08 (+1d) | 2018-06-08 23:00 → 2018-06-11 (+3d) |  | 27d → 80.32d | resources Omar Santiago → Omar Santiago [75%]; baseline start 2018-07-26 15:54 → 2018-07-26; baseline finish 2018-07-27 15:54 → 2018-07-27 |
| 215 | CC - Reportes | 2018-06-11 09:00 → 2018-06-11 | 2018-06-12 23:00 → 2018-06-12 |  | 27d → 80.32d | resources Omar Santiago → Omar Santiago [75%]; baseline start 2018-07-26 15:54 → 2018-07-26; baseline finish 2018-07-27 15:54 → 2018-07-27 |
| 216 | CC - Indicadores de gestión | 2018-06-13 09:00 → 2018-06-12 (-1d) | 2018-06-14 23:00 → 2018-06-13 (-1d) |  | 27d → 80.32d | resources Omar Santiago → Omar Santiago [75%]; baseline start 2018-07-30 15:54 → 2018-07-30; baseline finish 2018-07-31 15:54 → 2018-07-31 |
| 217 | **PU - Pruebas Untarias** | 2018-06-05 11:00 → 2018-06-11 (+6d) | 2018-06-25 17:00 → 2018-08-27 (+63d) | 14d? → 110.5d? | 34d → 4.82d | baseline start 2018-06-19 10:30 → 2018-06-19; baseline finish 2018-08-01 15:54 → 2018-08-01 |
| 218 | **PU - Modulo Catalogos Maestros** | 2018-06-05 11:00 → 2018-07-23 (+48d) | 2018-06-14 13:00 → 2018-08-13 (+60d) | 7d? → 30d? | 40d → 25.82d | baseline start 2018-06-19 10:30 → 2018-06-19; baseline finish 2018-07-09 17:30 → 2018-07-09 |
| 219 | PU - Catalogo Rol | 2018-06-05 11:00 → 2018-07-23 (+48d) | 2018-06-05 13:00 → 2018-07-24 (+49d) | 0.5d? → 2d? | 47d → 53.82d | resources Omar Santiago/Fernando Nava → Omar Santiago/Fernando Nava [25%]; baseline start 2018-06-20 17:42 → 2018-06-20; baseline finish 2018-06-21 17:42 → 2018-06-21 |
| 220 | PU - Catalogo Actores | 2018-06-05 17:00 → 2018-07-24 (+49d) | 2018-06-05 19:00 → 2018-07-24 (+49d) |  | 47d → 53.32d | baseline start 2018-06-19 10:30 → 2018-06-19; baseline finish 2018-06-19 12:30 → 2018-06-19 |
| 221 | PU - Catalogo Actores-Roles | 2018-06-06 11:00 → 2018-07-25 (+49d) | 2018-06-06 13:00 → 2018-07-26 (+50d) | 0.5d? → 2d? | 46d → 49.82d | resources Omar Santiago/Fernando Nava → Omar Santiago/Fernando Nava [25%]; baseline start 2018-06-21 15:42 → 2018-06-21; baseline finish 2018-06-22 15:42 → 2018-06-22 |
| 222 | PU - Catalogo Contratos | 2018-06-06 17:00 → 2018-07-26 (+50d) | 2018-06-06 19:00 → 2018-07-27 (+51d) | 0.5d? → 2d? | 46d → 47.82d | resources Omar Santiago/Fernando Nava → Omar Santiago/Fernando Nava [25%]; baseline start 2018-06-21 15:42 → 2018-06-21; baseline finish 2018-06-22 15:42 → 2018-06-22 |
| 223 | PU - Catalogo Tipos de Tarifa | 2018-06-07 11:00 → 2018-07-27 (+50d) | 2018-06-07 13:00 → 2018-07-30 (+53d) | 0.5d? → 2d? | 45d → 45.82d | resources Omar Santiago/Fernando Nava → Omar Santiago/Fernando Nava [25%]; baseline start 2018-06-25 18:54 → 2018-06-25; baseline finish 2018-06-26 18:54 → 2018-06-26 |
| 224 | PU - Catalogo Tarifa | 2018-06-07 17:00 → 2018-07-30 (+53d) | 2018-06-07 19:00 → 2018-07-31 (+54d) | 0.5d? → 2d? | 45d → 43.82d | resources Omar Santiago/Fernando Nava → Omar Santiago/Fernando Nava [25%]; baseline start 2018-06-25 18:54 → 2018-06-25; baseline finish 2018-06-26 18:54 → 2018-06-26 |
| 225 | PU - Catalogo Conceptos de Tarifa | 2018-06-08 11:00 → 2018-07-31 (+53d) | 2018-06-08 13:00 → 2018-08-01 (+54d) | 0.5d? → 2d? | 44d → 41.82d | resources Omar Santiago/Fernando Nava → Omar Santiago/Fernando Nava [25%]; baseline start 2018-06-28 12:06 → 2018-06-28; baseline finish 2018-06-29 12:06 → 2018-06-29 |
| 226 | PU - Catalogo Choferes | 2018-06-08 17:00 → 2018-08-01 (+54d) | 2018-06-08 19:00 → 2018-08-02 (+55d) | 0.5d? → 2d? | 44d → 39.82d | resources Omar Santiago/Fernando Nava → Omar Santiago/Fernando Nava [25%]; baseline start 2018-06-28 12:06 → 2018-06-28; baseline finish 2018-06-29 12:06 → 2018-06-29 |
| 227 | PU - Catalogo Camiones | 2018-06-11 11:00 → 2018-08-02 (+52d) | 2018-06-11 13:00 → 2018-08-03 (+53d) | 0.5d? → 2d? | 43d → 37.82d | resources Omar Santiago/Fernando Nava → Omar Santiago/Fernando Nava [25%]; baseline start 2018-07-02 17:18 → 2018-07-02; baseline finish 2018-07-03 17:18 → 2018-07-03 |
| 228 | PU - Catalogo Responsables de Incidencias | 2018-06-11 17:00 → 2018-08-03 (+53d) | 2018-06-11 19:00 → 2018-08-06 (+56d) | 0.5d? → 2d? | 43d → 35.82d | resources Omar Santiago/Fernando Nava → Omar Santiago/Fernando Nava [25%]; baseline start 2018-07-02 09:06 → 2018-07-02; baseline finish 2018-07-03 09:06 → 2018-07-03 |
| 229 | PU - Catalogo Tipos de Incidencias | 2018-06-12 11:00 → 2018-08-06 (+55d) | 2018-06-12 13:00 → 2018-08-07 (+56d) | 0.5d? → 2d? | 42d → 33.82d | resources Omar Santiago/Fernando Nava → Omar Santiago/Fernando Nava [25%]; baseline start 2018-07-04 12:18 → 2018-07-04; baseline finish 2018-07-05 12:18 → 2018-07-05 |
| 230 | PU - Catalogo Tipos de Viaje | 2018-06-12 17:00 → 2018-08-07 (+56d) | 2018-06-12 19:00 → 2018-08-08 (+57d) | 0.5d? → 2d? | 42d → 31.82d | resources Omar Santiago/Fernando Nava → Omar Santiago/Fernando Nava [25%]; baseline start 2018-07-04 12:18 → 2018-07-04; baseline finish 2018-07-05 12:18 → 2018-07-05 |
| 231 | PU - Catalogo Tipos de Carga/Descarga | 2018-06-13 11:00 → 2018-08-08 (+56d) | 2018-06-13 13:00 → 2018-08-09 (+57d) | 0.5d? → 2d? | 41d → 29.82d | resources Omar Santiago/Fernando Nava → Omar Santiago/Fernando Nava [25%]; baseline start 2018-07-06 17:30 → 2018-07-06; baseline finish 2018-07-09 17:30 → 2018-07-09 |
| 232 | PU - Catalogo Clientes de Entrega | 2018-06-13 17:00 → 2018-08-09 (+57d) | 2018-06-13 19:00 → 2018-08-10 (+58d) | 0.5d? → 2d? | 41d → 27.82d | resources Omar Santiago/Fernando Nava → Omar Santiago/Fernando Nava [25%]; baseline start 2018-07-06 17:30 → 2018-07-06; baseline finish 2018-07-09 17:30 → 2018-07-09 |
| 233 | PU - Catalogo Clientes Solicidates | 2018-06-14 11:00 → 2018-08-10 (+57d) | 2018-06-14 13:00 → 2018-08-13 (+60d) | 0.5d? → 2d? | 40d → 25.82d | resources Omar Santiago/Fernando Nava → Omar Santiago/Fernando Nava [25%]; baseline start 2018-07-06 17:30 → 2018-07-06; baseline finish 2018-07-09 17:30 → 2018-07-09 |
| 234 | **PU - Modulo Seguridad** | 2018-06-15 10:00 → 2018-08-13 (+59d) | 2018-06-19 11:00 → 2018-08-20 (+62d) | 2d? → 9.5d? | 37d → 14.82d | baseline start 2018-07-11 18:42 → 2018-07-11; baseline finish 2018-07-17 15:54 → 2018-07-17 |
| 235 | PU - Roles | 2018-06-15 10:00 → 2018-08-13 (+59d) | 2018-06-15 12:00 → 2018-08-14 (+60d) | 0.5d? → 2d? | 39d → 22.32d | resources Omar Santiago/Fernando Nava → Omar Santiago/Fernando Nava [25%]; baseline start 2018-07-11 18:42 → 2018-07-11; baseline finish 2018-07-12 18:42 → 2018-07-12 |
| 236 | PU - Configuracion | 2018-06-18 09:00 → 2018-08-15 (+58d) | 2018-06-18 11:00 → 2018-08-16 (+59d) | 0.5d? → 2d? | 38d → 18.82d | resources Omar Santiago/Fernando Nava → Omar Santiago/Fernando Nava [25%]; baseline start 2018-07-11 18:42 → 2018-07-11; baseline finish 2018-07-12 18:42 → 2018-07-12 |
| 237 | PU - Permisos | 2018-06-19 09:00 → 2018-08-17 (+59d) | 2018-06-19 11:00 → 2018-08-20 (+62d) | 0.5d? → 2d? | 37d → 14.82d | resources Omar Santiago/Fernando Nava → Omar Santiago/Fernando Nava [25%]; baseline start 2018-07-16 15:54 → 2018-07-16; baseline finish 2018-07-17 15:54 → 2018-07-17 |
| 238 | **PU - Modulo Solicitudes** | 2018-06-19 18:00 → 2018-08-20 (+62d) | 2018-06-25 17:00 → 2018-08-27 (+63d) | 4d? → 10d? | 33d → 4.82d | baseline start 2018-07-18 11:14 → 2018-07-18; baseline finish 2018-07-26 15:54 → 2018-07-26 |
| 239 | PU - Cliente - Solicitud de Transporte | 2018-06-19 18:00 → 2018-08-20 (+62d) | 2018-06-20 11:00 → 2018-08-21 (+62d) | 0.75d? → 2d? | 36d → 12.82d | resources Omar Santiago/Fernando Nava → Omar Santiago/Fernando Nava [37.5%]; baseline start 2018-07-18 11:14 → 2018-07-18; baseline finish 2018-07-19 11:14 → 2018-07-19 |
| 240 | PU - Trafico - Valoracion del Viaje | 2018-06-20 17:00 → 2018-08-21 (+62d) | 2018-06-21 10:00 → 2018-08-22 (+62d) | 0.75d? → 2d? | 35d → 10.82d | resources Omar Santiago/Fernando Nava → Omar Santiago/Fernando Nava [37.5%]; baseline start 2018-07-18 11:14 → 2018-07-18; baseline finish 2018-07-19 11:14 → 2018-07-19 |
| 241 | PU - Distribucion - Asugnacion de Unidad y Carga | 2018-06-21 16:00 → 2018-08-22 (+62d) | 2018-06-21 19:00 → 2018-08-23 (+63d) | 0.75d? → 2d? | 35d → 8.82d | resources Omar Santiago/Fernando Nava → Omar Santiago/Fernando Nava [37.5%]; baseline start 2018-07-20 18:34 → 2018-07-20; baseline finish 2018-07-23 18:34 → 2018-07-23 |
| 242 | PU - Operador CL - Operación y Descarga | 2018-06-22 15:00 → 2018-08-23 (+62d) | 2018-06-22 18:00 → 2018-08-24 (+63d) | 0.75d? → 2d? | 34d → 6.82d | resources Omar Santiago/Fernando Nava → Omar Santiago/Fernando Nava [37.5%]; baseline start 2018-07-20 18:34 → 2018-07-20; baseline finish 2018-07-23 18:34 → 2018-07-23 |
| 243 | PU - Distribucion - Cierre del Viaje y Facturacion | 2018-06-25 12:00 → 2018-08-24 (+60d) | 2018-06-25 17:00 → 2018-08-27 (+63d) | 0.75d? → 2d? | 33d → 4.82d | resources Omar Santiago/Fernando Nava → Omar Santiago/Fernando Nava [37.5%]; baseline start 2018-07-25 15:54 → 2018-07-25; baseline finish 2018-07-26 15:54 → 2018-07-26 |
| 244 | **PU - Modulo Alarmas/Reportes/Indicadores de gestión** | 2018-06-11 09:00 → 2018-06-11 | 2018-06-18 23:00 → 2018-06-14 (-4d) |  | 31d → 84.32d | baseline start 2018-07-27 15:54 → 2018-07-27; baseline finish 2018-08-01 15:54 → 2018-08-01 |
| 245 | PU - Alarmas | 2018-06-11 09:00 → 2018-06-11 | 2018-06-12 23:00 → 2018-06-12 |  | 42d → 113.32d | resources Omar Santiago/Fernando Nava → Omar Santiago/Fernando Nava [37.5%]; baseline start 2018-07-27 15:54 → 2018-07-27; baseline finish 2018-07-30 15:54 → 2018-07-30 |
| 246 | PU - Reportes | 2018-06-13 09:00 → 2018-06-12 (-1d) | 2018-06-14 23:00 → 2018-06-13 (-1d) |  | 40d → 111.32d | resources Omar Santiago/Fernando Nava → Omar Santiago/Fernando Nava [37.5%]; baseline start 2018-07-27 15:54 → 2018-07-27; baseline finish 2018-07-30 15:54 → 2018-07-30 |
| 247 | PU - Indicadores de gestión | 2018-06-15 09:00 → 2018-06-13 (-2d) | 2018-06-18 23:00 → 2018-06-14 (-4d) |  | 27d → 80.32d | resources Omar Santiago/Fernando Nava → Omar Santiago/Fernando Nava [37.5%]; baseline start 2018-07-31 15:54 → 2018-07-31; baseline finish 2018-08-01 15:54 → 2018-08-01 |
| 248 | **TD - Termina Desarrollo** | 2018-06-19 09:00 → 2018-06-14 (-5d) | 2018-06-25 17:00 → 2018-06-21 (-4d) | 4d? → 11d? | 27d → 80.32d | baseline start 2018-08-01 15:54 → 2018-08-01; baseline finish 2018-08-09 09:54 → 2018-08-09 |
| 249 | **TD - Configuracion en Ambiente QA o TEST** | 2018-06-19 09:00 → 2018-06-14 (-5d) | 2018-06-25 17:00 → 2018-06-21 (-4d) | 4d? → 11d? | 27d → 80.32d | baseline start 2018-08-01 15:54 → 2018-08-01; baseline finish 2018-08-09 09:54 → 2018-08-09 |
| 250 | Configuracion de Java 7 u 8 | 2018-06-19 09:00 → 2018-06-14 (-5d) | 2018-06-19 17:00 → 2018-06-15 (-4d) | 1.5d? → 2d? | 27d → 80.32d | resources Omar Santiago → Omar Santiago [75%]; baseline start 2018-08-01 15:54 → 2018-08-01; baseline finish 2018-08-02 15:54 → 2018-08-02 |
| 251 | Configuracion de Mysql y complementos | 2018-06-19 17:00 → 2018-06-15 (-4d) | 2018-06-20 13:00 → 2018-06-18 (-2d) | 1.5d? → 2d? | 27d → 80.32d | resources Omar Santiago → Omar Santiago [75%]; baseline start 2018-08-02 15:54 → 2018-08-02; baseline finish 2018-08-03 15:54 → 2018-08-03 |
| 252 | Configuracion de Apache Tomcat | 2018-06-20 15:00 → 2018-06-18 (-2d) | 2018-06-21 11:00 → 2018-06-19 (-2d) | 1.5d? → 2d? | 27d → 80.32d | resources Omar Santiago → Omar Santiago [75%]; baseline start 2018-08-03 15:54 → 2018-08-03; baseline finish 2018-08-06 15:54 → 2018-08-06 |
| 253 | Configuracion AppWeb v1 | 2018-06-21 11:00 → 2018-06-19 (-2d) | 2018-06-25 17:00 → 2018-06-21 (-4d) |  | 27d → 80.32d | baseline start 2018-08-06 15:54 → 2018-08-06; baseline finish 2018-08-09 09:54 → 2018-08-09 |
| 254 | **PI - Pruebas Integrales** | 2018-06-25 17:00 → 2018-06-21 (-4d) | 2018-06-29 23:00 → 2018-07-02 (+3d) | 5d? → 14d? | 28d → 80.32d | baseline start 2018-08-09 09:54 → 2018-08-09; baseline finish 2018-08-20 09:54 → 2018-08-20 |
| 255 | **PI - Modulo Catalogos Maestros** | 2018-06-25 17:00 → 2018-06-21 (-4d) | 2018-06-25 19:00 → 2018-06-25 | 0d? → 4d? | 28d → 80.32d | baseline start 2018-08-09 09:54 → 2018-08-09; baseline finish 2018-08-13 09:54 → 2018-08-13 |
| 256 | PI - Catalogo Rol | 2018-06-25 17:00 → 2018-06-21 (-4d) | 2018-06-25 18:00 → 2018-06-22 (-3d) | 0.25d? → 2d? | 33d → 96.32d | resources Omar Santiago/Fernando Nava/ITSC → Omar Santiago/Fernando Nava/ITSC [12.5%]; baseline start 2018-08-09 09:54 → 2018-08-09; baseline finish 2018-08-10 09:54 → 2018-08-10 |
| 257 | PI - Catalogo Actores | 2018-06-25 17:00 → 2018-06-21 (-4d) | 2018-06-25 18:00 → 2018-06-22 (-3d) | 0.25d? → 2d? | 33d → 96.32d | resources Omar Santiago/Fernando Nava/ITSC → Omar Santiago/Fernando Nava/ITSC [12.5%]; baseline start 2018-08-09 09:54 → 2018-08-09; baseline finish 2018-08-10 09:54 → 2018-08-10 |
| 258 | PI - Catalogo Actores-Roles | 2018-06-25 17:00 → 2018-06-21 (-4d) | 2018-06-25 18:00 → 2018-06-22 (-3d) | 0.25d? → 2d? | 33d → 96.32d | resources Omar Santiago/Fernando Nava/ITSC → Omar Santiago/Fernando Nava/ITSC [12.5%]; baseline start 2018-08-09 09:54 → 2018-08-09; baseline finish 2018-08-10 09:54 → 2018-08-10 |
| 259 | PI - Catalogo Contratos | 2018-06-25 17:00 → 2018-06-21 (-4d) | 2018-06-25 18:00 → 2018-06-22 (-3d) | 0.25d? → 2d? | 33d → 96.32d | resources Omar Santiago/Fernando Nava/ITSC → Omar Santiago/Fernando Nava/ITSC [12.5%]; baseline start 2018-08-09 09:54 → 2018-08-09; baseline finish 2018-08-10 09:54 → 2018-08-10 |
| 260 | PI - Catalogo Tipos de Tarifa | 2018-06-25 17:00 → 2018-06-21 (-4d) | 2018-06-25 18:00 → 2018-06-22 (-3d) | 0.25d? → 2d? | 33d → 96.32d | resources Omar Santiago/Fernando Nava/ITSC → Omar Santiago/Fernando Nava/ITSC [12.5%]; baseline start 2018-08-09 09:54 → 2018-08-09; baseline finish 2018-08-10 09:54 → 2018-08-10 |
| 261 | PI - Catalogo Tarifa | 2018-06-25 17:00 → 2018-06-21 (-4d) | 2018-06-25 18:00 → 2018-06-22 (-3d) | 0.25d? → 2d? | 33d → 96.32d | resources Omar Santiago/Fernando Nava/ITSC → Omar Santiago/Fernando Nava/ITSC [12.5%]; baseline start 2018-08-09 09:54 → 2018-08-09; baseline finish 2018-08-10 09:54 → 2018-08-10 |
| 262 | PI - Catalogo Conceptos de Tarifa | 2018-06-25 17:00 → 2018-06-21 (-4d) | 2018-06-25 18:00 → 2018-06-22 (-3d) | 0.25d? → 2d? | 33d → 96.32d | resources Omar Santiago/Fernando Nava/ITSC → Omar Santiago/Fernando Nava/ITSC [12.5%]; baseline start 2018-08-09 09:54 → 2018-08-09; baseline finish 2018-08-10 09:54 → 2018-08-10 |
| 263 | PI - Catalogo Choferes | 2018-06-25 17:00 → 2018-06-21 (-4d) | 2018-06-25 18:00 → 2018-06-22 (-3d) | 0.25d? → 2d? | 33d → 96.32d | resources Omar Santiago/Fernando Nava/ITSC → Omar Santiago/Fernando Nava/ITSC [12.5%]; baseline start 2018-08-09 09:54 → 2018-08-09; baseline finish 2018-08-10 09:54 → 2018-08-10 |
| 264 | PI - Catalogo Camiones | 2018-06-25 17:00 → 2018-06-21 (-4d) | 2018-06-25 18:00 → 2018-06-22 (-3d) | 0.25d? → 2d? | 33d → 96.32d | resources Omar Santiago/Fernando Nava/ITSC → Omar Santiago/Fernando Nava/ITSC [12.5%]; baseline start 2018-08-09 09:54 → 2018-08-09; baseline finish 2018-08-10 09:54 → 2018-08-10 |
| 265 | PI - Catalogo Responsables de Incidencias | 2018-06-25 17:00 → 2018-06-21 (-4d) | 2018-06-25 18:00 → 2018-06-22 (-3d) | 0.25d? → 2d? | 28d → 80.32d | resources Omar Santiago/Fernando Nava/ITSC → Omar Santiago/Fernando Nava/ITSC [12.5%]; baseline start 2018-08-09 09:54 → 2018-08-09; baseline finish 2018-08-10 09:54 → 2018-08-10 |
| 266 | PI - Catalogo Tipos de Incidencias | 2018-06-25 18:00 → 2018-06-22 (-3d) | 2018-06-25 19:00 → 2018-06-25 | 0.25d? → 2d? | 33d → 94.32d | resources Omar Santiago/Fernando Nava/ITSC → Omar Santiago/Fernando Nava/ITSC [12.5%]; baseline start 2018-08-10 09:54 → 2018-08-10; baseline finish 2018-08-13 09:54 → 2018-08-13 |
| 267 | PI - Catalogo Tipos de Viaje | 2018-06-25 18:00 → 2018-06-22 (-3d) | 2018-06-25 19:00 → 2018-06-25 | 0.25d? → 2d? | 33d → 94.32d | resources Omar Santiago/Fernando Nava/ITSC → Omar Santiago/Fernando Nava/ITSC [12.5%]; baseline start 2018-08-10 09:54 → 2018-08-10; baseline finish 2018-08-13 09:54 → 2018-08-13 |
| 268 | PI - Catalogo Tipos de Carga/Descarga | 2018-06-25 18:00 → 2018-06-22 (-3d) | 2018-06-25 19:00 → 2018-06-25 | 0.25d? → 2d? | 33d → 94.32d | resources Omar Santiago/Fernando Nava/ITSC → Omar Santiago/Fernando Nava/ITSC [12.5%]; baseline start 2018-08-10 09:54 → 2018-08-10; baseline finish 2018-08-13 09:54 → 2018-08-13 |
| 269 | PI - Catalogo Clientes de Entrega | 2018-06-25 18:00 → 2018-06-22 (-3d) | 2018-06-25 19:00 → 2018-06-25 | 0.25d? → 2d? | 33d → 94.32d | resources Omar Santiago/Fernando Nava/ITSC → Omar Santiago/Fernando Nava/ITSC [12.5%]; baseline start 2018-08-10 09:54 → 2018-08-10; baseline finish 2018-08-13 09:54 → 2018-08-13 |
| 270 | PI - Catalogo Clientes Solicidates | 2018-06-25 18:00 → 2018-06-22 (-3d) | 2018-06-25 19:00 → 2018-06-25 | 0.25d? → 2d? | 28d → 80.32d | resources Omar Santiago/Fernando Nava/ITSC → Omar Santiago/Fernando Nava/ITSC [12.5%]; baseline start 2018-08-10 09:54 → 2018-08-10; baseline finish 2018-08-13 09:54 → 2018-08-13 |
| 271 | **PI - Modulo Seguridad** | 2018-06-26 09:00 → 2018-06-25 (-1d) | 2018-06-26 10:00 → 2018-06-26 | 0d? → 2d? | 27d → 80.32d | baseline start 2018-08-13 09:54 → 2018-08-13; baseline finish 2018-08-14 09:54 → 2018-08-14 |
| 272 | PI - Roles | 2018-06-26 09:00 → 2018-06-25 (-1d) | 2018-06-26 10:00 → 2018-06-26 | 0.25d? → 2d? | 32d → 92.32d | resources Omar Santiago/Fernando Nava/ITSC → Omar Santiago/Fernando Nava/ITSC [12.5%]; baseline start 2018-08-13 09:54 → 2018-08-13; baseline finish 2018-08-14 09:54 → 2018-08-14 |
| 273 | PI - Configuracion | 2018-06-26 09:00 → 2018-06-25 (-1d) | 2018-06-26 10:00 → 2018-06-26 | 0.25d? → 2d? | 32d → 92.32d | resources Omar Santiago/Fernando Nava/ITSC → Omar Santiago/Fernando Nava/ITSC [12.5%]; baseline start 2018-08-13 09:54 → 2018-08-13; baseline finish 2018-08-14 09:54 → 2018-08-14 |
| 274 | PI - Permisos | 2018-06-26 09:00 → 2018-06-25 (-1d) | 2018-06-26 10:00 → 2018-06-26 | 0.25d? → 2d? | 27d → 80.32d | resources Omar Santiago/Fernando Nava/ITSC → Omar Santiago/Fernando Nava/ITSC [12.5%]; baseline start 2018-08-13 09:54 → 2018-08-13; baseline finish 2018-08-14 09:54 → 2018-08-14 |
| 275 | **PI - Modulo Solicitudes** | 2018-06-26 10:00 → 2018-06-26 | 2018-06-26 16:00 → 2018-06-28 (+2d) | 0d? → 4d? | 27d → 80.32d | baseline start 2018-08-14 09:54 → 2018-08-14; baseline finish 2018-08-16 09:54 → 2018-08-16 |
| 276 | PI - Cliente - Solicitud de Transporte | 2018-06-26 10:00 → 2018-06-26 | 2018-06-26 12:00 → 2018-06-27 (+1d) | 0.5d? → 2d? | 32d → 90.32d | resources Omar Santiago/Fernando Nava/ITSC → Omar Santiago/Fernando Nava/ITSC [25%]; baseline start 2018-08-14 09:54 → 2018-08-14; baseline finish 2018-08-15 09:54 → 2018-08-15 |
| 277 | PI - Trafico - Valoracion del Viaje | 2018-06-26 10:00 → 2018-06-26 | 2018-06-26 12:00 → 2018-06-27 (+1d) | 0.5d? → 2d? | 32d → 90.32d | resources Omar Santiago/Fernando Nava/ITSC → Omar Santiago/Fernando Nava/ITSC [25%]; baseline start 2018-08-14 09:54 → 2018-08-14; baseline finish 2018-08-15 09:54 → 2018-08-15 |
| 278 | PI - Distribucion - Asugnacion de Unidad y Carga | 2018-06-26 10:00 → 2018-06-26 | 2018-06-26 12:00 → 2018-06-27 (+1d) | 0.5d? → 2d? | 27d → 80.32d | resources Omar Santiago/Fernando Nava/ITSC → Omar Santiago/Fernando Nava/ITSC [25%]; baseline start 2018-08-14 09:54 → 2018-08-14; baseline finish 2018-08-15 09:54 → 2018-08-15 |
| 279 | PI - Operador CL - Operación y Descarga | 2018-06-26 12:00 → 2018-06-27 (+1d) | 2018-06-26 16:00 → 2018-06-28 (+2d) | 0.5d? → 2d? | 32d → 88.32d | resources Omar Santiago/Fernando Nava/ITSC → Omar Santiago/Fernando Nava/ITSC [25%]; baseline start 2018-08-15 09:54 → 2018-08-15; baseline finish 2018-08-16 09:54 → 2018-08-16 |
| 280 | PI - Distribucion - Cierre del Viaje y Facturacion | 2018-06-26 12:00 → 2018-06-27 (+1d) | 2018-06-26 16:00 → 2018-06-28 (+2d) | 0.5d? → 2d? | 27d → 80.32d | resources Omar Santiago/Fernando Nava/ITSC → Omar Santiago/Fernando Nava/ITSC [25%]; baseline start 2018-08-15 09:54 → 2018-08-15; baseline finish 2018-08-16 09:54 → 2018-08-16 |

| ID | Task | Start | Finish | Duration | Total float | Other |
| --- | --- | --- | --- | --- | --- | --- |
| 281 | **PI - Modulo Alarmas/Reportes/Indicadores de gestión** | 2018-06-26 16:00 → 2018-06-28 (+2d) | 2018-06-29 23:00 → 2018-07-02 (+3d) |  | 27d → 80.32d | baseline start 2018-08-16 09:54 → 2018-08-16; baseline finish 2018-08-20 09:54 → 2018-08-20 |
| 282 | PI - Alarmas | 2018-06-26 16:00 → 2018-06-28 (+2d) | 2018-06-27 23:00 → 2018-06-29 (+2d) |  | 31d → 86.32d | resources Omar Santiago/Fernando Nava/ITSC → Omar Santiago/Fernando Nava/ITSC [25%]; baseline start 2018-08-16 09:54 → 2018-08-16; baseline finish 2018-08-17 09:54 → 2018-08-17 |
| 283 | PI - Reportes | 2018-06-26 16:00 → 2018-06-28 (+2d) | 2018-06-27 23:00 → 2018-06-29 (+2d) |  | 27d → 80.32d | resources Omar Santiago/Fernando Nava/ITSC → Omar Santiago/Fernando Nava/ITSC [25%]; baseline start 2018-08-16 09:54 → 2018-08-16; baseline finish 2018-08-17 09:54 → 2018-08-17 |
| 284 | PI - Indicadores de gestión | 2018-06-28 09:00 → 2018-06-29 (+1d) | 2018-06-29 23:00 → 2018-07-02 (+3d) |  | 27d → 80.32d | resources Omar Santiago/Fernando Nava/ITSC → Omar Santiago/Fernando Nava/ITSC [25%]; baseline start 2018-08-17 09:54 → 2018-08-17; baseline finish 2018-08-20 09:54 → 2018-08-20 |
| 285 | PI - Cierre Pruebas Integrales | 2018-07-02 09:00 → 2018-07-02 | 2018-07-02 11:00 → 2018-07-03 (+1d) | 0.5d? → 2d? | 27d → 80.32d | resources Omar Santiago/Fernando Nava/ITSC → Omar Santiago/Fernando Nava/ITSC [25%]; baseline start 2018-08-20 09:54 → 2018-08-20; baseline finish 2018-08-21 09:54 → 2018-08-21 |
| 286 | **LB - Liberacion a Produccion** | 2018-07-02 11:00 → 2018-07-03 (+1d) | 2018-07-03 11:00 → 2018-07-04 (+1d) | 1d? → 2d? | 27d → 80.32d | baseline start 2018-08-21 09:54 → 2018-08-21; baseline finish 2018-08-22 09:54 → 2018-08-22 |
| 287 | LB - Liberacion y Cierre | 2018-07-02 11:00 → 2018-07-03 (+1d) | 2018-07-03 11:00 → 2018-07-04 (+1d) |  | 27d → 80.32d | baseline start 2018-08-21 09:54 → 2018-08-21; baseline finish 2018-08-22 09:54 → 2018-08-22 |
| 288 | Monitoreo y Control | 2018-06-04 09:00 A → 2018-05-24 A (-11d) | 2018-06-04 19:00 A → 2018-05-24 A (-11d) |  |  | baseline start 2018-05-24 09:00 → 2018-05-24; baseline finish 2018-05-24 19:00 → 2018-05-24 |

## Version 6 (saved 2018-05-30, file Proyecto1.mpp)

Note of the change: Merge pull request #1 from ProyectoInicial/master

Last finish 2018-08-29 → 2018-05-29 (-92d). Complete tasks 4 → 0.

Added:

| ID | Task | Duration | Start | Finish |
| --- | --- | --- | --- | --- |
| 104 | LB - Liberacion Modulo 1 | 1d | 2018-05-29 | 2018-05-29 |
| 106 | **AT Analisis de Tecnico** | 1d | 2018-05-29 | 2018-05-29 |
| 107 | **IAT - Revisión de documentación entregada por Negocio** | 1d | 2018-05-29 | 2018-05-29 |
| 108 | AT - Requerimientos de Negocio | 1d | 2018-05-29 | 2018-05-29 |
| 109 | AT - Casos de Uso | 1d | 2018-05-29 | 2018-05-29 |
| 110 | **AT - Actualizacion de propuesta de Arquitectura de Solucion** | 1d | 2018-05-29 | 2018-05-29 |
| 111 | AT - Requerimientos tecnicos | 1d | 2018-05-29 | 2018-05-29 |
| 112 | AT - Analisis tecnico | 1d | 2018-05-29 | 2018-05-29 |
| 113 | AT - Requerimientos de solucion | 1d | 2018-05-29 | 2018-05-29 |
| 114 | AT - Escalabilidad | 1d | 2018-05-29 | 2018-05-29 |
| 115 | AT - Modelado BD | 1d | 2018-05-29 | 2018-05-29 |
| 116 | AT - Herramientas para solucion | 1d | 2018-05-29 | 2018-05-29 |
| 117 | AT - Aplicación responsiva para navegadores web | 1d | 2018-05-29 | 2018-05-29 |
| 118 | AT - Peer Review y Vo Bo Arquitectura de Solucion | 1d | 2018-05-29 | 2018-05-29 |
| 130 | **Diseño y Construcción** | 1d | 2018-05-29 | 2018-05-29 |
| 131 | CC - Revision del documento de Arquitectura de Solucion | 1d | 2018-05-29 | 2018-05-29 |
| 141 | **AT Analisis de Tecnico** | 1d | 2018-05-29 | 2018-05-29 |
| 142 | **IAT - Revisión de documentación entregada por Negocio** | 1d | 2018-05-29 | 2018-05-29 |
| 143 | AT - Requerimientos de Negocio | 1d | 2018-05-29 | 2018-05-29 |
| 144 | AT - Casos de Uso | 1d | 2018-05-29 | 2018-05-29 |
| 145 | **AT - Actualizacion de propuesta de Arquitectura de Solucion** | 1d | 2018-05-29 | 2018-05-29 |
| 146 | AT - Requerimientos tecnicos | 1d | 2018-05-29 | 2018-05-29 |
| 147 | AT - Analisis tecnico | 1d | 2018-05-29 | 2018-05-29 |
| 148 | AT - Requerimientos de solucion | 1d | 2018-05-29 | 2018-05-29 |
| 149 | AT - Escalabilidad | 1d | 2018-05-29 | 2018-05-29 |
| 150 | AT - Modelado BD | 1d | 2018-05-29 | 2018-05-29 |
| 151 | AT - Herramientas para solucion | 1d | 2018-05-29 | 2018-05-29 |
| 152 | AT - Aplicación responsiva para navegadores web | 1d | 2018-05-29 | 2018-05-29 |
| 153 | AT - Peer Review y Vo Bo Arquitectura de Solucion | 1d | 2018-05-29 | 2018-05-29 |
| 171 | **Diseño y Construcción** | 1d | 2018-05-29 | 2018-05-29 |
| 172 | CC - Revision del documento de Arquitectura de Solucion | 1d | 2018-05-29 | 2018-05-29 |
| 190 | LB - Liberacion Modulo 2 | 1d? | 2018-05-29 | 2018-05-29 |
| 191 | **Modulo Alarmas** | 1d | 2018-05-29 | 2018-05-29 |
| 192 | **AT Analisis de Tecnico** | 1d | 2018-05-29 | 2018-05-29 |
| 193 | **IAT - Revisión de documentación entregada por Negocio** | 1d | 2018-05-29 | 2018-05-29 |
| 194 | AT - Requerimientos de Negocio | 1d | 2018-05-29 | 2018-05-29 |
| 195 | AT - Casos de Uso | 1d | 2018-05-29 | 2018-05-29 |
| 196 | **AT - Actualizacion de propuesta de Arquitectura de Solucion** | 1d | 2018-05-29 | 2018-05-29 |
| 197 | AT - Requerimientos tecnicos | 1d | 2018-05-29 | 2018-05-29 |
| 198 | AT - Analisis tecnico | 1d | 2018-05-29 | 2018-05-29 |
| 199 | AT - Requerimientos de solucion | 1d | 2018-05-29 | 2018-05-29 |
| 200 | AT - Escalabilidad | 1d | 2018-05-29 | 2018-05-29 |
| 201 | AT - Modelado BD | 1d | 2018-05-29 | 2018-05-29 |
| 202 | AT - Herramientas para solucion | 1d | 2018-05-29 | 2018-05-29 |
| 203 | AT - Aplicación responsiva para navegadores web | 1d | 2018-05-29 | 2018-05-29 |
| 204 | AT - Peer Review y Vo Bo Arquitectura de Solucion | 1d | 2018-05-29 | 2018-05-29 |
| 216 | **Diseño y Construcción** | 1d | 2018-05-29 | 2018-05-29 |
| 217 | CC - Revision del documento de Arquitectura de Solucion | 1d | 2018-05-29 | 2018-05-29 |
| 225 | LB - Liberacion Modulo 3 | 1d | 2018-05-29 | 2018-05-29 |

Removed: 2 AN_Analisis; 3 AN Analisis de Negocio; 4 AN - Modulo Catalogos Maestros; 5 AN - Catalogo Rol; 6 AN - Requerimientos de Negocio; 7 AN - Casos de Uso; 8 AN - Catalogo Actores; 9 AN - Requerimientos de Negocio; 10 AN - Casos de Uso; 11 AN - Catalogo Actores-Roles; 12 AN - Requerimientos de Negocio; 13 AN - Casos de Uso; 14 AN - Catalogo Contratos; 15 AN - Requerimientos de Negocio; 16 AN - Casos de Uso; 17 AN - Catalogo Tipos de Tarifa; 18 AN - Requerimientos de Negocio; 19 AN - Casos de Uso; 20 AN - Catalogo Tarifa; 21 AN - Requerimientos de Negocio; 22 AN - Casos de Uso; 23 AN - Catalogo Conceptos de Tarifa; 24 AN - Requerimientos de Negocio; 25 AN - Casos de Uso; 26 AN - Catalogo Choferes; 27 AN - Requerimientos de Negocio; 28 AN - Casos de Uso; 29 AN - Catalogo Camiones; 30 AN - Requerimientos de Negocio; 31 AN - Casos de Uso; 32 AN - Catalogo Responsables de Incidencias; 33 AN - Requerimientos de Negocio; 34 AN - Casos de Uso; 35 AN - Catalogo Tipos de Incidencias; 36 AN - Requerimientos de Negocio; 37 AN - Casos de Uso; 38 AN - Catalogo Tipos de Viaje; 39 AN - Requerimientos de Negocio; 40 AN - Casos de Uso; 41 AN - Catalogo Tipos de Carga/Descarga; 42 AN - Requerimientos de Negocio; 43 AN - Casos de Uso; 44 AN - Catalogo Clientes de Entrega; 45 AN - Requerimientos de Negocio; 46 AN - Casos de Uso; 47 AN - Catalogo Clientes Solicidates; 48 AN - Requerimientos de Negocio; 49 AN - Casos de Uso; 50 AN - Modulo Seguridad; 51 AN - Roles; 52 AN - Requerimientos de Negocio; 53 AN - Casos de Uso; 54 AN - Configuracion; 55 AN - Requerimientos de Negocio; 56 AN - Casos de Uso; 57 AN - Permisos; 58 AN - Requerimientos de Negocio; 59 AN - Casos de Uso; 60 AN - Modulo Alarmas/Reportes/Indicadores de gestión; 61 AN - Alarmas; 62 AN - Requerimientos de Negocio; 63 AN - Casos de Uso; 64 AN - Reportes; 65 AN - Requerimientos de Negocio; 66 AN - Casos de Uso; 67 AN - Indicadores de gestión; 68 AN - Requerimientos de Negocio; 69 AN - Casos de Uso; 70 AT - Revisión interna; 71 AT - Ajustes de comentarios del usuario; 72 AT - Peer Review y Vo Bo; 169 AT - Revisión con el usuario; 170 AT - Ajustes de comentarios del usuario; 171 AT - Peer Review y Vo Bo; 172 Validacion de documentacion, ultimos ajustes; 250 Configuracion de Java 7 u 8; 251 Configuracion de Mysql y complementos; 252 Configuracion de Apache Tomcat; 253 Configuracion AppWeb v1; 254 PI - Pruebas Integrales; 255 PI - Modulo Catalogos Maestros; 256 PI - Catalogo Rol; 257 PI - Catalogo Actores; 258 PI - Catalogo Actores-Roles; 259 PI - Catalogo Contratos; 260 PI - Catalogo Tipos de Tarifa; 261 PI - Catalogo Tarifa; 262 PI - Catalogo Conceptos de Tarifa; 263 PI - Catalogo Choferes; 264 PI - Catalogo Camiones; 265 PI - Catalogo Responsables de Incidencias; 266 PI - Catalogo Tipos de Incidencias; 267 PI - Catalogo Tipos de Viaje; 268 PI - Catalogo Tipos de Carga/Descarga; 269 PI - Catalogo Clientes de Entrega; 270 PI - Catalogo Clientes Solicidates; 271 PI - Modulo Seguridad; 272 PI - Roles; 273 PI - Configuracion; 274 PI - Permisos; 275 PI - Modulo Solicitudes; 276 PI - Cliente - Solicitud de Transporte; 277 PI - Trafico - Valoracion del Viaje; 280 PI - Distribucion - Cierre del Viaje y Facturacion; 281 PI - Modulo Alarmas/Reportes/Indicadores de gestión; 282 PI - Alarmas; 283 PI - Reportes; 284 PI - Indicadores de gestión; 285 PI - Cierre Pruebas Integrales; 286 LB - Liberacion a Produccion; 287 LB - Liberacion y Cierre; 288 Monitoreo y Control

Changed:

| ID | Task | Start | Finish | Duration | Complete | Total float | Predecessors | Other |
| --- | --- | --- | --- | --- | --- | --- | --- | --- |
| 1 | **001-ITSC_TMS Plan de Analisis y Desarrollo** | 2018-06-04 → 2018-05-29 (-6d) | 2018-08-29 → 2018-05-29 (-92d) | 124d? → 1d? | 1% → 0% | none → 0d |  | baseline start 2018-05-24 → none; baseline finish 2018-08-21 → none |
| 2 | **Modulo Catalogos Maestros** | 2018-06-14 → 2018-05-29 (-16d) | 2018-06-21 → 2018-05-29 (-23d) | 11d? → 1d |  | 80.32d → 0d |  | was named TD - Termina Desarrollo; baseline start 2018-08-01 → none; baseline finish 2018-08-09 → none |
| 3 | **AT Analisis de Tecnico** | 2018-05-24 A → 2018-05-29 (+5d) | 2018-07-19 → 2018-05-29 (-51d) | 80.17d? → 1d | 1% → 0% | 59.82d → 0d |  | baseline start 2018-05-24 → none; baseline finish 2018-08-02 → none |
| 4 | **IAT - Revisión de documentación entregada por Negocio** | 2018-06-06 → 2018-05-29 (-8d) | 2018-06-19 → 2018-05-29 (-21d) | 18.88d? → 1d |  | 64.36d → 0d |  | baseline start 2018-05-31 → none; baseline finish 2018-06-13 → none |
| 5 | AT - Requerimientos de Negocio | 2018-06-06 → 2018-05-29 (-8d) | 2018-06-07 → 2018-05-29 (-9d) | 2d → 1d |  | 64.36d → 0d | AT - Peer Review y Vo Bo → none | resources Omar Santiago/Fernando Nava [75%] → none; baseline start 2018-05-31 → none; baseline finish 2018-05-31 → none |
| 6 | AT - Casos de Uso | 2018-06-07 → 2018-05-29 (-9d) | 2018-06-19 → 2018-05-29 (-21d) | 16.88d? → 1d |  | 64.36d → 0d | 5 → none | resources Omar Santiago/Fernando Nava → none; baseline start 2018-06-01 → none; baseline finish 2018-06-13 → none |
| 7 | **AT - Elaboracion de propuesta de Arquitectura de Solucion** | 2018-06-19 → 2018-05-29 (-21d) | 2018-06-28 → 2018-05-29 (-30d) | 14d? → 1d |  | 64.36d → 0d |  | baseline start 2018-06-13 → none; baseline finish 2018-06-14 → none |
| 8 | AT - Requerimientos tecnicos | 2018-06-19 → 2018-05-29 (-21d) | 2018-06-20 → 2018-05-29 (-22d) | 2d? → 1d |  | 64.36d → 0d | 6 → none | resources Omar Santiago [87.5%] → none; baseline start 2018-06-13 → none; baseline finish 2018-06-14 → none |
| 9 | AT - Analisis tecnico | 2018-06-20 → 2018-05-29 (-22d) | 2018-06-21 → 2018-05-29 (-23d) | 2d? → 1d |  | 64.36d → 0d | 8 → none | resources Omar Santiago [87.5%] → none; baseline start 2018-06-13 → none; baseline finish 2018-06-14 → none |
| 10 | AT - Requerimientos de solucion | 2018-06-21 → 2018-05-29 (-23d) | 2018-06-22 → 2018-05-29 (-24d) | 2d? → 1d |  | 64.36d → 0d | 9 → none | resources Omar Santiago [87.5%] → none; baseline start 2018-06-13 → none; baseline finish 2018-06-14 → none |
| 11 | AT - Escalabilidad | 2018-06-22 → 2018-05-29 (-24d) | 2018-06-25 → 2018-05-29 (-27d) | 2d? → 1d |  | 64.36d → 0d | 10 → none | resources Omar Santiago [87.5%] → none; baseline start 2018-06-13 → none; baseline finish 2018-06-14 → none |
| 12 | AT - Modelado BD | 2018-06-25 → 2018-05-29 (-27d) | 2018-06-26 → 2018-05-29 (-28d) | 2d? → 1d |  | 64.36d → 0d | 11 → none | resources Omar Santiago [87.5%] → none; baseline start 2018-06-13 → none; baseline finish 2018-06-14 → none |
| 13 | AT - Herramientas para solucion | 2018-06-26 → 2018-05-29 (-28d) | 2018-06-27 → 2018-05-29 (-29d) | 2d? → 1d |  | 64.36d → 0d | 12 → none | resources Omar Santiago [62.5%] → none; baseline start 2018-06-13 → none; baseline finish 2018-06-14 → none |
| 14 | AT - Aplicación responsiva para navegadores web | 2018-06-27 → 2018-05-29 (-29d) | 2018-06-28 → 2018-05-29 (-30d) | 2d? → 1d |  | 64.36d → 0d | 13 → none | resources Omar Santiago [62.5%] → none; baseline start 2018-06-13 → none; baseline finish 2018-06-14 → none |
| 15 | AT - Peer Review y Vo Bo Arquitectura de Solucion | 2018-06-28 → 2018-05-29 (-30d) | 2018-07-02 → 2018-05-29 (-34d) | 4d → 1d |  | 64.36d → 0d | 14 → none | resources Omar Santiago [25%] → none; baseline start 2018-06-14 → none; baseline finish 2018-06-15 → none |
| 16 | **AT - Elaboración de documentos AT** | 2018-05-24 A → 2018-05-29 (+5d) | 2018-07-16 → 2018-05-29 (-48d) | 75.64d? → 1d | 1% → 0% | 64.36d → 0d |  | baseline start 2018-05-24 → none; baseline finish 2018-07-30 → none |
| 17 | **AT - Modulo Catalogos Maestros** | 2018-05-24 A → 2018-05-29 (+5d) | 2018-07-16 → 2018-05-29 (-48d) | 75.64d? → 1d | 1% → 0% | 64.36d → 0d |  | baseline start 2018-05-24 → none; baseline finish 2018-07-05 → none |
| 18 | **AT - Catalogo Rol** | 2018-07-02 → 2018-05-29 (-34d) | 2018-07-04 → 2018-05-29 (-36d) | 4.8d → 1d |  | 80.26d → 0d |  | baseline start 2018-06-15 → none; baseline finish 2018-06-19 → none |
| 19 | AT - Elaboración Bocetos de Archivos | 2018-07-02 → 2018-05-29 (-34d) | 2018-07-03 → 2018-05-29 (-35d) | 1.6d → 1d |  | 80.26d → 0d | 15 → none | resources Fernando Nava [31.2%] → none; baseline start 2018-06-15 → none; baseline finish 2018-06-18 → none |
| 20 | AT - Elaboración Bocetos de Pantallas | 2018-07-03 → 2018-05-29 (-35d) | 2018-07-04 → 2018-05-29 (-36d) | 3.2d → 1d |  | 80.26d → 0d | 19 → none | resources Fernando Nava [31.2%] → none; baseline start 2018-06-18 → none; baseline finish 2018-06-19 → none |
| 21 | **AT - Catalogo Actores** | 2018-07-02 → 2018-05-29 (-34d) | 2018-07-03 → 2018-05-29 (-35d) | 1.5d? → 1d |  | 64.36d → 0d |  | baseline start 2018-06-15 → none; baseline finish 2018-06-18 → none |
| 22 | AT - Elaboración Bocetos de Archivos | 2018-07-02 → 2018-05-29 (-34d) | 2018-07-02 → 2018-05-29 (-34d) | 0.5d? → 1d |  | 64.36d → 0d | 15 → none | resources Fernando Nava → none; baseline start 2018-06-15 → none; baseline finish 2018-06-15 → none |
| 23 | AT - Elaboración Bocetos de Pantallas | 2018-07-02 → 2018-05-29 (-34d) | 2018-07-03 → 2018-05-29 (-35d) | 1d? → 1d |  | 64.36d → 0d | 22 → none | resources Fernando Nava → none; baseline start 2018-06-15 → none; baseline finish 2018-06-18 → none |
| 24 | **AT - Catalogo Actores-Roles** | 2018-07-03 → 2018-05-29 (-35d) | 2018-07-05 → 2018-05-29 (-37d) | 4.8d? → 1d |  | 78.76d → 0d |  | baseline start 2018-06-18 → none; baseline finish 2018-06-20 → none |
| 25 | AT - Elaboración Bocetos de Archivos | 2018-07-03 → 2018-05-29 (-35d) | 2018-07-04 → 2018-05-29 (-36d) | 1.6d? → 1d |  | 78.76d → 0d | 23 → none | resources Fernando Nava [31.2%] → none; baseline start 2018-06-18 → none; baseline finish 2018-06-19 → none |
| 26 | AT - Elaboración Bocetos de Pantallas | 2018-07-04 → 2018-05-29 (-36d) | 2018-07-05 → 2018-05-29 (-37d) | 3.2d? → 1d |  | 78.76d → 0d | 25 → none | resources Fernando Nava [31.2%] → none; baseline start 2018-06-19 → none; baseline finish 2018-06-20 → none |
| 27 | **AT - Catalogo Contratos** | 2018-07-03 → 2018-05-29 (-35d) | 2018-07-05 → 2018-05-29 (-37d) | 4.8d? → 1d |  | 64.36d → 0d |  | baseline start 2018-06-18 → none; baseline finish 2018-06-20 → none |
| 28 | AT - Elaboración Bocetos de Archivos | 2018-07-03 → 2018-05-29 (-35d) | 2018-07-04 → 2018-05-29 (-36d) | 1.6d? → 1d |  | 64.36d → 0d | 23 → none | resources Fernando Nava [31.2%] → none; baseline start 2018-06-18 → none; baseline finish 2018-06-19 → none |
| 29 | AT - Elaboración Bocetos de Pantallas | 2018-07-04 → 2018-05-29 (-36d) | 2018-07-05 → 2018-05-29 (-37d) | 3.2d? → 1d |  | 64.36d → 0d | 28 → none | resources Fernando Nava [31.2%] → none; baseline start 2018-06-19 → none; baseline finish 2018-06-20 → none |
| 30 | **AT - Catalogo Tipos de Tarifa** | 2018-07-05 → 2018-05-29 (-37d) | 2018-07-10 → 2018-05-29 (-42d) | 4.8d? → 1d |  | 73.96d → 0d |  | baseline start 2018-06-20 → none; baseline finish 2018-06-22 → none |
| 31 | AT - Elaboración Bocetos de Archivos | 2018-07-05 → 2018-05-29 (-37d) | 2018-07-06 → 2018-05-29 (-38d) | 1.6d? → 1d |  | 73.96d → 0d | 29 → none | resources Fernando Nava [31.2%] → none; baseline start 2018-06-20 → none; baseline finish 2018-06-21 → none |
| 32 | AT - Elaboración Bocetos de Pantallas | 2018-07-06 → 2018-05-29 (-38d) | 2018-07-10 → 2018-05-29 (-42d) | 3.2d? → 1d |  | 73.96d → 0d | 31 → none | resources Fernando Nava [31.2%] → none; baseline start 2018-06-21 → none; baseline finish 2018-06-22 → none |
| 33 | **AT - Catalogo Tarifa** | 2018-07-05 → 2018-05-29 (-37d) | 2018-07-10 → 2018-05-29 (-42d) | 4.8d? → 1d |  | 64.36d → 0d |  | baseline start 2018-06-20 → none; baseline finish 2018-06-22 → none |
| 34 | AT - Elaboración Bocetos de Archivos | 2018-07-05 → 2018-05-29 (-37d) | 2018-07-06 → 2018-05-29 (-38d) | 1.6d? → 1d |  | 64.36d → 0d | 29 → none | resources Fernando Nava [31.2%] → none; baseline start 2018-06-20 → none; baseline finish 2018-06-21 → none |
| 35 | AT - Elaboración Bocetos de Pantallas | 2018-07-06 → 2018-05-29 (-38d) | 2018-07-10 → 2018-05-29 (-42d) | 3.2d? → 1d |  | 64.36d → 0d | 34 → none | resources Fernando Nava [31.2%] → none; baseline start 2018-06-21 → none; baseline finish 2018-06-22 → none |
| 36 | **AT - Catalogo Conceptos de Tarifa** | 2018-07-10 → 2018-05-29 (-42d) | 2018-07-12 → 2018-05-29 (-44d) | 4.8d? → 1d |  | 64.36d → 0d |  | baseline start 2018-06-22 → none; baseline finish 2018-06-27 → none |
| 37 | AT - Elaboración Bocetos de Archivos | 2018-07-10 → 2018-05-29 (-42d) | 2018-07-10 → 2018-05-29 (-42d) | 1.6d? → 1d |  | 64.36d → 0d | 35 → none | resources Fernando Nava [31.2%] → none; baseline start 2018-06-22 → none; baseline finish 2018-06-26 → none |
| 38 | AT - Elaboración Bocetos de Pantallas | 2018-07-10 → 2018-05-29 (-42d) | 2018-07-12 → 2018-05-29 (-44d) | 3.2d? → 1d |  | 69.16d → 0d | 37 → none | resources Fernando Nava [31.2%] → none; baseline start 2018-06-26 → none; baseline finish 2018-06-27 → none |
| 39 | **AT - Catalogo Choferes** | 2018-07-10 → 2018-05-29 (-42d) | 2018-07-12 → 2018-05-29 (-44d) | 4.8d? → 1d |  | 65.96d → 0d |  | baseline start 2018-06-22 → none; baseline finish 2018-06-27 → none |
| 40 | AT - Elaboración Bocetos de Archivos | 2018-07-10 → 2018-05-29 (-42d) | 2018-07-10 → 2018-05-29 (-42d) | 1.6d? → 1d |  | 72.36d → 0d | 35 → none | resources Fernando Nava [31.2%] → none; baseline start 2018-06-22 → none; baseline finish 2018-06-26 → none |
| 41 | AT - Elaboración Bocetos de Pantallas | 2018-07-10 → 2018-05-29 (-42d) | 2018-07-12 → 2018-05-29 (-44d) | 3.2d? → 1d |  | 64.36d → 0d | 37 → none | resources Fernando Nava [31.2%] → none; baseline start 2018-06-26 → none; baseline finish 2018-06-27 → none |
| 42 | **AT - Catalogo Camiones** | 2018-07-12 → 2018-05-29 (-44d) | 2018-07-16 → 2018-05-29 (-48d) | 4.8d? → 1d |  | 64.36d → 0d |  | baseline start 2018-06-27 → none; baseline finish 2018-06-29 → none |
| 43 | AT - Elaboración Bocetos de Archivos | 2018-07-12 → 2018-05-29 (-44d) | 2018-07-13 → 2018-05-29 (-45d) | 1.6d? → 1d |  | 64.36d → 0d | 41 → none | resources Fernando Nava [31.2%] → none; baseline start 2018-06-27 → none; baseline finish 2018-06-28 → none |
| 44 | AT - Elaboración Bocetos de Pantallas | 2018-07-13 → 2018-05-29 (-45d) | 2018-07-16 → 2018-05-29 (-48d) | 3.2d? → 1d |  | 64.36d → 0d | 43 → none | resources Fernando Nava [31.2%] → none; baseline start 2018-06-28 → none; baseline finish 2018-06-29 → none |
| 45 | **AT - Catalogo Responsables de Incidencias** | 2018-05-24 A → 2018-05-29 (+5d) | 2018-06-05 → 2018-05-29 (-7d) | 17.88d? → 1d | 35% → 0% | 0.5d → 0d |  | baseline start 2018-05-24 → none; baseline finish 2018-06-29 → none |
| 46 | AT - Elaboración Bocetos de Archivos | 2018-05-24 A → 2018-05-29 (+5d) | 2018-05-24 A → 2018-05-29 (+5d) | 0.5d? → 1d | 100% → 0% | none → 0d | 41 → none | resources Fernando Nava → none; baseline start 2018-05-24 → none; baseline finish 2018-06-28 → none |
| 47 | AT - Elaboración Bocetos de Pantallas | 2018-05-24 A → 2018-05-29 (+5d) | 2018-06-05 → 2018-05-29 (-7d) | 2.38d? → 1d | 21% → 0% | 0.5d → 0d | 46 → none | resources Fernando Nava → none; baseline start 2018-05-24 → none; baseline finish 2018-06-29 → none |
| 48 | **AT - Catalogo Tipos de Incidencias** | 2018-06-05 → 2018-05-29 (-7d) | 2018-06-08 → 2018-05-29 (-10d) | 4.8d? → 1d |  | 117.32d → 0d |  | baseline start 2018-06-29 → none; baseline finish 2018-07-03 → none |
| 49 | AT - Elaboración Bocetos de Archivos | 2018-06-05 → 2018-05-29 (-7d) | 2018-06-06 → 2018-05-29 (-8d) | 1.6d? → 1d |  | 117.32d → 0d | 47 → none | resources Fernando Nava [31.2%] → none; baseline start 2018-06-29 → none; baseline finish 2018-07-02 → none |
| 50 | AT - Elaboración Bocetos de Pantallas | 2018-06-06 → 2018-05-29 (-8d) | 2018-06-08 → 2018-05-29 (-10d) | 3.2d? → 1d |  | 117.32d → 0d | 49 → none | resources Fernando Nava [31.2%] → none; baseline start 2018-07-02 → none; baseline finish 2018-07-03 → none |
| 51 | **AT - Catalogo Tipos de Viaje** | 2018-06-05 → 2018-05-29 (-7d) | 2018-06-08 → 2018-05-29 (-10d) | 4.8d? → 1d |  | 0.5d → 0d |  | baseline start 2018-06-29 → none; baseline finish 2018-07-03 → none |
| 52 | AT - Elaboración Bocetos de Archivos | 2018-06-05 → 2018-05-29 (-7d) | 2018-06-06 → 2018-05-29 (-8d) | 1.6d? → 1d |  | 0.5d → 0d | 47 → none | resources Fernando Nava [31.2%] → none; baseline start 2018-06-29 → none; baseline finish 2018-07-02 → none |
| 53 | AT - Elaboración Bocetos de Pantallas | 2018-06-06 → 2018-05-29 (-8d) | 2018-06-08 → 2018-05-29 (-10d) | 3.2d? → 1d |  | 0.5d → 0d | 52 → none | resources Fernando Nava [31.2%] → none; baseline start 2018-07-02 → none; baseline finish 2018-07-03 → none |
| 54 | **AT - Catalogo Tipos de Carga/Descarga** | 2018-06-08 → 2018-05-29 (-10d) | 2018-06-12 → 2018-05-29 (-14d) | 4.8d? → 1d |  | 112.52d → 0d |  | baseline start 2018-07-03 → none; baseline finish 2018-07-05 → none |
| 55 | AT - Elaboración Bocetos de Archivos | 2018-06-08 → 2018-05-29 (-10d) | 2018-06-11 → 2018-05-29 (-13d) | 1.6d? → 1d |  | 112.52d → 0d | 53 → none | resources Fernando Nava [31.2%] → none; baseline start 2018-07-03 → none; baseline finish 2018-07-04 → none |
| 56 | AT - Elaboración Bocetos de Pantallas | 2018-06-11 → 2018-05-29 (-13d) | 2018-06-12 → 2018-05-29 (-14d) | 3.2d? → 1d |  | 112.52d → 0d | 55 → none | resources Fernando Nava [31.2%] → none; baseline start 2018-07-04 → none; baseline finish 2018-07-05 → none |
| 57 | **AT - Catalogo Clientes de Entrega** | 2018-06-08 → 2018-05-29 (-10d) | 2018-06-12 → 2018-05-29 (-14d) | 4.8d? → 1d |  | 112.52d → 0d |  | baseline start 2018-07-03 → none; baseline finish 2018-07-05 → none |
| 58 | AT - Elaboración Bocetos de Archivos | 2018-06-08 → 2018-05-29 (-10d) | 2018-06-11 → 2018-05-29 (-13d) | 1.6d? → 1d |  | 112.52d → 0d | 53 → none | resources Fernando Nava [31.2%] → none; baseline start 2018-07-03 → none; baseline finish 2018-07-04 → none |
| 59 | AT - Elaboración Bocetos de Pantallas | 2018-06-11 → 2018-05-29 (-13d) | 2018-06-12 → 2018-05-29 (-14d) | 3.2d? → 1d |  | 112.52d → 0d | 58 → none | resources Fernando Nava [31.2%] → none; baseline start 2018-07-04 → none; baseline finish 2018-07-05 → none |
| 60 | **AT - Catalogo Clientes Solicidates** | 2018-06-08 → 2018-05-29 (-10d) | 2018-06-12 → 2018-05-29 (-14d) | 4.8d? → 1d |  | 0.5d → 0d |  | baseline start 2018-07-03 → none; baseline finish 2018-07-05 → none |
| 61 | AT - Elaboración Bocetos de Archivos | 2018-06-08 → 2018-05-29 (-10d) | 2018-06-11 → 2018-05-29 (-13d) | 1.6d? → 1d |  | 0.5d → 0d | 53 → none | resources Fernando Nava [31.2%] → none; baseline start 2018-07-03 → none; baseline finish 2018-07-04 → none |
| 62 | AT - Elaboración Bocetos de Pantallas | 2018-06-11 → 2018-05-29 (-13d) | 2018-06-12 → 2018-05-29 (-14d) | 3.2d? → 1d |  | 0.5d → 0d | 61 → none | resources Fernando Nava [31.2%] → none; baseline start 2018-07-04 → none; baseline finish 2018-07-05 → none |
| 63 | **CC_Desarrollo** | 2018-06-08 → 2018-05-29 (-10d) | 2018-08-29 → 2018-05-29 (-92d) | 116.82d? → 1d |  | 0.5d → 0d |  | baseline start 2018-06-15 → none; baseline finish 2018-08-21 → none |
| 64 | **Diseño y Construcción** | 2018-06-08 → 2018-05-29 (-10d) | 2018-08-29 → 2018-05-29 (-92d) | 116.82d? → 1d |  | 0.5d → 0d |  | baseline start 2018-06-15 → none; baseline finish 2018-08-20 → none |
| 65 | CC - Revision del documento de Arquitectura de Solucion | 2018-07-02 → 2018-05-29 (-34d) | 2018-07-03 → 2018-05-29 (-35d) | 2d? → 1d |  | 73.73d → 0d | 15 → none | resources Omar Santiago [37.5%] → none; baseline start 2018-06-15 → none; baseline finish 2018-06-18 → none |
| 66 | **CC - Instalacion y Configuracion** | 2018-07-03 → 2018-05-29 (-35d) | 2018-07-10 → 2018-05-29 (-42d) | 9.33d? → 1d |  | 73.73d → 0d |  | baseline start 2018-06-18 → none; baseline finish 2018-06-25 → none |
| 67 | CC - Instalacion de herramientas de desarrollo | 2018-07-03 → 2018-05-29 (-35d) | 2018-07-06 → 2018-05-29 (-38d) | 6d? → 1d |  | 77.06d → 0d | 65 → none | resources Omar Santiago [37.5%] → none; baseline start 2018-06-18 → none; baseline finish 2018-06-21 → none |
| 68 | CC - Instalacion de herramientas de gestion de Bases de Datos | 2018-07-03 → 2018-05-29 (-35d) | 2018-07-06 → 2018-05-29 (-38d) | 6d? → 1d |  | 73.73d → 0d | 65 → none | resources Omar Santiago [37.5%] → none; baseline start 2018-06-18 → none; baseline finish 2018-06-21 → none |
| 69 | CC - Instalacion de herramienta para soportar aplicaciones web | 2018-07-06 → 2018-05-29 (-38d) | 2018-07-10 → 2018-05-29 (-42d) | 3.33d? → 1d |  | 73.73d → 0d | 68 → none | resources Omar Santiago [37.5%] → none; baseline start 2018-06-21 → none; baseline finish 2018-06-25 → none |
| 70 | **CC - Desarrollo** | 2018-06-08 → 2018-05-29 (-10d) | 2018-08-29 → 2018-05-29 (-92d) | 116.82d? → 1d |  | 0.5d → 0d |  | baseline start 2018-06-18 → none; baseline finish 2018-07-31 → none |

| ID | Task | Start | Finish | Duration | Total float | Predecessors | Other |
| --- | --- | --- | --- | --- | --- | --- | --- |
| 71 | **CC - Modulo Catalogos Maestros** | 2018-07-20 → 2018-05-29 (-52d) | 2018-08-10 → 2018-05-29 (-73d) | 30d? → 1d | 0.5d → 0d |  | baseline start 2018-06-18 → none; baseline finish 2018-07-06 → none |
| 72 | CC - Catalogo Rol | 2018-07-20 → 2018-05-29 (-52d) | 2018-07-23 → 2018-05-29 (-55d) | 2d? → 1d | 0.5d → 0d | Validacion de documentacion, ultimos ajustes → none | resources Omar Santiago [50%] → none; baseline start 2018-06-19 → none; baseline finish 2018-06-20 → none |
| 73 | CC - Catalogo Actores | 2018-07-23 → 2018-05-29 (-55d) | 2018-07-24 → 2018-05-29 (-56d) | 2d? → 1d | 0.5d → 0d | 72 → none | resources Omar Santiago [50%] → none; baseline start 2018-06-18 → none; baseline finish 2018-06-19 → none |
| 74 | CC - Catalogo Actores-Roles | 2018-07-24 → 2018-05-29 (-56d) | 2018-07-25 → 2018-05-29 (-57d) | 2d? → 1d | 0.5d → 0d | 73 → none | resources Omar Santiago [50%] → none; baseline start 2018-06-20 → none; baseline finish 2018-06-21 → none |
| 75 | CC - Catalogo Contratos | 2018-07-25 → 2018-05-29 (-57d) | 2018-07-26 → 2018-05-29 (-58d) | 2d? → 1d | 0.5d → 0d | 74 → none | resources Omar Santiago [50%] → none; baseline start 2018-06-20 → none; baseline finish 2018-06-21 → none |
| 76 | CC - Catalogo Tipos de Tarifa | 2018-07-26 → 2018-05-29 (-58d) | 2018-07-27 → 2018-05-29 (-59d) | 2d? → 1d | 0.5d → 0d | 75 → none | resources Omar Santiago [50%] → none; baseline start 2018-06-22 → none; baseline finish 2018-06-25 → none |
| 77 | CC - Catalogo Tarifa | 2018-07-27 → 2018-05-29 (-59d) | 2018-07-30 → 2018-05-29 (-62d) | 2d? → 1d | 0.5d → 0d | 76 → none | resources Omar Santiago [50%] → none; baseline start 2018-06-22 → none; baseline finish 2018-06-25 → none |
| 78 | CC - Catalogo Conceptos de Tarifa | 2018-07-30 → 2018-05-29 (-62d) | 2018-07-31 → 2018-05-29 (-63d) | 2d? → 1d | 0.5d → 0d | 77 → none | resources Omar Santiago [50%] → none; baseline start 2018-06-27 → none; baseline finish 2018-06-28 → none |
| 79 | CC - Catalogo Choferes | 2018-07-31 → 2018-05-29 (-63d) | 2018-08-01 → 2018-05-29 (-64d) | 2d? → 1d | 0.5d → 0d | 78 → none | resources Omar Santiago [50%] → none; baseline start 2018-06-27 → none; baseline finish 2018-06-28 → none |
| 80 | CC - Catalogo Camiones | 2018-08-01 → 2018-05-29 (-64d) | 2018-08-02 → 2018-05-29 (-65d) | 2d? → 1d | 0.5d → 0d | 79 → none | resources Omar Santiago [50%] → none; baseline start 2018-06-29 → none; baseline finish 2018-07-02 → none |
| 81 | CC - Catalogo Responsables de Incidencias | 2018-08-02 → 2018-05-29 (-65d) | 2018-08-03 → 2018-05-29 (-66d) | 2d? → 1d | 0.5d → 0d | 80 → none | resources Omar Santiago [50%] → none; baseline start 2018-06-29 → none; baseline finish 2018-07-02 → none |
| 82 | CC - Catalogo Tipos de Incidencias | 2018-08-03 → 2018-05-29 (-66d) | 2018-08-06 → 2018-05-29 (-69d) | 2d? → 1d | 0.5d → 0d | 81 → none | resources Omar Santiago [50%] → none; baseline start 2018-07-03 → none; baseline finish 2018-07-04 → none |
| 83 | CC - Catalogo Tipos de Viaje | 2018-08-06 → 2018-05-29 (-69d) | 2018-08-07 → 2018-05-29 (-70d) | 2d? → 1d | 0.5d → 0d | 82 → none | resources Omar Santiago [50%] → none; baseline start 2018-07-03 → none; baseline finish 2018-07-04 → none |
| 84 | CC - Catalogo Tipos de Carga/Descarga | 2018-08-07 → 2018-05-29 (-70d) | 2018-08-08 → 2018-05-29 (-71d) | 2d? → 1d | 0.5d → 0d | 83 → none | resources Omar Santiago [50%] → none; baseline start 2018-07-05 → none; baseline finish 2018-07-06 → none |
| 85 | CC - Catalogo Clientes de Entrega | 2018-08-08 → 2018-05-29 (-71d) | 2018-08-09 → 2018-05-29 (-72d) | 2d? → 1d | 0.5d → 0d | 84 → none | resources Omar Santiago [50%] → none; baseline start 2018-07-05 → none; baseline finish 2018-07-06 → none |
| 86 | CC - Catalogo Clientes Solicidates | 2018-08-09 → 2018-05-29 (-72d) | 2018-08-10 → 2018-05-29 (-73d) | 2d? → 1d | 0.5d → 0d | 85 → none | resources Omar Santiago [50%] → none; baseline start 2018-07-05 → none; baseline finish 2018-07-06 → none |
| 87 | **PU - Pruebas Untarias** | 2018-06-11 → 2018-05-29 (-13d) | 2018-08-27 → 2018-05-29 (-90d) | 110.5d? → 1d | 4.82d → 0d |  | baseline start 2018-06-19 → none; baseline finish 2018-08-01 → none |
| 88 | **PU - Modulo Catalogos Maestros** | 2018-07-23 → 2018-05-29 (-55d) | 2018-08-13 → 2018-05-29 (-76d) | 30d? → 1d | 25.82d → 0d |  | baseline start 2018-06-19 → none; baseline finish 2018-07-09 → none |
| 89 | PU - Catalogo Rol | 2018-07-23 → 2018-05-29 (-55d) | 2018-07-24 → 2018-05-29 (-56d) | 2d? → 1d | 53.82d → 0d | 72 → none | resources Omar Santiago/Fernando Nava [25%] → none; baseline start 2018-06-20 → none; baseline finish 2018-06-21 → none |
| 90 | PU - Catalogo Actores | 2018-07-24 → 2018-05-29 (-56d) | 2018-07-24 → 2018-05-29 (-56d) | 0.5d? → 1d | 53.32d → 0d | 73 → none | resources Omar Santiago/Fernando Nava → none; baseline start 2018-06-19 → none; baseline finish 2018-06-19 → none |
| 91 | PU - Catalogo Actores-Roles | 2018-07-25 → 2018-05-29 (-57d) | 2018-07-26 → 2018-05-29 (-58d) | 2d? → 1d | 49.82d → 0d | 74 → none | resources Omar Santiago/Fernando Nava [25%] → none; baseline start 2018-06-21 → none; baseline finish 2018-06-22 → none |
| 92 | PU - Catalogo Contratos | 2018-07-26 → 2018-05-29 (-58d) | 2018-07-27 → 2018-05-29 (-59d) | 2d? → 1d | 47.82d → 0d | 75 → none | resources Omar Santiago/Fernando Nava [25%] → none; baseline start 2018-06-21 → none; baseline finish 2018-06-22 → none |
| 93 | PU - Catalogo Tipos de Tarifa | 2018-07-27 → 2018-05-29 (-59d) | 2018-07-30 → 2018-05-29 (-62d) | 2d? → 1d | 45.82d → 0d | 76 → none | resources Omar Santiago/Fernando Nava [25%] → none; baseline start 2018-06-25 → none; baseline finish 2018-06-26 → none |
| 94 | PU - Catalogo Tarifa | 2018-07-30 → 2018-05-29 (-62d) | 2018-07-31 → 2018-05-29 (-63d) | 2d? → 1d | 43.82d → 0d | 77 → none | resources Omar Santiago/Fernando Nava [25%] → none; baseline start 2018-06-25 → none; baseline finish 2018-06-26 → none |
| 95 | PU - Catalogo Conceptos de Tarifa | 2018-07-31 → 2018-05-29 (-63d) | 2018-08-01 → 2018-05-29 (-64d) | 2d? → 1d | 41.82d → 0d | 78 → none | resources Omar Santiago/Fernando Nava [25%] → none; baseline start 2018-06-28 → none; baseline finish 2018-06-29 → none |
| 96 | PU - Catalogo Choferes | 2018-08-01 → 2018-05-29 (-64d) | 2018-08-02 → 2018-05-29 (-65d) | 2d? → 1d | 39.82d → 0d | 79 → none | resources Omar Santiago/Fernando Nava [25%] → none; baseline start 2018-06-28 → none; baseline finish 2018-06-29 → none |
| 97 | PU - Catalogo Camiones | 2018-08-02 → 2018-05-29 (-65d) | 2018-08-03 → 2018-05-29 (-66d) | 2d? → 1d | 37.82d → 0d | 80 → none | resources Omar Santiago/Fernando Nava [25%] → none; baseline start 2018-07-02 → none; baseline finish 2018-07-03 → none |
| 98 | PU - Catalogo Responsables de Incidencias | 2018-08-03 → 2018-05-29 (-66d) | 2018-08-06 → 2018-05-29 (-69d) | 2d? → 1d | 35.82d → 0d | 81 → none | resources Omar Santiago/Fernando Nava [25%] → none; baseline start 2018-07-02 → none; baseline finish 2018-07-03 → none |
| 99 | PU - Catalogo Tipos de Incidencias | 2018-08-06 → 2018-05-29 (-69d) | 2018-08-07 → 2018-05-29 (-70d) | 2d? → 1d | 33.82d → 0d | 82 → none | resources Omar Santiago/Fernando Nava [25%] → none; baseline start 2018-07-04 → none; baseline finish 2018-07-05 → none |
| 100 | PU - Catalogo Tipos de Viaje | 2018-08-07 → 2018-05-29 (-70d) | 2018-08-08 → 2018-05-29 (-71d) | 2d? → 1d | 31.82d → 0d | 83 → none | resources Omar Santiago/Fernando Nava [25%] → none; baseline start 2018-07-04 → none; baseline finish 2018-07-05 → none |
| 101 | PU - Catalogo Tipos de Carga/Descarga | 2018-08-08 → 2018-05-29 (-71d) | 2018-08-09 → 2018-05-29 (-72d) | 2d? → 1d | 29.82d → 0d | 84 → none | resources Omar Santiago/Fernando Nava [25%] → none; baseline start 2018-07-06 → none; baseline finish 2018-07-09 → none |
| 102 | PU - Catalogo Clientes de Entrega | 2018-08-09 → 2018-05-29 (-72d) | 2018-08-10 → 2018-05-29 (-73d) | 2d? → 1d | 27.82d → 0d | 85 → none | resources Omar Santiago/Fernando Nava [25%] → none; baseline start 2018-07-06 → none; baseline finish 2018-07-09 → none |
| 103 | PU - Catalogo Clientes Solicidates | 2018-08-10 → 2018-05-29 (-73d) | 2018-08-13 → 2018-05-29 (-76d) | 2d? → 1d | 25.82d → 0d | 86 → none | resources Omar Santiago/Fernando Nava [25%] → none; baseline start 2018-07-06 → none; baseline finish 2018-07-09 → none |
| 105 | **Modulo Seguridad** | 2018-06-14 → 2018-05-29 (-16d) | 2018-06-21 → 2018-05-29 (-23d) | 11d? → 1d | 80.32d → 0d |  | was named TD - Configuracion en Ambiente QA o TEST; baseline start 2018-08-01 → none; baseline finish 2018-08-09 → none |
| 119 | **AT - Modulo Seguridad** | 2018-06-12 → 2018-05-29 (-14d) | 2018-06-20 → 2018-05-29 (-22d) | 11.2d? → 1d | 0.5d → 0d |  | baseline start 2018-07-05 → none; baseline finish 2018-07-12 → none |
| 120 | **AT - Roles** | 2018-06-12 → 2018-05-29 (-14d) | 2018-06-15 → 2018-05-29 (-17d) | 6.4d? → 1d | 106.12d → 0d |  | baseline start 2018-07-05 → none; baseline finish 2018-07-10 → none |
| 121 | AT - Elaboración Bocetos de Archivos | 2018-06-12 → 2018-05-29 (-14d) | 2018-06-13 → 2018-05-29 (-15d) | 2.4d? → 1d | 106.12d → 0d | 62 → none | resources Fernando Nava [31.2%] → none; baseline start 2018-07-05 → none; baseline finish 2018-07-09 → none |
| 122 | AT - Elaboración Bocetos de Pantallas | 2018-06-13 → 2018-05-29 (-15d) | 2018-06-15 → 2018-05-29 (-17d) | 4d? → 1d | 106.12d → 0d | 121 → none | resources Fernando Nava [31.2%] → none; baseline start 2018-07-09 → none; baseline finish 2018-07-10 → none |
| 123 | **AT - Configuracion** | 2018-06-12 → 2018-05-29 (-14d) | 2018-06-15 → 2018-05-29 (-17d) | 6.4d? → 1d | 0.5d → 0d |  | baseline start 2018-07-05 → none; baseline finish 2018-07-10 → none |
| 124 | AT - Elaboración Bocetos de Archivos | 2018-06-12 → 2018-05-29 (-14d) | 2018-06-13 → 2018-05-29 (-15d) | 2.4d? → 1d | 0.5d → 0d | 62 → none | resources Fernando Nava [31.2%] → none; baseline start 2018-07-05 → none; baseline finish 2018-07-09 → none |
| 125 | AT - Elaboración Bocetos de Pantallas | 2018-06-13 → 2018-05-29 (-15d) | 2018-06-15 → 2018-05-29 (-17d) | 4d? → 1d | 0.5d → 0d | 124 → none | resources Fernando Nava [31.2%] → none; baseline start 2018-07-09 → none; baseline finish 2018-07-10 → none |
| 126 | **AT - Permisos** | 2018-06-15 → 2018-05-29 (-17d) | 2018-06-20 → 2018-05-29 (-22d) | 4.8d? → 1d | 0.5d → 0d |  | baseline start 2018-07-10 → none; baseline finish 2018-07-12 → none |
| 127 | AT - Elaboración Bocetos de Archivos | 2018-06-15 → 2018-05-29 (-17d) | 2018-06-19 → 2018-05-29 (-21d) | 2.4d? → 1d | 0.5d → 0d | 125 → none | resources Fernando Nava [31.2%] → none; baseline start 2018-07-10 → none; baseline finish 2018-07-11 → none |
| 128 | AT - Elaboración Bocetos de Pantallas | 2018-06-19 → 2018-05-29 (-21d) | 2018-06-20 → 2018-05-29 (-22d) | 2.4d? → 1d | 0.5d → 0d | 127 → none | resources Fernando Nava [31.2%] → none; baseline start 2018-07-11 → none; baseline finish 2018-07-12 → none |
| 129 | **CC - Modulo Seguridad** | 2018-08-10 → 2018-05-29 (-73d) | 2018-08-17 → 2018-05-29 (-80d) | 11d? → 1d | 0.5d → 0d |  | baseline start 2018-07-10 → none; baseline finish 2018-07-16 → none |
| 132 | CC - Roles | 2018-08-10 → 2018-05-29 (-73d) | 2018-08-13 → 2018-05-29 (-76d) | 3.5d? → 1d | 0.5d → 0d | 86 → none | resources Omar Santiago [50%] → none; baseline start 2018-07-10 → none; baseline finish 2018-07-11 → none |
| 133 | CC - Configuracion | 2018-08-13 → 2018-05-29 (-76d) | 2018-08-15 → 2018-05-29 (-78d) | 3.5d? → 1d | 0.5d → 0d | 132 → none | resources Omar Santiago [50%] → none; baseline start 2018-07-10 → none; baseline finish 2018-07-11 → none |
| 134 | CC - Permisos | 2018-08-15 → 2018-05-29 (-78d) | 2018-08-17 → 2018-05-29 (-80d) | 4d? → 1d | 0.5d → 0d | 133 → none | resources Omar Santiago [50%] → none; baseline start 2018-07-12 → none; baseline finish 2018-07-16 → none |
| 135 | **PU - Modulo Seguridad** | 2018-08-13 → 2018-05-29 (-76d) | 2018-08-20 → 2018-05-29 (-83d) | 9.5d? → 1d | 14.82d → 0d |  | baseline start 2018-07-11 → none; baseline finish 2018-07-17 → none |
| 136 | PU - Roles | 2018-08-13 → 2018-05-29 (-76d) | 2018-08-14 → 2018-05-29 (-77d) | 2d? → 1d | 22.32d → 0d | 132 → none | resources Omar Santiago/Fernando Nava [25%] → none; baseline start 2018-07-11 → none; baseline finish 2018-07-12 → none |
| 137 | PU - Configuracion | 2018-08-15 → 2018-05-29 (-78d) | 2018-08-16 → 2018-05-29 (-79d) | 2d? → 1d | 18.82d → 0d | 133 → none | resources Omar Santiago/Fernando Nava [25%] → none; baseline start 2018-07-11 → none; baseline finish 2018-07-12 → none |
| 138 | PU - Permisos | 2018-08-17 → 2018-05-29 (-80d) | 2018-08-20 → 2018-05-29 (-83d) | 2d? → 1d | 14.82d → 0d | 134 → none | resources Omar Santiago/Fernando Nava [25%] → none; baseline start 2018-07-16 → none; baseline finish 2018-07-17 → none |
| 139 | LB - Liberacion Modulo 2 | 2018-06-26 → 2018-05-29 (-28d) | 2018-06-27 → 2018-05-29 (-29d) | 2d? → 1d? | 80.32d → 0d | PI - Permisos → none | was named PI - Distribucion - Asugnacion de Unidad y Carga; resources Omar Santiago/Fernando Nava/ITSC [25%] → none; baseline start 2018-08-14 → none; baseline finish 2018-08-15 → none |
| 140 | **Modulo Solicitud** | 2018-06-27 → 2018-05-29 (-29d) | 2018-06-28 → 2018-05-29 (-30d) | 2d? → 1d | 88.32d → 0d | 139 → none | was named PI - Operador CL - Operación y Descarga; resources Omar Santiago/Fernando Nava/ITSC [25%] → none; baseline start 2018-08-15 → none; baseline finish 2018-08-16 → none |
| 154 | **AT - Modulo Solicitudes** | 2018-06-20 → 2018-05-29 (-22d) | 2018-07-09 → 2018-05-29 (-41d) | 26.67d? → 1d | 0.5d → 0d |  | baseline start 2018-07-12 → none; baseline finish 2018-07-24 → none |
| 155 | **AT - Cliente - Solicitud de Transporte** | 2018-06-20 → 2018-05-29 (-22d) | 2018-06-25 → 2018-05-29 (-27d) | 5.33d? → 1d | 0.5d → 0d |  | baseline start 2018-07-12 → none; baseline finish 2018-07-17 → none |
| 156 | AT - Elaboración Bocetos de Archivos | 2018-06-20 → 2018-05-29 (-22d) | 2018-06-21 → 2018-05-29 (-23d) | 2d? → 1d | 0.5d → 0d | 128 → none | resources Fernando Nava [37.5%] → none; baseline start 2018-07-12 → none; baseline finish 2018-07-13 → none |
| 157 | AT - Elaboración Bocetos de Pantallas | 2018-06-21 → 2018-05-29 (-23d) | 2018-06-25 → 2018-05-29 (-27d) | 3.33d? → 1d | 0.5d → 0d | 156 → none | resources Fernando Nava [37.5%] → none; baseline start 2018-07-13 → none; baseline finish 2018-07-17 → none |
| 158 | **AT - Trafico - Valoracion del Viaje** | 2018-06-25 → 2018-05-29 (-27d) | 2018-06-27 → 2018-05-29 (-29d) | 5.33d? → 1d | 0.5d → 0d |  | baseline start 2018-07-12 → none; baseline finish 2018-07-17 → none |
| 159 | AT - Elaboración Bocetos de Archivos | 2018-06-25 → 2018-05-29 (-27d) | 2018-06-26 → 2018-05-29 (-28d) | 2d? → 1d | 0.5d → 0d | 157 → none | resources Fernando Nava [37.5%] → none; baseline start 2018-07-12 → none; baseline finish 2018-07-13 → none |
| 160 | AT - Elaboración Bocetos de Pantallas | 2018-06-26 → 2018-05-29 (-28d) | 2018-06-27 → 2018-05-29 (-29d) | 3.33d? → 1d | 0.5d → 0d | 159 → none | resources Fernando Nava [37.5%] → none; baseline start 2018-07-13 → none; baseline finish 2018-07-17 → none |
| 161 | **AT - Distribucion - Asugnacion de Unidad y Carga** | 2018-06-27 → 2018-05-29 (-29d) | 2018-07-02 → 2018-05-29 (-34d) | 5.33d? → 1d | 0.5d → 0d |  | baseline start 2018-07-17 → none; baseline finish 2018-07-19 → none |
| 162 | AT - Elaboración Bocetos de Archivos | 2018-06-27 → 2018-05-29 (-29d) | 2018-06-28 → 2018-05-29 (-30d) | 2d? → 1d | 0.5d → 0d | 160 → none | resources Fernando Nava [37.5%] → none; baseline start 2018-07-17 → none; baseline finish 2018-07-18 → none |
| 163 | AT - Elaboración Bocetos de Pantallas | 2018-06-28 → 2018-05-29 (-30d) | 2018-07-02 → 2018-05-29 (-34d) | 3.33d? → 1d | 0.5d → 0d | 162 → none | resources Fernando Nava [37.5%] → none; baseline start 2018-07-18 → none; baseline finish 2018-07-19 → none |
| 164 | **AT - Operador CL - Operación y Descarga** | 2018-07-02 → 2018-05-29 (-34d) | 2018-07-05 → 2018-05-29 (-37d) | 5.33d? → 1d | 0.5d → 0d |  | baseline start 2018-07-17 → none; baseline finish 2018-07-19 → none |
| 165 | AT - Elaboración Bocetos de Archivos | 2018-07-02 → 2018-05-29 (-34d) | 2018-07-03 → 2018-05-29 (-35d) | 2d? → 1d | 0.5d → 0d | 163 → none | resources Fernando Nava [37.5%] → none; baseline start 2018-07-17 → none; baseline finish 2018-07-18 → none |
| 166 | AT - Elaboración Bocetos de Pantallas | 2018-07-03 → 2018-05-29 (-35d) | 2018-07-05 → 2018-05-29 (-37d) | 3.33d? → 1d | 0.5d → 0d | 165 → none | resources Fernando Nava [37.5%] → none; baseline start 2018-07-18 → none; baseline finish 2018-07-19 → none |
| 167 | **AT - Distribucion - Cierre del Viaje y Facturacion** | 2018-07-05 → 2018-05-29 (-37d) | 2018-07-09 → 2018-05-29 (-41d) | 5.33d? → 1d | 0.5d → 0d |  | baseline start 2018-07-19 → none; baseline finish 2018-07-24 → none |
| 168 | AT - Elaboración Bocetos de Archivos | 2018-07-05 → 2018-05-29 (-37d) | 2018-07-06 → 2018-05-29 (-38d) | 2d? → 1d | 0.5d → 0d | 166 → none | resources Fernando Nava [37.5%] → none; baseline start 2018-07-19 → none; baseline finish 2018-07-23 → none |
| 169 | AT - Elaboración Bocetos de Pantallas | 2018-07-06 → 2018-05-29 (-38d) | 2018-07-09 → 2018-05-29 (-41d) | 3.33d? → 1d | 0.5d → 0d | 168 → none | resources Fernando Nava [37.5%] → none; baseline start 2018-07-23 → none; baseline finish 2018-07-24 → none |

| ID | Task | Start | Finish | Duration | Total float | Predecessors | Other |
| --- | --- | --- | --- | --- | --- | --- | --- |
| 170 | **CC - Modulo Solicitudes** | 2018-08-17 → 2018-05-29 (-80d) | 2018-08-29 → 2018-05-29 (-92d) | 16.32d? → 1d | 0.5d → 0d |  | baseline start 2018-07-17 → none; baseline finish 2018-07-30 → none |
| 173 | CC - Cliente - Solicitud de Transporte | 2018-08-17 → 2018-05-29 (-80d) | 2018-08-20 → 2018-05-29 (-83d) | 2d? → 1d | 0.5d → 0d | 134 → none | resources Omar Santiago [87.5%] → none; baseline start 2018-07-17 → none; baseline finish 2018-07-18 → none |
| 174 | CC - Trafico - Valoracion del Viaje | 2018-08-20 → 2018-05-29 (-83d) | 2018-08-21 → 2018-05-29 (-84d) | 2d? → 1d | 0.5d → 0d | 173 → none | resources Omar Santiago [87.5%] → none; baseline start 2018-07-17 → none; baseline finish 2018-07-18 → none |
| 175 | CC - Distribucion - Asugnacion de Unidad y Carga | 2018-08-21 → 2018-05-29 (-84d) | 2018-08-22 → 2018-05-29 (-85d) | 2d? → 1d | 0.5d → 0d | 174 → none | resources Omar Santiago [87.5%] → none; baseline start 2018-07-19 → none; baseline finish 2018-07-20 → none |
| 176 | CC - Operador CL - Operación y Descarga | 2018-08-22 → 2018-05-29 (-85d) | 2018-08-23 → 2018-05-29 (-86d) | 2d? → 1d | 0.5d → 0d | 175 → none | resources Omar Santiago [87.5%] → none; baseline start 2018-07-19 → none; baseline finish 2018-07-20 → none |
| 177 | CC - Distribucion - Cierre del Viaje y Facturacion | 2018-08-23 → 2018-05-29 (-86d) | 2018-08-24 → 2018-05-29 (-87d) | 2d? → 1d | 0.5d → 0d | 176 → none | resources Omar Santiago [87.5%] → none; baseline start 2018-07-24 → none; baseline finish 2018-07-25 → none |
| 178 | **CC - Primer Check point operativo** | 2018-08-24 → 2018-05-29 (-87d) | 2018-08-28 → 2018-05-29 (-91d) | 4d? → 1d | 0.5d → 0d |  | baseline start 2018-07-25 → none; baseline finish 2018-07-27 → none |
| 179 | CC - Primer Check point operativo | 2018-08-24 → 2018-05-29 (-87d) | 2018-08-27 → 2018-05-29 (-90d) | 2d? → 1d | 0.5d → 0d | 177 → none | resources Omar Santiago/ITSC [25%] → none; baseline start 2018-07-25 → none; baseline finish 2018-07-26 → none |
| 180 | CC - Actualizacion de los puntos del primer Ckeckpoint | 2018-08-27 → 2018-05-29 (-90d) | 2018-08-28 → 2018-05-29 (-91d) | 2d? → 1d | 0.5d → 0d | 179 → none | resources Omar Santiago/ITSC [87.5%] → none; baseline start 2018-07-26 → none; baseline finish 2018-07-27 → none |
| 181 | **CC - Segundo Check point operativo** | 2018-08-28 → 2018-05-29 (-91d) | 2018-08-29 → 2018-05-29 (-92d) | 2.32d? → 1d | 0.5d → 0d |  | baseline start 2018-07-27 → none; baseline finish 2018-07-30 → none |
| 182 | CC - Segundo Check point operativo | 2018-08-28 → 2018-05-29 (-91d) | 2018-08-28 → 2018-05-29 (-91d) | 0.57d? → 1d | 0.5d → 0d | 180 → none | resources Omar Santiago/ITSC [87.5%] → none; baseline start 2018-07-27 → none; baseline finish 2018-07-27 → none |
| 183 | CC - Actualizacion de los puntos del segundo Check point operativo | 2018-08-28 → 2018-05-29 (-91d) | 2018-08-29 → 2018-05-29 (-92d) | 1.75d? → 1d | 0.5d → 0d | 182 → none | resources Omar Santiago/ITSC → none; baseline start 2018-07-27 → none; baseline finish 2018-07-30 → none |
| 184 | **PU - Modulo Solicitudes** | 2018-08-20 → 2018-05-29 (-83d) | 2018-08-27 → 2018-05-29 (-90d) | 10d? → 1d | 4.82d → 0d |  | baseline start 2018-07-18 → none; baseline finish 2018-07-26 → none |
| 185 | PU - Cliente - Solicitud de Transporte | 2018-08-20 → 2018-05-29 (-83d) | 2018-08-21 → 2018-05-29 (-84d) | 2d? → 1d | 12.82d → 0d | 173 → none | resources Omar Santiago/Fernando Nava [37.5%] → none; baseline start 2018-07-18 → none; baseline finish 2018-07-19 → none |
| 186 | PU - Trafico - Valoracion del Viaje | 2018-08-21 → 2018-05-29 (-84d) | 2018-08-22 → 2018-05-29 (-85d) | 2d? → 1d | 10.82d → 0d | 174 → none | resources Omar Santiago/Fernando Nava [37.5%] → none; baseline start 2018-07-18 → none; baseline finish 2018-07-19 → none |
| 187 | PU - Distribucion - Asugnacion de Unidad y Carga | 2018-08-22 → 2018-05-29 (-85d) | 2018-08-23 → 2018-05-29 (-86d) | 2d? → 1d | 8.82d → 0d | 175 → none | resources Omar Santiago/Fernando Nava [37.5%] → none; baseline start 2018-07-20 → none; baseline finish 2018-07-23 → none |
| 188 | PU - Operador CL - Operación y Descarga | 2018-08-23 → 2018-05-29 (-86d) | 2018-08-24 → 2018-05-29 (-87d) | 2d? → 1d | 6.82d → 0d | 176 → none | resources Omar Santiago/Fernando Nava [37.5%] → none; baseline start 2018-07-20 → none; baseline finish 2018-07-23 → none |
| 189 | PU - Distribucion - Cierre del Viaje y Facturacion | 2018-08-24 → 2018-05-29 (-87d) | 2018-08-27 → 2018-05-29 (-90d) | 2d? → 1d | 4.82d → 0d | 177 → none | resources Omar Santiago/Fernando Nava [37.5%] → none; baseline start 2018-07-25 → none; baseline finish 2018-07-26 → none |
| 205 | **AT - Modulo Alarmas/Reportes/Indicadores de gestión** | 2018-07-09 → 2018-05-29 (-41d) | 2018-07-16 → 2018-05-29 (-48d) | 9.33d? → 1d | 0.5d → 0d |  | baseline start 2018-07-24 → none; baseline finish 2018-07-30 → none |
| 206 | **AT - Alarmas** | 2018-07-09 → 2018-05-29 (-41d) | 2018-07-12 → 2018-05-29 (-44d) | 4.67d? → 1d | 69.99d → 0d |  | baseline start 2018-07-24 → none; baseline finish 2018-07-26 → none |
| 207 | AT - Elaboración Bocetos de Archivos | 2018-07-09 → 2018-05-29 (-41d) | 2018-07-11 → 2018-05-29 (-43d) | 2.67d? → 1d | 69.99d → 0d | 169 → none | resources Fernando Nava [37.5%] → none; baseline start 2018-07-24 → none; baseline finish 2018-07-25 → none |
| 208 | AT - Elaboración Bocetos de Pantallas | 2018-07-11 → 2018-05-29 (-43d) | 2018-07-12 → 2018-05-29 (-44d) | 2d? → 1d | 69.99d → 0d | 207 → none | resources Fernando Nava [37.5%] → none; baseline start 2018-07-25 → none; baseline finish 2018-07-26 → none |
| 209 | **AT - Reportes** | 2018-07-09 → 2018-05-29 (-41d) | 2018-07-12 → 2018-05-29 (-44d) | 4.67d? → 1d | 0.5d → 0d |  | baseline start 2018-07-24 → none; baseline finish 2018-07-26 → none |
| 210 | AT - Elaboración Bocetos de Archivos | 2018-07-09 → 2018-05-29 (-41d) | 2018-07-11 → 2018-05-29 (-43d) | 2.67d? → 1d | 0.5d → 0d | 169 → none | resources Fernando Nava [37.5%] → none; baseline start 2018-07-24 → none; baseline finish 2018-07-25 → none |
| 211 | AT - Elaboración Bocetos de Pantallas | 2018-07-11 → 2018-05-29 (-43d) | 2018-07-12 → 2018-05-29 (-44d) | 2d? → 1d | 0.5d → 0d | 210 → none | resources Fernando Nava [37.5%] → none; baseline start 2018-07-25 → none; baseline finish 2018-07-26 → none |
| 212 | **AT - Indicadores de gestión** | 2018-07-12 → 2018-05-29 (-44d) | 2018-07-16 → 2018-05-29 (-48d) | 4.67d? → 1d | 0.5d → 0d |  | baseline start 2018-07-26 → none; baseline finish 2018-07-30 → none |
| 213 | AT - Elaboración Bocetos de Archivos | 2018-07-12 → 2018-05-29 (-44d) | 2018-07-13 → 2018-05-29 (-45d) | 2.67d? → 1d | 0.5d → 0d | 211 → none | resources Fernando Nava [37.5%] → none; baseline start 2018-07-26 → none; baseline finish 2018-07-27 → none |
| 214 | AT - Elaboración Bocetos de Pantallas | 2018-07-13 → 2018-05-29 (-45d) | 2018-07-16 → 2018-05-29 (-48d) | 2d? → 1d | 0.5d → 0d | 213 → none | resources Fernando Nava [37.5%] → none; baseline start 2018-07-27 → none; baseline finish 2018-07-30 → none |
| 215 | **CC - Modulo Alarmas/Reportes/Indicadores de gestión** | 2018-06-08 → 2018-05-29 (-10d) | 2018-06-13 → 2018-05-29 (-15d) | 6d? → 1d | 80.32d → 0d |  | baseline start 2018-07-26 → none; baseline finish 2018-07-31 → none |
| 218 | CC - Alarmas | 2018-06-08 → 2018-05-29 (-10d) | 2018-06-11 → 2018-05-29 (-13d) | 2d? → 1d | 80.32d → 0d | 51 → none | resources Omar Santiago [75%] → none; baseline start 2018-07-26 → none; baseline finish 2018-07-27 → none |
| 219 | CC - Reportes | 2018-06-11 → 2018-05-29 (-13d) | 2018-06-12 → 2018-05-29 (-14d) | 2d? → 1d | 80.32d → 0d | 218 → none | resources Omar Santiago [75%] → none; baseline start 2018-07-26 → none; baseline finish 2018-07-27 → none |
| 220 | CC - Indicadores de gestión | 2018-06-12 → 2018-05-29 (-14d) | 2018-06-13 → 2018-05-29 (-15d) | 2d? → 1d | 80.32d → 0d | 219 → none | resources Omar Santiago [75%] → none; baseline start 2018-07-30 → none; baseline finish 2018-07-31 → none |
| 221 | **PU - Modulo Alarmas/Reportes/Indicadores de gestión** | 2018-06-11 → 2018-05-29 (-13d) | 2018-06-14 → 2018-05-29 (-16d) | 6d? → 1d | 84.32d → 0d |  | baseline start 2018-07-27 → none; baseline finish 2018-08-01 → none |
| 222 | PU - Alarmas | 2018-06-11 → 2018-05-29 (-13d) | 2018-06-12 → 2018-05-29 (-14d) | 2d? → 1d | 113.32d → 0d | 218 → none | resources Omar Santiago/Fernando Nava [37.5%] → none; baseline start 2018-07-27 → none; baseline finish 2018-07-30 → none |
| 223 | PU - Reportes | 2018-06-12 → 2018-05-29 (-14d) | 2018-06-13 → 2018-05-29 (-15d) | 2d? → 1d | 111.32d → 0d | 219 → none | resources Omar Santiago/Fernando Nava [37.5%] → none; baseline start 2018-07-27 → none; baseline finish 2018-07-30 → none |
| 224 | PU - Indicadores de gestión | 2018-06-13 → 2018-05-29 (-15d) | 2018-06-14 → 2018-05-29 (-16d) | 2d? → 1d | 80.32d → 0d | 220 → none | resources Omar Santiago/Fernando Nava [37.5%] → none; baseline start 2018-07-31 → none; baseline finish 2018-08-01 → none |

## Version 7 (saved 2018-05-30, file PLAN_AT_CC_v1.mpp)

Note of the change: Merge pull request #1 from ProyectoInicial/master

Last finish stays 2018-05-29.

Changed:

| ID | Task | Other |
| --- | --- | --- |
| 5 | AT - Requerimientos de Negocio (Junta de Entendimiento) | was named AT - Requerimientos de Negocio |
| 6 | AT - Casos de Uso (Junta de Entendimiento) | was named AT - Casos de Uso |
| 108 | AT - Requerimientos de Negocio (Junta de Entendimiento) | was named AT - Requerimientos de Negocio |
| 109 | AT - Casos de Uso (Junta de Entendimiento) | was named AT - Casos de Uso |
| 143 | AT - Requerimientos de Negocio (Junta de Entendimiento) | was named AT - Requerimientos de Negocio |
| 144 | AT - Casos de Uso (Junta de Entendimiento) | was named AT - Casos de Uso |
| 194 | AT - Requerimientos de Negocio (Junta de Entendimiento) | was named AT - Requerimientos de Negocio |
| 195 | AT - Casos de Uso (Junta de Entendimiento) | was named AT - Casos de Uso |

## Version 8 (saved 2018-05-30, file Plan_AN_AT_CC.xls.mpp)

Note of the change: Merge pull request #1 from ProyectoInicial/master

Last finish 2018-05-29 → 2018-08-22 (+85d).

Added:

| ID | Task | Duration | Start | Finish | Predecessors | Resources |
| --- | --- | --- | --- | --- | --- | --- |
| 2 | **AN_Analisis** | 50.61d? | 2018-05-24 A | 2018-08-02 |  |  |
| 3 | **AN Analisis de Negocio** | 5d | 2018-05-24 | 2018-05-30 |  |  |
| 4 | AN - Requerimientos de Negocio | 1d | 2018-05-24 | 2018-05-24 |  | ITSC [25%] |
| 5 | AN - Casos de Uso | 1d | 2018-05-25 | 2018-05-25 | 4 | ITSC [12.5%] |
| 6 | AT - Revisión interna | 1d | 2018-05-28 | 2018-05-28 | 5 | ITSC [12.5%] |
| 7 | AT - Ajustes de comentarios del usuario | 1d | 2018-05-29 | 2018-05-29 | 6 | ITSC [12.5%]; cliente |
| 8 | AT - Peer Review y Vo Bo | 1d | 2018-05-30 | 2018-05-30 | 7 | ITSC; Omar Santiago |
| 11 | AT - Requerimientos de Negocio | 1d | 2018-05-31 | 2018-05-31 | 8 | Omar Santiago/Fernando Nava [75%] |
| 12 | AT - Casos de Uso | 8.44d? | 2018-06-01 | 2018-06-13 | 11 | Omar Santiago/Fernando Nava |
| 105 | AT - Revisión con el usuario | 1d? | 2018-07-30 | 2018-07-31 | 78, 94, 104 | Omar Santiago/Fernando Nava/ITSC |
| 106 | AT - Ajustes de comentarios del usuario | 1d? | 2018-07-31 | 2018-08-01 | 105 | Omar Santiago/Fernando Nava [37.5%] |
| 107 | AT - Peer Review y Vo Bo | 1d? | 2018-08-01 | 2018-08-02 | 106 | Omar Santiago/Fernando Nava/ITSC |
| 108 | Validacion de documentacion, ultimos ajustes | 1d? | 2018-08-02 | 2018-08-03 | 107 | Omar Santiago/Fernando Nava [75%] |
| 186 | Instalacion y Configuracion de Java 7 u 8 | 1d? | 2018-08-01 | 2018-08-02 | 183 | Omar Santiago [75%] |
| 187 | Instalacion y Configuracion de Mysql y complementos | 1d? | 2018-08-02 | 2018-08-03 | 186 | Omar Santiago [75%] |
| 188 | Instalacion y Configuracion de Apacte Tomcat | 1d? | 2018-08-03 | 2018-08-06 | 187 | Omar Santiago [75%] |
| 189 | Instalacion y Configuracion AppWeb v1 | 2.5d? | 2018-08-06 | 2018-08-09 | 188 | Omar Santiago |
| 190 | **PI - Pruebas Integrales** | 7d? | 2018-08-09 | 2018-08-20 |  |  |
| 191 | **PI - Modulo Catalogos Maestros** | 2d? | 2018-08-09 | 2018-08-13 |  |  |
| 192 | PI - Catalogo Rol | 1d? | 2018-08-09 | 2018-08-10 | 185 | Omar Santiago/Fernando Nava/ITSC [12.5%] |
| 193 | PI - Catalogo Actores | 1d? | 2018-08-09 | 2018-08-10 | 185 | Omar Santiago/Fernando Nava/ITSC [12.5%] |
| 194 | PI - Catalogo Actores-Roles | 1d? | 2018-08-09 | 2018-08-10 | 185 | Omar Santiago/Fernando Nava/ITSC [12.5%] |
| 195 | PI - Catalogo Contratos | 1d? | 2018-08-09 | 2018-08-10 | 185 | Omar Santiago/Fernando Nava/ITSC [12.5%] |
| 196 | PI - Catalogo Tipos de Tarifa | 1d? | 2018-08-09 | 2018-08-10 | 185 | Omar Santiago/Fernando Nava/ITSC [12.5%] |
| 197 | PI - Catalogo Tarifa | 1d? | 2018-08-09 | 2018-08-10 | 185 | Omar Santiago/Fernando Nava/ITSC [12.5%] |
| 198 | PI - Catalogo Conceptos de Tarifa | 1d? | 2018-08-09 | 2018-08-10 | 185 | Omar Santiago/Fernando Nava/ITSC [12.5%] |
| 199 | PI - Catalogo Choferes | 1d? | 2018-08-09 | 2018-08-10 | 185 | Omar Santiago/Fernando Nava/ITSC [12.5%] |
| 200 | PI - Catalogo Camiones | 1d? | 2018-08-09 | 2018-08-10 | 185 | Omar Santiago/Fernando Nava/ITSC [12.5%] |
| 201 | PI - Catalogo Responsables de Incidencias | 1d? | 2018-08-09 | 2018-08-10 | 185 | Omar Santiago/Fernando Nava/ITSC [12.5%] |
| 202 | PI - Catalogo Tipos de Incidencias | 1d? | 2018-08-10 | 2018-08-13 | 201 | Omar Santiago/Fernando Nava/ITSC [12.5%] |
| 203 | PI - Catalogo Tipos de Viaje | 1d? | 2018-08-10 | 2018-08-13 | 201 | Omar Santiago/Fernando Nava/ITSC [12.5%] |
| 204 | PI - Catalogo Tipos de Carga/Descarga | 1d? | 2018-08-10 | 2018-08-13 | 201 | Omar Santiago/Fernando Nava/ITSC [12.5%] |
| 205 | PI - Catalogo Clientes de Entrega | 1d? | 2018-08-10 | 2018-08-13 | 201 | Omar Santiago/Fernando Nava/ITSC [12.5%] |
| 206 | PI - Catalogo Clientes Solicidates | 1d? | 2018-08-10 | 2018-08-13 | 201 | Omar Santiago/Fernando Nava/ITSC [12.5%] |
| 207 | **PI - Modulo Seguridad** | 1d? | 2018-08-13 | 2018-08-14 |  |  |
| 208 | PI - Roles | 1d? | 2018-08-13 | 2018-08-14 | 206 | Omar Santiago/Fernando Nava/ITSC [12.5%] |
| 209 | PI - Configuracion | 1d? | 2018-08-13 | 2018-08-14 | 206 | Omar Santiago/Fernando Nava/ITSC [12.5%] |
| 210 | PI - Permisos | 1d? | 2018-08-13 | 2018-08-14 | 206 | Omar Santiago/Fernando Nava/ITSC [12.5%] |
| 211 | **PI - Modulo Solicitudes** | 2d? | 2018-08-14 | 2018-08-16 |  |  |
| 212 | PI - Cliente - Solicitud de Transporte | 1d? | 2018-08-14 | 2018-08-15 | 210 | Omar Santiago/Fernando Nava/ITSC [25%] |
| 213 | PI - Trafico - Valoracion del Viaje | 1d? | 2018-08-14 | 2018-08-15 | 210 | Omar Santiago/Fernando Nava/ITSC [25%] |
| 216 | PI - Distribucion - Cierre del Viaje y Facturacion | 1d? | 2018-08-15 | 2018-08-16 | 214 | Omar Santiago/Fernando Nava/ITSC [25%] |
| 217 | **PI - Modulo Alarmas/Reportes/Indicadores de gestión** | 2d? | 2018-08-16 | 2018-08-20 |  |  |
| 218 | PI - Alarmas | 1d? | 2018-08-16 | 2018-08-17 | 216 | Omar Santiago/Fernando Nava/ITSC [25%] |
| 219 | PI - Reportes | 1d? | 2018-08-16 | 2018-08-17 | 216 | Omar Santiago/Fernando Nava/ITSC [25%] |
| 220 | PI - Indicadores de gestión | 1d? | 2018-08-17 | 2018-08-20 | 219 | Omar Santiago/Fernando Nava/ITSC [25%] |
| 221 | PI - Cierre Pruebas Integrales | 1d? | 2018-08-20 | 2018-08-21 | 220 | Omar Santiago/Fernando Nava/ITSC [25%] |
| 222 | **LB - Liberacion a Produccion** | 1d? | 2018-08-21 | 2018-08-22 |  |  |
| 223 | LB - Liberacion y Cierre | 1d? | 2018-08-21 | 2018-08-22 | 221 | Omar Santiago/Fernando Nava/ITSC |

Removed: 6 AT - Casos de Uso (Junta de Entendimiento); 104 LB - Liberacion Modulo 1; 106 AT Analisis de Tecnico; 107 IAT - Revisión de documentación entregada por Negocio; 108 AT - Requerimientos de Negocio (Junta de Entendimiento); 109 AT - Casos de Uso (Junta de Entendimiento); 110 AT - Actualizacion de propuesta de Arquitectura de Solucion; 111 AT - Requerimientos tecnicos; 112 AT - Analisis tecnico; 113 AT - Requerimientos de solucion; 114 AT - Escalabilidad; 115 AT - Modelado BD; 116 AT - Herramientas para solucion; 117 AT - Aplicación responsiva para navegadores web; 118 AT - Peer Review y Vo Bo Arquitectura de Solucion; 130 Diseño y Construcción; 131 CC - Revision del documento de Arquitectura de Solucion; 141 AT Analisis de Tecnico; 142 IAT - Revisión de documentación entregada por Negocio; 143 AT - Requerimientos de Negocio (Junta de Entendimiento); 144 AT - Casos de Uso (Junta de Entendimiento); 145 AT - Actualizacion de propuesta de Arquitectura de Solucion; 146 AT - Requerimientos tecnicos; 147 AT - Analisis tecnico; 148 AT - Requerimientos de solucion; 149 AT - Escalabilidad; 150 AT - Modelado BD; 151 AT - Herramientas para solucion; 152 AT - Aplicación responsiva para navegadores web; 153 AT - Peer Review y Vo Bo Arquitectura de Solucion; 171 Diseño y Construcción; 172 CC - Revision del documento de Arquitectura de Solucion; 190 LB - Liberacion Modulo 2; 191 Modulo Alarmas; 192 AT Analisis de Tecnico; 193 IAT - Revisión de documentación entregada por Negocio; 194 AT - Requerimientos de Negocio (Junta de Entendimiento); 195 AT - Casos de Uso (Junta de Entendimiento); 196 AT - Actualizacion de propuesta de Arquitectura de Solucion; 197 AT - Requerimientos tecnicos; 198 AT - Analisis tecnico; 199 AT - Requerimientos de solucion; 200 AT - Escalabilidad; 201 AT - Modelado BD; 202 AT - Herramientas para solucion; 203 AT - Aplicación responsiva para navegadores web; 204 AT - Peer Review y Vo Bo Arquitectura de Solucion; 216 Diseño y Construcción; 217 CC - Revision del documento de Arquitectura de Solucion; 225 LB - Liberacion Modulo 3

Changed:

| ID | Task | Start | Finish | Duration | Complete | Total float | Predecessors | Other |
| --- | --- | --- | --- | --- | --- | --- | --- | --- |
| 1 | **001-ITSC_TMS Plan de Analisis y Desarrollo** | 2018-05-29 → 2018-05-24 A (-5d) | 2018-05-29 → 2018-08-21 (+84d) | 1d? → 63.11d? |  | 0d → 1d |  |  |
| 9 | **AT Analisis de Tecnico** | 2018-05-29 → 2018-05-24 A (-5d) | 2018-05-29 → 2018-08-02 (+65d) | 1d → 50.61d? | 0% → 1% | 0d → 13.5d |  |  |
| 10 | **IAT - Revisión de documentación entregada por Negocio** | 2018-05-29 → 2018-05-31 (+2d) | 2018-05-29 → 2018-06-13 (+15d) | 1d → 9.44d? |  |  |  |  |
| 13 | **AT - Elaboracion de propuesta de Arquitectura de Solucion** | 2018-05-29 → 2018-06-13 (+15d) | 2018-05-29 → 2018-06-14 (+16d) | 1d → 1d? |  |  | none → 12 |  |
| 14 | AT - Requerimientos tecnicos | 2018-05-29 → 2018-06-13 (+15d) | 2018-05-29 → 2018-06-14 (+16d) | 1d → 1d? |  |  |  | resources none → Omar Santiago [87.5%] |
| 15 | AT - Analisis tecnico | 2018-05-29 → 2018-06-13 (+15d) | 2018-05-29 → 2018-06-14 (+16d) | 1d → 1d? |  |  |  | resources none → Omar Santiago [87.5%] |
| 16 | AT - Requerimientos de solucion | 2018-05-29 → 2018-06-13 (+15d) | 2018-05-29 → 2018-06-14 (+16d) | 1d → 1d? |  |  |  | resources none → Omar Santiago [87.5%] |
| 17 | AT - Escalabilidad | 2018-05-29 → 2018-06-13 (+15d) | 2018-05-29 → 2018-06-14 (+16d) | 1d → 1d? |  |  |  | resources none → Omar Santiago [87.5%] |
| 18 | AT - Modelado BD | 2018-05-29 → 2018-06-13 (+15d) | 2018-05-29 → 2018-06-14 (+16d) | 1d → 1d? |  |  |  | resources none → Omar Santiago [87.5%] |
| 19 | AT - Herramientas para solucion | 2018-05-29 → 2018-06-13 (+15d) | 2018-05-29 → 2018-06-14 (+16d) | 1d → 1d? |  |  |  | resources none → Omar Santiago [62.5%] |
| 20 | AT - Aplicación responsiva para navegadores web | 2018-05-29 → 2018-06-13 (+15d) | 2018-05-29 → 2018-06-14 (+16d) | 1d → 1d? |  |  |  | resources none → Omar Santiago [62.5%] |
| 21 | AT - Peer Review y Vo Bo Arquitectura de Solucion | 2018-05-29 → 2018-06-14 (+16d) | 2018-05-29 → 2018-06-15 (+17d) |  |  |  | none → 13 | resources none → Omar Santiago [25%] |
| 22 | **AT - Elaboración de documentos AT** | 2018-05-29 → 2018-05-24 A (-5d) | 2018-05-29 → 2018-07-30 (+62d) | 1d → 47.61d? | 0% → 1% | 0d → 16.5d |  |  |
| 23 | **AT - Modulo Catalogos Maestros** | 2018-05-29 → 2018-05-24 A (-5d) | 2018-05-29 → 2018-07-05 (+37d) | 1d → 30.81d? | 0% → 1% | 0d → 33.3d |  |  |
| 24 | **AT - Catalogo Rol** | 2018-05-29 → 2018-06-15 (+17d) | 2018-05-29 → 2018-06-19 (+21d) | 1d → 2.4d |  | 0d → 43.27d |  |  |
| 25 | AT - Elaboración Bocetos de Archivos | 2018-05-29 → 2018-06-15 (+17d) | 2018-05-29 → 2018-06-18 (+20d) | 1d → 1.2d |  | 0d → 38.77d | none → 21 | resources none → Fernando Nava [31.2%] |
| 26 | AT - Elaboración Bocetos de Pantallas | 2018-05-29 → 2018-06-18 (+20d) | 2018-05-29 → 2018-06-19 (+21d) | 1d → 1.2d |  | 0d → 38.77d | none → 25 | resources none → Fernando Nava [31.2%] |
| 27 | **AT - Catalogo Actores** | 2018-05-29 → 2018-06-15 (+17d) | 2018-05-29 → 2018-06-18 (+20d) | 1d → 0.75d? |  |  |  |  |
| 28 | AT - Elaboración Bocetos de Archivos | 2018-05-29 → 2018-06-15 (+17d) | 2018-05-29 → 2018-06-15 (+17d) | 1d → 0.38d? |  |  | none → 21 | resources none → Fernando Nava |
| 29 | AT - Elaboración Bocetos de Pantallas | 2018-05-29 → 2018-06-15 (+17d) | 2018-05-29 → 2018-06-18 (+20d) | 1d → 0.38d? |  |  | none → 28 | resources none → Fernando Nava |
| 30 | **AT - Catalogo Actores-Roles** | 2018-05-29 → 2018-06-18 (+20d) | 2018-05-29 → 2018-06-20 (+22d) | 1d → 2.4d? |  | 0d → 42.52d |  |  |
| 31 | AT - Elaboración Bocetos de Archivos | 2018-05-29 → 2018-06-18 (+20d) | 2018-05-29 → 2018-06-19 (+21d) | 1d → 1.2d? |  | 0d → 38.02d | none → 29 | resources none → Fernando Nava [31.2%] |
| 32 | AT - Elaboración Bocetos de Pantallas | 2018-05-29 → 2018-06-19 (+21d) | 2018-05-29 → 2018-06-20 (+22d) | 1d → 1.2d? |  | 0d → 38.02d | none → 31 | resources none → Fernando Nava [31.2%] |
| 33 | **AT - Catalogo Contratos** | 2018-05-29 → 2018-06-18 (+20d) | 2018-05-29 → 2018-06-20 (+22d) | 1d → 2.4d? |  |  |  |  |
| 34 | AT - Elaboración Bocetos de Archivos | 2018-05-29 → 2018-06-18 (+20d) | 2018-05-29 → 2018-06-19 (+21d) | 1d → 1.2d? |  |  | none → 29 | resources none → Fernando Nava [31.2%] |
| 35 | AT - Elaboración Bocetos de Pantallas | 2018-05-29 → 2018-06-19 (+21d) | 2018-05-29 → 2018-06-20 (+22d) | 1d → 1.2d? |  |  | none → 34 | resources none → Fernando Nava [31.2%] |
| 36 | **AT - Catalogo Tipos de Tarifa** | 2018-05-29 → 2018-06-20 (+22d) | 2018-05-29 → 2018-06-22 (+24d) | 1d → 2.4d? |  | 0d → 40.12d |  |  |
| 37 | AT - Elaboración Bocetos de Archivos | 2018-05-29 → 2018-06-20 (+22d) | 2018-05-29 → 2018-06-21 (+23d) | 1d → 1.2d? |  | 0d → 35.62d | none → 35 | resources none → Fernando Nava [31.2%] |
| 38 | AT - Elaboración Bocetos de Pantallas | 2018-05-29 → 2018-06-21 (+23d) | 2018-05-29 → 2018-06-22 (+24d) | 1d → 1.2d? |  | 0d → 35.62d | none → 37 | resources none → Fernando Nava [31.2%] |
| 39 | **AT - Catalogo Tarifa** | 2018-05-29 → 2018-06-20 (+22d) | 2018-05-29 → 2018-06-22 (+24d) | 1d → 2.4d? |  |  |  |  |
| 40 | AT - Elaboración Bocetos de Archivos | 2018-05-29 → 2018-06-20 (+22d) | 2018-05-29 → 2018-06-21 (+23d) | 1d → 1.2d? |  |  | none → 35 | resources none → Fernando Nava [31.2%] |
| 41 | AT - Elaboración Bocetos de Pantallas | 2018-05-29 → 2018-06-21 (+23d) | 2018-05-29 → 2018-06-22 (+24d) | 1d → 1.2d? |  |  | none → 40 | resources none → Fernando Nava [31.2%] |
| 42 | **AT - Catalogo Conceptos de Tarifa** | 2018-05-29 → 2018-06-22 (+24d) | 2018-05-29 → 2018-06-27 (+29d) | 1d → 2.4d? |  |  |  |  |
| 43 | AT - Elaboración Bocetos de Archivos | 2018-05-29 → 2018-06-22 (+24d) | 2018-05-29 → 2018-06-26 (+28d) | 1d → 1.2d? |  |  | none → 41 | resources none → Fernando Nava [31.2%] |
| 44 | AT - Elaboración Bocetos de Pantallas | 2018-05-29 → 2018-06-26 (+28d) | 2018-05-29 → 2018-06-27 (+29d) | 1d → 1.2d? |  | 0d → 33.23d | none → 43 | resources none → Fernando Nava [31.2%] |
| 45 | **AT - Catalogo Choferes** | 2018-05-29 → 2018-06-22 (+24d) | 2018-05-29 → 2018-06-27 (+29d) | 1d → 2.4d? |  | 0d → 1.2d |  |  |
| 46 | AT - Elaboración Bocetos de Archivos | 2018-05-29 → 2018-06-22 (+24d) | 2018-05-29 → 2018-06-26 (+28d) | 1d → 1.2d? |  | 0d → 36.42d | none → 41 | resources none → Fernando Nava [31.2%] |
| 47 | AT - Elaboración Bocetos de Pantallas | 2018-05-29 → 2018-06-26 (+28d) | 2018-05-29 → 2018-06-27 (+29d) | 1d → 1.2d? |  |  | none → 43 | resources none → Fernando Nava [31.2%] |
| 48 | **AT - Catalogo Camiones** | 2018-05-29 → 2018-06-27 (+29d) | 2018-05-29 → 2018-06-29 (+31d) | 1d → 2.4d? |  | 0d → 35.33d |  |  |
| 49 | AT - Elaboración Bocetos de Archivos | 2018-05-29 → 2018-06-27 (+29d) | 2018-05-29 → 2018-06-28 (+30d) | 1d → 1.2d? |  | 0d → 30.82d | none → 47 | resources none → Fernando Nava [31.2%] |
| 50 | AT - Elaboración Bocetos de Pantallas | 2018-05-29 → 2018-06-28 (+30d) | 2018-05-29 → 2018-06-29 (+31d) | 1d → 1.2d? |  | 0d → 30.82d | none → 49 | resources none → Fernando Nava [31.2%] |
| 51 | **AT - Catalogo Responsables de Incidencias** | 2018-05-29 → 2018-05-24 A (-5d) | 2018-05-29 → 2018-06-29 (+31d) | 1d → 26.01d? | 0% → 24% |  |  |  |
| 52 | AT - Elaboración Bocetos de Archivos | 2018-05-29 → 2018-05-24 A (-5d) | 2018-05-29 → 2018-06-28 (+30d) | 1d → 1.06d? | 0% → 24% |  | none → 47 | resources none → Fernando Nava |
| 53 | AT - Elaboración Bocetos de Pantallas | 2018-05-29 → 2018-05-24 A (-5d) | 2018-05-29 → 2018-06-29 (+31d) | 1d → 1.06d? | 0% → 24% |  | none → 52 | resources none → Fernando Nava |
| 54 | **AT - Catalogo Tipos de Incidencias** | 2018-05-29 → 2018-06-29 (+31d) | 2018-05-29 → 2018-07-03 (+35d) | 1d → 2.4d? |  | 0d → 33.7d |  |  |
| 55 | AT - Elaboración Bocetos de Archivos | 2018-05-29 → 2018-06-29 (+31d) | 2018-05-29 → 2018-07-02 (+34d) | 1d → 1.2d? |  | 0d → 29.2d | none → 53 | resources none → Fernando Nava [31.2%] |
| 56 | AT - Elaboración Bocetos de Pantallas | 2018-05-29 → 2018-07-02 (+34d) | 2018-05-29 → 2018-07-03 (+35d) | 1d → 1.2d? |  | 0d → 29.2d | none → 55 | resources none → Fernando Nava [31.2%] |
| 57 | **AT - Catalogo Tipos de Viaje** | 2018-05-29 → 2018-06-29 (+31d) | 2018-05-29 → 2018-07-03 (+35d) | 1d → 2.4d? |  |  |  |  |
| 58 | AT - Elaboración Bocetos de Archivos | 2018-05-29 → 2018-06-29 (+31d) | 2018-05-29 → 2018-07-02 (+34d) | 1d → 1.2d? |  |  | none → 53 | resources none → Fernando Nava [31.2%] |
| 59 | AT - Elaboración Bocetos de Pantallas | 2018-05-29 → 2018-07-02 (+34d) | 2018-05-29 → 2018-07-03 (+35d) | 1d → 1.2d? |  |  | none → 58 | resources none → Fernando Nava [31.2%] |
| 60 | **AT - Catalogo Tipos de Carga/Descarga** | 2018-05-29 → 2018-07-03 (+35d) | 2018-05-29 → 2018-07-05 (+37d) | 1d → 2.4d? |  | 0d → 31.3d |  |  |
| 61 | AT - Elaboración Bocetos de Archivos | 2018-05-29 → 2018-07-03 (+35d) | 2018-05-29 → 2018-07-04 (+36d) | 1d → 1.2d? |  | 0d → 26.8d | none → 59 | resources none → Fernando Nava [31.2%] |
| 62 | AT - Elaboración Bocetos de Pantallas | 2018-05-29 → 2018-07-04 (+36d) | 2018-05-29 → 2018-07-05 (+37d) | 1d → 1.2d? |  | 0d → 26.8d | none → 61 | resources none → Fernando Nava [31.2%] |
| 63 | **AT - Catalogo Clientes de Entrega** | 2018-05-29 → 2018-07-03 (+35d) | 2018-05-29 → 2018-07-05 (+37d) | 1d → 2.4d? |  | 0d → 31.3d |  |  |
| 64 | AT - Elaboración Bocetos de Archivos | 2018-05-29 → 2018-07-03 (+35d) | 2018-05-29 → 2018-07-04 (+36d) | 1d → 1.2d? |  | 0d → 26.8d | none → 59 | resources none → Fernando Nava [31.2%] |
| 65 | AT - Elaboración Bocetos de Pantallas | 2018-05-29 → 2018-07-04 (+36d) | 2018-05-29 → 2018-07-05 (+37d) | 1d → 1.2d? |  | 0d → 26.8d | none → 64 | resources none → Fernando Nava [31.2%] |
| 66 | **AT - Catalogo Clientes Solicidates** | 2018-05-29 → 2018-07-03 (+35d) | 2018-05-29 → 2018-07-05 (+37d) | 1d → 2.4d? |  |  |  |  |
| 67 | AT - Elaboración Bocetos de Archivos | 2018-05-29 → 2018-07-03 (+35d) | 2018-05-29 → 2018-07-04 (+36d) | 1d → 1.2d? |  |  | none → 59 | resources none → Fernando Nava [31.2%] |
| 68 | AT - Elaboración Bocetos de Pantallas | 2018-05-29 → 2018-07-04 (+36d) | 2018-05-29 → 2018-07-05 (+37d) | 1d → 1.2d? |  |  | none → 67 | resources none → Fernando Nava [31.2%] |
| 69 | **AT - Modulo Seguridad** | 2018-05-29 → 2018-07-05 (+37d) | 2018-05-29 → 2018-07-12 (+44d) | 1d → 4.8d? |  |  |  |  |
| 70 | **AT - Roles** | 2018-05-29 → 2018-07-05 (+37d) | 2018-05-29 → 2018-07-10 (+42d) | 1d → 2.4d? |  | 0d → 28.15d |  |  |
| 71 | AT - Elaboración Bocetos de Archivos | 2018-05-29 → 2018-07-05 (+37d) | 2018-05-29 → 2018-07-09 (+41d) | 1d → 1.2d? |  | 0d → 24.4d | none → 68 | resources none → Fernando Nava [31.2%] |
| 72 | AT - Elaboración Bocetos de Pantallas | 2018-05-29 → 2018-07-09 (+41d) | 2018-05-29 → 2018-07-10 (+42d) | 1d → 1.2d? |  | 0d → 24.4d | none → 71 | resources none → Fernando Nava [31.2%] |
| 73 | **AT - Configuracion** | 2018-05-29 → 2018-07-05 (+37d) | 2018-05-29 → 2018-07-10 (+42d) | 1d → 2.4d? |  |  |  |  |
| 74 | AT - Elaboración Bocetos de Archivos | 2018-05-29 → 2018-07-05 (+37d) | 2018-05-29 → 2018-07-09 (+41d) | 1d → 1.2d? |  |  | none → 68 | resources none → Fernando Nava [31.2%] |
| 75 | AT - Elaboración Bocetos de Pantallas | 2018-05-29 → 2018-07-09 (+41d) | 2018-05-29 → 2018-07-10 (+42d) | 1d → 1.2d? |  |  | none → 74 | resources none → Fernando Nava [31.2%] |
| 76 | **AT - Permisos** | 2018-05-29 → 2018-07-10 (+42d) | 2018-05-29 → 2018-07-12 (+44d) | 1d → 2.4d? |  |  |  |  |
| 77 | AT - Elaboración Bocetos de Archivos | 2018-05-29 → 2018-07-10 (+42d) | 2018-05-29 → 2018-07-11 (+43d) | 1d → 1.2d? |  |  | none → 75 | resources none → Fernando Nava [31.2%] |
| 78 | AT - Elaboración Bocetos de Pantallas | 2018-05-29 → 2018-07-11 (+43d) | 2018-05-29 → 2018-07-12 (+44d) | 1d → 1.2d? |  |  | none → 77 | resources none → Fernando Nava [31.2%] |
| 79 | **AT - Modulo Solicitudes** | 2018-05-29 → 2018-07-12 (+44d) | 2018-05-29 → 2018-07-24 (+56d) | 1d → 8d? |  |  |  |  |

| ID | Task | Start | Finish | Duration | Total float | Predecessors | Other |
| --- | --- | --- | --- | --- | --- | --- | --- |
| 80 | **AT - Cliente - Solicitud de Transporte** | 2018-05-29 → 2018-07-12 (+44d) | 2018-05-29 → 2018-07-17 (+49d) | 1d → 2.67d? | 0d → 23.83d |  |  |
| 81 | AT - Elaboración Bocetos de Archivos | 2018-05-29 → 2018-07-12 (+44d) | 2018-05-29 → 2018-07-13 (+45d) | 1d → 1.33d? | 0d → 19.33d | none → 78 | resources none → Fernando Nava [37.5%] |
| 82 | AT - Elaboración Bocetos de Pantallas | 2018-05-29 → 2018-07-13 (+45d) | 2018-05-29 → 2018-07-17 (+49d) | 1d → 1.33d? | 0d → 19.33d | none → 81 | resources none → Fernando Nava [37.5%] |
| 83 | **AT - Trafico - Valoracion del Viaje** | 2018-05-29 → 2018-07-12 (+44d) | 2018-05-29 → 2018-07-17 (+49d) | 1d → 2.67d? |  |  |  |
| 84 | AT - Elaboración Bocetos de Archivos | 2018-05-29 → 2018-07-12 (+44d) | 2018-05-29 → 2018-07-13 (+45d) | 1d → 1.33d? |  | none → 78 | resources none → Fernando Nava [37.5%] |
| 85 | AT - Elaboración Bocetos de Pantallas | 2018-05-29 → 2018-07-13 (+45d) | 2018-05-29 → 2018-07-17 (+49d) | 1d → 1.33d? |  | none → 84 | resources none → Fernando Nava [37.5%] |
| 86 | **AT - Distribucion - Asugnacion de Unidad y Carga** | 2018-05-29 → 2018-07-17 (+49d) | 2018-05-29 → 2018-07-19 (+51d) | 1d → 2.67d? | 0d → 21.17d |  |  |
| 87 | AT - Elaboración Bocetos de Archivos | 2018-05-29 → 2018-07-17 (+49d) | 2018-05-29 → 2018-07-18 (+50d) | 1d → 1.33d? | 0d → 16.67d | none → 85 | resources none → Fernando Nava [37.5%] |
| 88 | AT - Elaboración Bocetos de Pantallas | 2018-05-29 → 2018-07-18 (+50d) | 2018-05-29 → 2018-07-19 (+51d) | 1d → 1.33d? | 0d → 16.67d | none → 87 | resources none → Fernando Nava [37.5%] |
| 89 | **AT - Operador CL - Operación y Descarga** | 2018-05-29 → 2018-07-17 (+49d) | 2018-05-29 → 2018-07-19 (+51d) | 1d → 2.67d? |  |  |  |
| 90 | AT - Elaboración Bocetos de Archivos | 2018-05-29 → 2018-07-17 (+49d) | 2018-05-29 → 2018-07-18 (+50d) | 1d → 1.33d? |  | none → 85 | resources none → Fernando Nava [37.5%] |
| 91 | AT - Elaboración Bocetos de Pantallas | 2018-05-29 → 2018-07-18 (+50d) | 2018-05-29 → 2018-07-19 (+51d) | 1d → 1.33d? |  | none → 90 | resources none → Fernando Nava [37.5%] |
| 92 | **AT - Distribucion - Cierre del Viaje y Facturacion** | 2018-05-29 → 2018-07-19 (+51d) | 2018-05-29 → 2018-07-24 (+56d) | 1d → 2.67d? |  |  |  |
| 93 | AT - Elaboración Bocetos de Archivos | 2018-05-29 → 2018-07-19 (+51d) | 2018-05-29 → 2018-07-23 (+55d) | 1d → 1.33d? |  | none → 91 | resources none → Fernando Nava [37.5%] |
| 94 | AT - Elaboración Bocetos de Pantallas | 2018-05-29 → 2018-07-23 (+55d) | 2018-05-29 → 2018-07-24 (+56d) | 1d → 1.33d? |  | none → 93 | resources none → Fernando Nava [37.5%] |
| 95 | **AT - Modulo Alarmas/Reportes/Indicadores de gestión** | 2018-05-29 → 2018-07-24 (+56d) | 2018-05-29 → 2018-07-30 (+62d) | 1d → 4d? |  |  |  |
| 96 | **AT - Alarmas** | 2018-05-29 → 2018-07-24 (+56d) | 2018-05-29 → 2018-07-26 (+58d) | 1d → 2d? | 0d → 16.5d |  |  |
| 97 | AT - Elaboración Bocetos de Archivos | 2018-05-29 → 2018-07-24 (+56d) | 2018-05-29 → 2018-07-25 (+57d) | 1d → 1d? | 0d → 12d | none → 94 | resources none → Fernando Nava [37.5%] |
| 98 | AT - Elaboración Bocetos de Pantallas | 2018-05-29 → 2018-07-25 (+57d) | 2018-05-29 → 2018-07-26 (+58d) | 1d → 1d? | 0d → 12d | none → 97 | resources none → Fernando Nava [37.5%] |
| 99 | **AT - Reportes** | 2018-05-29 → 2018-07-24 (+56d) | 2018-05-29 → 2018-07-26 (+58d) | 1d → 2d? |  |  |  |
| 100 | AT - Elaboración Bocetos de Archivos | 2018-05-29 → 2018-07-24 (+56d) | 2018-05-29 → 2018-07-25 (+57d) | 1d → 1d? |  | none → 94 | resources none → Fernando Nava [37.5%] |
| 101 | AT - Elaboración Bocetos de Pantallas | 2018-05-29 → 2018-07-25 (+57d) | 2018-05-29 → 2018-07-26 (+58d) | 1d → 1d? |  | none → 100 | resources none → Fernando Nava [37.5%] |
| 102 | **AT - Indicadores de gestión** | 2018-05-29 → 2018-07-26 (+58d) | 2018-05-29 → 2018-07-30 (+62d) | 1d → 2d? |  |  |  |
| 103 | AT - Elaboración Bocetos de Archivos | 2018-05-29 → 2018-07-26 (+58d) | 2018-05-29 → 2018-07-27 (+59d) | 1d → 1d? |  | none → 101 | resources none → Fernando Nava [37.5%] |
| 104 | AT - Elaboración Bocetos de Pantallas | 2018-05-29 → 2018-07-27 (+59d) | 2018-05-29 → 2018-07-30 (+62d) | 1d → 1d? |  | none → 103 | resources none → Fernando Nava [37.5%] |
| 109 | **CC_Desarrollo** | 2018-05-29 → 2018-06-15 (+17d) | 2018-05-29 → 2018-08-21 (+84d) | 1d → 46.67d? | 0d → 1d |  |  |
| 110 | **Diseño y Construcción** | 2018-05-29 → 2018-06-15 (+17d) | 2018-05-29 → 2018-08-20 (+83d) | 1d → 45.67d? | 0d → 2d |  |  |
| 111 | CC - Revision del documento de Arquitectura de Solucion | 2018-05-29 → 2018-06-15 (+17d) | 2018-05-29 → 2018-06-18 (+20d) | 1d → 1d? | 0d → 40.17d | none → 21 | resources none → Omar Santiago [37.5%] |
| 112 | **CC - Instalacion y Configuracion** | 2018-05-29 → 2018-06-18 (+20d) | 2018-05-29 → 2018-06-25 (+27d) | 1d → 4.67d? | 0d → 42.01d |  |  |
| 113 | CC - Instalacion de herramientas de desarrollo | 2018-05-29 → 2018-06-18 (+20d) | 2018-05-29 → 2018-06-21 (+23d) | 1d → 3d? | 0d → 43.67d | none → 111 | resources none → Omar Santiago [37.5%] |
| 114 | CC - Instalacion de herramientas de gestion de Bases de Datos | 2018-05-29 → 2018-06-18 (+20d) | 2018-05-29 → 2018-06-21 (+23d) | 1d → 3d? | 0d → 42.01d | none → 111 | resources none → Omar Santiago [37.5%] |
| 115 | CC - Instalacion de herramienta para soportar aplicaciones web | 2018-05-29 → 2018-06-21 (+23d) | 2018-05-29 → 2018-06-25 (+27d) | 1d → 1.67d? | 0d → 42.01d | none → 114 | resources none → Omar Santiago [37.5%] |
| 116 | **CC - Desarrollo** | 2018-05-29 → 2018-06-18 (+20d) | 2018-05-29 → 2018-07-31 (+63d) | 1d → 31.43d? | 0d → 15.5d |  |  |
| 117 | **CC - Modulo Catalogos Maestros** | 2018-05-29 → 2018-06-18 (+20d) | 2018-05-29 → 2018-07-06 (+38d) | 1d → 14.62d? | 0d → 32.05d |  |  |
| 118 | CC - Catalogo Rol | 2018-05-29 → 2018-06-19 (+21d) | 2018-05-29 → 2018-06-20 (+22d) | 1d → 1d? | 0d → 43.27d | none → 26 | resources none → Omar Santiago [50%] |
| 119 | CC - Catalogo Actores | 2018-05-29 → 2018-06-18 (+20d) | 2018-05-29 → 2018-06-19 (+21d) | 1d → 1d? | 0d → 45.67d | none → 29 | resources none → Omar Santiago [50%] |
| 120 | CC - Catalogo Actores-Roles | 2018-05-29 → 2018-06-20 (+22d) | 2018-05-29 → 2018-06-21 (+23d) | 1d → 1d? | 0d → 42.52d | none → 32 | resources none → Omar Santiago [50%] |
| 121 | CC - Catalogo Contratos | 2018-05-29 → 2018-06-20 (+22d) | 2018-05-29 → 2018-06-21 (+23d) | 1d → 1d? | 0d → 42.52d | none → 35 | resources none → Omar Santiago [50%] |
| 122 | CC - Catalogo Tipos de Tarifa | 2018-05-29 → 2018-06-22 (+24d) | 2018-05-29 → 2018-06-25 (+27d) | 1d → 1d? | 0d → 40.12d | none → 38 | resources none → Omar Santiago [50%] |
| 123 | CC - Catalogo Tarifa | 2018-05-29 → 2018-06-22 (+24d) | 2018-05-29 → 2018-06-25 (+27d) | 1d → 1d? | 0d → 40.12d | none → 41 | resources none → Omar Santiago [50%] |
| 124 | CC - Catalogo Conceptos de Tarifa | 2018-05-29 → 2018-06-27 (+29d) | 2018-05-29 → 2018-06-28 (+30d) | 1d → 1d? | 0d → 37.73d | none → 44 | resources none → Omar Santiago [50%] |
| 125 | CC - Catalogo Choferes | 2018-05-29 → 2018-06-27 (+29d) | 2018-05-29 → 2018-06-28 (+30d) | 1d → 1d? | 0d → 37.73d | none → 47 | resources none → Omar Santiago [50%] |
| 126 | CC - Catalogo Camiones | 2018-05-29 → 2018-06-29 (+31d) | 2018-05-29 → 2018-07-02 (+34d) | 1d → 1d? | 0d → 35.33d | none → 50 | resources none → Omar Santiago [50%] |
| 127 | CC - Catalogo Responsables de Incidencias | 2018-05-29 → 2018-06-29 (+31d) | 2018-05-29 → 2018-07-02 (+34d) | 1d → 1d? | 0d → 36.1d | none → 53 | resources none → Omar Santiago [50%] |
| 128 | CC - Catalogo Tipos de Incidencias | 2018-05-29 → 2018-07-03 (+35d) | 2018-05-29 → 2018-07-04 (+36d) | 1d → 1d? | 0d → 33.7d | none → 56 | resources none → Omar Santiago [50%] |
| 129 | CC - Catalogo Tipos de Viaje | 2018-05-29 → 2018-07-03 (+35d) | 2018-05-29 → 2018-07-04 (+36d) | 1d → 1d? | 0d → 33.7d | none → 59 | resources none → Omar Santiago [50%] |
| 130 | CC - Catalogo Tipos de Carga/Descarga | 2018-05-29 → 2018-07-05 (+37d) | 2018-05-29 → 2018-07-06 (+38d) | 1d → 1d? | 0d → 31.3d | none → 62 | resources none → Omar Santiago [50%] |
| 131 | CC - Catalogo Clientes de Entrega | 2018-05-29 → 2018-07-05 (+37d) | 2018-05-29 → 2018-07-06 (+38d) | 1d → 1d? | 0d → 31.3d | none → 65 | resources none → Omar Santiago [50%] |
| 132 | CC - Catalogo Clientes Solicidates | 2018-05-29 → 2018-07-05 (+37d) | 2018-05-29 → 2018-07-06 (+38d) | 1d → 1d? | 0d → 31.3d | none → 68 | resources none → Omar Santiago [50%] |
| 133 | **CC - Modulo Seguridad** | 2018-05-29 → 2018-07-10 (+42d) | 2018-05-29 → 2018-07-16 (+48d) | 1d → 4.4d? | 0d → 25.5d |  |  |
| 134 | CC - Roles | 2018-05-29 → 2018-07-10 (+42d) | 2018-05-29 → 2018-07-11 (+43d) | 1d → 1.75d? | 0d → 28.15d | none → 72 | resources none → Omar Santiago [50%] |
| 135 | CC - Configuracion | 2018-05-29 → 2018-07-10 (+42d) | 2018-05-29 → 2018-07-11 (+43d) | 1d → 1.75d? | 0d → 28.15d | none → 75 | resources none → Omar Santiago [50%] |
| 136 | CC - Permisos | 2018-05-29 → 2018-07-12 (+44d) | 2018-05-29 → 2018-07-16 (+48d) | 1d → 2d? | 0d → 25.5d | none → 78 | resources none → Omar Santiago [50%] |
| 137 | **CC - Modulo Solicitudes** | 2018-05-29 → 2018-07-17 (+49d) | 2018-05-29 → 2018-07-30 (+62d) | 1d → 9.49d? | 0d → 16.34d |  |  |
| 138 | CC - Cliente - Solicitud de Transporte | 2018-05-29 → 2018-07-17 (+49d) | 2018-05-29 → 2018-07-18 (+50d) | 1d → 1d? | 0d → 23.83d | none → 82 | resources none → Omar Santiago [87.5%] |
| 139 | CC - Trafico - Valoracion del Viaje | 2018-05-29 → 2018-07-17 (+49d) | 2018-05-29 → 2018-07-18 (+50d) | 1d → 1d? | 0d → 23.83d | none → 85 | resources none → Omar Santiago [87.5%] |
| 140 | CC - Distribucion - Asugnacion de Unidad y Carga | 2018-05-29 → 2018-07-19 (+51d) | 2018-05-29 → 2018-07-20 (+52d) | 1d → 1d? | 0d → 21.17d | none → 88 | resources none → Omar Santiago [87.5%] |
| 141 | CC - Operador CL - Operación y Descarga | 2018-05-29 → 2018-07-19 (+51d) | 2018-05-29 → 2018-07-20 (+52d) | 1d → 1d? | 0d → 21.17d | none → 91 | resources none → Omar Santiago [87.5%] |
| 142 | CC - Distribucion - Cierre del Viaje y Facturacion | 2018-05-29 → 2018-07-24 (+56d) | 2018-05-29 → 2018-07-25 (+57d) | 1d → 1d? | 0d → 16.34d | none → 94 | resources none → Omar Santiago [87.5%] |
| 143 | **CC - Primer Check point operativo** | 2018-05-29 → 2018-07-25 (+57d) | 2018-05-29 → 2018-07-27 (+59d) | 1d → 2d? | 0d → 16.34d |  |  |
| 144 | CC - Primer Check point operativo | 2018-05-29 → 2018-07-25 (+57d) | 2018-05-29 → 2018-07-26 (+58d) | 1d → 1d? | 0d → 16.34d | none → 142 | resources none → Omar Santiago/ITSC [25%] |
| 145 | CC - Actualizacion de los puntos del primer Ckeckpoint | 2018-05-29 → 2018-07-26 (+58d) | 2018-05-29 → 2018-07-27 (+59d) | 1d → 1d? | 0d → 16.34d | none → 144 | resources none → Omar Santiago/ITSC [87.5%] |
| 146 | **CC - Segundo Check point operativo** | 2018-05-29 → 2018-07-27 (+59d) | 2018-05-29 → 2018-07-30 (+62d) | 1d → 1.16d? | 0d → 16.34d |  |  |
| 147 | CC - Segundo Check point operativo | 2018-05-29 → 2018-07-27 (+59d) | 2018-05-29 → 2018-07-27 (+59d) | 1d → 0.29d? | 0d → 16.34d | none → 145 | resources none → Omar Santiago/ITSC [87.5%] |
| 148 | CC - Actualizacion de los puntos del segundo Check point operativo | 2018-05-29 → 2018-07-27 (+59d) | 2018-05-29 → 2018-07-30 (+62d) | 1d → 0.88d? | 0d → 16.34d | none → 147 | resources none → Omar Santiago/ITSC |
| 149 | **CC - Modulo Alarmas/Reportes/Indicadores de gestión** | 2018-05-29 → 2018-07-26 (+58d) | 2018-05-29 → 2018-07-31 (+63d) | 1d → 3d? | 0d → 2d |  |  |
| 150 | CC - Alarmas | 2018-05-29 → 2018-07-26 (+58d) | 2018-05-29 → 2018-07-27 (+59d) | 1d → 1d? | 0d → 16.5d | none → 98 | resources none → Omar Santiago [75%] |
| 151 | CC - Reportes | 2018-05-29 → 2018-07-26 (+58d) | 2018-05-29 → 2018-07-27 (+59d) | 1d → 1d? | 0d → 16.5d | none → 101 | resources none → Omar Santiago [75%] |
| 152 | CC - Indicadores de gestión | 2018-05-29 → 2018-07-30 (+62d) | 2018-05-29 → 2018-07-31 (+63d) | 1d → 1d? |  | none → 104 | resources none → Omar Santiago [75%] |
| 153 | **PU - Pruebas Untarias** | 2018-05-29 → 2018-06-19 (+21d) | 2018-05-29 → 2018-08-01 (+64d) | 1d → 31.43d? | 0d → 14.5d |  |  |

| ID | Task | Start | Finish | Duration | Total float | Predecessors | Other |
| --- | --- | --- | --- | --- | --- | --- | --- |
| 154 | **PU - Modulo Catalogos Maestros** | 2018-05-29 → 2018-06-19 (+21d) | 2018-05-29 → 2018-07-09 (+41d) | 1d → 14.62d? | 0d → 31.3d |  |  |
| 155 | PU - Catalogo Rol | 2018-05-29 → 2018-06-20 (+22d) | 2018-05-29 → 2018-06-21 (+23d) | 1d → 1d? | 0d → 38.77d | none → 118 | resources none → Omar Santiago/Fernando Nava [25%] |
| 156 | PU - Catalogo Actores | 2018-05-29 → 2018-06-19 (+21d) | 2018-05-29 → 2018-06-19 (+21d) | 1d → 0.25d? | 0d → 41.17d | none → 119 | resources none → Omar Santiago/Fernando Nava |
| 157 | PU - Catalogo Actores-Roles | 2018-05-29 → 2018-06-21 (+23d) | 2018-05-29 → 2018-06-22 (+24d) | 1d → 1d? | 0d → 38.02d | none → 120 | resources none → Omar Santiago/Fernando Nava [25%] |
| 158 | PU - Catalogo Contratos | 2018-05-29 → 2018-06-21 (+23d) | 2018-05-29 → 2018-06-22 (+24d) | 1d → 1d? | 0d → 38.02d | none → 121 | resources none → Omar Santiago/Fernando Nava [25%] |
| 159 | PU - Catalogo Tipos de Tarifa | 2018-05-29 → 2018-06-25 (+27d) | 2018-05-29 → 2018-06-26 (+28d) | 1d → 1d? | 0d → 35.62d | none → 122 | resources none → Omar Santiago/Fernando Nava [25%] |
| 160 | PU - Catalogo Tarifa | 2018-05-29 → 2018-06-25 (+27d) | 2018-05-29 → 2018-06-26 (+28d) | 1d → 1d? | 0d → 35.62d | none → 123 | resources none → Omar Santiago/Fernando Nava [25%] |
| 161 | PU - Catalogo Conceptos de Tarifa | 2018-05-29 → 2018-06-28 (+30d) | 2018-05-29 → 2018-06-29 (+31d) | 1d → 1d? | 0d → 33.23d | none → 124 | resources none → Omar Santiago/Fernando Nava [25%] |
| 162 | PU - Catalogo Choferes | 2018-05-29 → 2018-06-28 (+30d) | 2018-05-29 → 2018-06-29 (+31d) | 1d → 1d? | 0d → 33.23d | none → 125 | resources none → Omar Santiago/Fernando Nava [25%] |
| 163 | PU - Catalogo Camiones | 2018-05-29 → 2018-07-02 (+34d) | 2018-05-29 → 2018-07-03 (+35d) | 1d → 1d? | 0d → 30.82d | none → 126 | resources none → Omar Santiago/Fernando Nava [25%] |
| 164 | PU - Catalogo Responsables de Incidencias | 2018-05-29 → 2018-07-02 (+34d) | 2018-05-29 → 2018-07-03 (+35d) | 1d → 1d? | 0d → 31.6d | none → 127 | resources none → Omar Santiago/Fernando Nava [25%] |
| 165 | PU - Catalogo Tipos de Incidencias | 2018-05-29 → 2018-07-04 (+36d) | 2018-05-29 → 2018-07-05 (+37d) | 1d → 1d? | 0d → 29.2d | none → 128 | resources none → Omar Santiago/Fernando Nava [25%] |
| 166 | PU - Catalogo Tipos de Viaje | 2018-05-29 → 2018-07-04 (+36d) | 2018-05-29 → 2018-07-05 (+37d) | 1d → 1d? | 0d → 29.2d | none → 129 | resources none → Omar Santiago/Fernando Nava [25%] |
| 167 | PU - Catalogo Tipos de Carga/Descarga | 2018-05-29 → 2018-07-06 (+38d) | 2018-05-29 → 2018-07-09 (+41d) | 1d → 1d? | 0d → 26.8d | none → 130 | resources none → Omar Santiago/Fernando Nava [25%] |
| 168 | PU - Catalogo Clientes de Entrega | 2018-05-29 → 2018-07-06 (+38d) | 2018-05-29 → 2018-07-09 (+41d) | 1d → 1d? | 0d → 26.8d | none → 131 | resources none → Omar Santiago/Fernando Nava [25%] |
| 169 | PU - Catalogo Clientes Solicidates | 2018-05-29 → 2018-07-06 (+38d) | 2018-05-29 → 2018-07-09 (+41d) | 1d → 1d? | 0d → 26.8d | none → 132 | resources none → Omar Santiago/Fernando Nava [25%] |
| 170 | **PU - Modulo Seguridad** | 2018-05-29 → 2018-07-11 (+43d) | 2018-05-29 → 2018-07-17 (+49d) | 1d → 3.65d? | 0d → 25.5d |  |  |
| 171 | PU - Roles | 2018-05-29 → 2018-07-11 (+43d) | 2018-05-29 → 2018-07-12 (+44d) | 1d → 1d? | 0d → 23.65d | none → 134 | resources none → Omar Santiago/Fernando Nava [25%] |
| 172 | PU - Configuracion | 2018-05-29 → 2018-07-11 (+43d) | 2018-05-29 → 2018-07-12 (+44d) | 1d → 1d? | 0d → 23.65d | none → 135 | resources none → Omar Santiago/Fernando Nava [25%] |
| 173 | PU - Permisos | 2018-05-29 → 2018-07-16 (+48d) | 2018-05-29 → 2018-07-17 (+49d) | 1d → 1d? | 0d → 21d | none → 136 | resources none → Omar Santiago/Fernando Nava [25%] |
| 174 | **PU - Modulo Solicitudes** | 2018-05-29 → 2018-07-18 (+50d) | 2018-05-29 → 2018-07-26 (+58d) | 1d → 6.33d? | 0d → 18.5d |  |  |
| 175 | PU - Cliente - Solicitud de Transporte | 2018-05-29 → 2018-07-18 (+50d) | 2018-05-29 → 2018-07-19 (+51d) | 1d → 1d? | 0d → 19.33d | none → 138 | resources none → Omar Santiago/Fernando Nava [37.5%] |
| 176 | PU - Trafico - Valoracion del Viaje | 2018-05-29 → 2018-07-18 (+50d) | 2018-05-29 → 2018-07-19 (+51d) | 1d → 1d? | 0d → 19.33d | none → 139 | resources none → Omar Santiago/Fernando Nava [37.5%] |
| 177 | PU - Distribucion - Asugnacion de Unidad y Carga | 2018-05-29 → 2018-07-20 (+52d) | 2018-05-29 → 2018-07-23 (+55d) | 1d → 1d? | 0d → 16.67d | none → 140 | resources none → Omar Santiago/Fernando Nava [37.5%] |
| 178 | PU - Operador CL - Operación y Descarga | 2018-05-29 → 2018-07-20 (+52d) | 2018-05-29 → 2018-07-23 (+55d) | 1d → 1d? | 0d → 16.67d | none → 141 | resources none → Omar Santiago/Fernando Nava [37.5%] |
| 179 | PU - Distribucion - Cierre del Viaje y Facturacion | 2018-05-29 → 2018-07-25 (+57d) | 2018-05-29 → 2018-07-26 (+58d) | 1d → 1d? | 0d → 14d | none → 142 | resources none → Omar Santiago/Fernando Nava [37.5%] |
| 180 | **PU - Modulo Alarmas/Reportes/Indicadores de gestión** | 2018-05-29 → 2018-07-27 (+59d) | 2018-05-29 → 2018-08-01 (+64d) | 1d → 3d? | 0d → 2d |  |  |
| 181 | PU - Alarmas | 2018-05-29 → 2018-07-27 (+59d) | 2018-05-29 → 2018-07-30 (+62d) | 1d → 1d? | 0d → 16.5d | none → 150 | resources none → Omar Santiago/Fernando Nava [37.5%] |
| 182 | PU - Reportes | 2018-05-29 → 2018-07-27 (+59d) | 2018-05-29 → 2018-07-30 (+62d) | 1d → 1d? | 0d → 16.5d | none → 151 | resources none → Omar Santiago/Fernando Nava [37.5%] |
| 183 | PU - Indicadores de gestión | 2018-05-29 → 2018-07-31 (+63d) | 2018-05-29 → 2018-08-01 (+64d) | 1d → 1d? |  | none → 152 | resources none → Omar Santiago/Fernando Nava [37.5%] |
| 184 | **TD - Termina Desarrollo** | 2018-05-29 → 2018-08-01 (+64d) | 2018-05-29 → 2018-08-09 (+72d) | 1d → 5.5d? |  |  | was named Modulo Catalogos Maestros |
| 185 | **TD - Instalacion en Ambiente QA o TEST** | 2018-05-29 → 2018-08-01 (+64d) | 2018-05-29 → 2018-08-09 (+72d) | 1d → 5.5d? |  |  | was named Modulo Seguridad |
| 214 | PI - Distribucion - Asugnacion de Unidad y Carga | 2018-05-29 → 2018-08-14 (+77d) | 2018-05-29 → 2018-08-15 (+78d) |  |  | none → 210 | was named LB - Liberacion Modulo 2; resources none → Omar Santiago/Fernando Nava/ITSC [25%] |
| 215 | PI - Operador CL - Operación y Descarga | 2018-05-29 → 2018-08-15 (+78d) | 2018-05-29 → 2018-08-16 (+79d) | 1d → 1d? | 0d → 4d | none → 214 | was named Modulo Solicitud; resources none → Omar Santiago/Fernando Nava/ITSC [25%] |
| 224 | Monitoreo y Control | 2018-05-29 → 2018-05-24 (-5d) | 2018-05-29 → 2018-05-24 (-5d) | 1d → 1d? | 0d → 58.61d |  | was named AT - Requerimientos de Negocio (Junta de Entendimiento) |

## Version 9 (saved 2018-05-30, file PLAN_AT_CC_v1_FECHAS.mpp)

Note of the change: planes

Last finish 2018-08-22 → 2018-10-04 (+43d).

Added:

| ID | Task | Duration | Start | Finish | Predecessors |
| --- | --- | --- | --- | --- | --- |
| 6 | AT - Casos de Uso (Junta de Entendimiento) | 1d | 2018-05-30 | 2018-05-30 | 5 |
| 104 | LB - Liberacion Modulo 1 | 1d | 2018-07-26 | 2018-07-26 | 103 |
| 106 | **AT Analisis de Tecnico** | 6d | 2018-07-27 | 2018-08-03 |  |
| 107 | **IAT - Revisión de documentación entregada por Negocio** | 2d | 2018-07-27 | 2018-07-30 |  |
| 108 | AT - Requerimientos de Negocio (Junta de Entendimiento) | 1d | 2018-07-27 | 2018-07-27 | 104 |
| 109 | AT - Casos de Uso (Junta de Entendimiento) | 1d | 2018-07-30 | 2018-07-30 | 108 |
| 110 | **AT - Actualizacion de propuesta de Arquitectura de Solucion** | 4d | 2018-07-31 | 2018-08-03 |  |
| 111 | AT - Requerimientos tecnicos | 1d | 2018-07-31 | 2018-07-31 | 109 |
| 112 | AT - Analisis tecnico | 1d | 2018-07-31 | 2018-07-31 | 109 |
| 113 | AT - Requerimientos de solucion | 1d | 2018-08-01 | 2018-08-01 | 112 |
| 114 | AT - Escalabilidad | 1d | 2018-08-01 | 2018-08-01 | 112 |
| 115 | AT - Modelado BD | 1d | 2018-08-02 | 2018-08-02 | 114 |
| 116 | AT - Herramientas para solucion | 1d | 2018-08-02 | 2018-08-02 | 114 |
| 117 | AT - Aplicación responsiva para navegadores web | 1d | 2018-08-03 | 2018-08-03 | 116 |
| 118 | AT - Peer Review y Vo Bo Arquitectura de Solucion | 1d | 2018-08-03 | 2018-08-03 | 116 |
| 130 | **Diseño y Construcción** | 1d | 2018-08-10 | 2018-08-10 |  |
| 131 | CC - Revision del documento de Arquitectura de Solucion | 1d | 2018-08-10 | 2018-08-10 | 128 |
| 141 | **AT Analisis de Tecnico** | 6d | 2018-08-20 | 2018-08-27 |  |
| 142 | **IAT - Revisión de documentación entregada por Negocio** | 2d | 2018-08-20 | 2018-08-21 |  |
| 143 | AT - Requerimientos de Negocio (Junta de Entendimiento) | 1d | 2018-08-20 | 2018-08-20 | 139 |
| 144 | AT - Casos de Uso (Junta de Entendimiento) | 1d | 2018-08-21 | 2018-08-21 | 143 |
| 145 | **AT - Actualizacion de propuesta de Arquitectura de Solucion** | 4d | 2018-08-21 | 2018-08-24 |  |
| 146 | AT - Requerimientos tecnicos | 1d | 2018-08-21 | 2018-08-21 | 143 |
| 147 | AT - Analisis tecnico | 1d | 2018-08-21 | 2018-08-21 | 143 |
| 148 | AT - Requerimientos de solucion | 1d | 2018-08-22 | 2018-08-22 | 147 |
| 149 | AT - Escalabilidad | 1d | 2018-08-22 | 2018-08-22 | 147 |
| 150 | AT - Modelado BD | 1d | 2018-08-23 | 2018-08-23 | 149 |
| 151 | AT - Herramientas para solucion | 1d | 2018-08-23 | 2018-08-23 | 149 |
| 152 | AT - Aplicación responsiva para navegadores web | 1d | 2018-08-24 | 2018-08-24 | 151 |
| 153 | AT - Peer Review y Vo Bo Arquitectura de Solucion | 1d | 2018-08-27 | 2018-08-27 | 152 |
| 171 | **Diseño y Construcción** | 1d | 2018-09-04 | 2018-09-04 |  |
| 172 | CC - Revision del documento de Arquitectura de Solucion | 1d | 2018-09-04 | 2018-09-04 | 169 |
| 190 | LB - Liberacion Modulo 2 | 1d? | 2018-09-13 | 2018-09-13 | 189 |
| 191 | **Modulo Alarmas** | 15d | 2018-09-14 | 2018-10-04 |  |
| 192 | **AT Analisis de Tecnico** | 6d | 2018-09-14 | 2018-09-21 |  |
| 193 | **IAT - Revisión de documentación entregada por Negocio** | 2d | 2018-09-14 | 2018-09-17 |  |
| 194 | AT - Requerimientos de Negocio (Junta de Entendimiento) | 1d | 2018-09-14 | 2018-09-14 | 190 |
| 195 | AT - Casos de Uso (Junta de Entendimiento) | 1d | 2018-09-17 | 2018-09-17 | 194 |
| 196 | **AT - Actualizacion de propuesta de Arquitectura de Solucion** | 4d | 2018-09-18 | 2018-09-21 |  |
| 197 | AT - Requerimientos tecnicos | 1d | 2018-09-18 | 2018-09-18 | 195 |
| 198 | AT - Analisis tecnico | 1d | 2018-09-18 | 2018-09-18 | 195 |
| 199 | AT - Requerimientos de solucion | 1d | 2018-09-19 | 2018-09-19 | 198 |
| 200 | AT - Escalabilidad | 1d | 2018-09-19 | 2018-09-19 | 198 |
| 201 | AT - Modelado BD | 1d | 2018-09-20 | 2018-09-20 | 200 |
| 202 | AT - Herramientas para solucion | 1d | 2018-09-20 | 2018-09-20 | 200 |
| 203 | AT - Aplicación responsiva para navegadores web | 1d | 2018-09-21 | 2018-09-21 | 202 |
| 204 | AT - Peer Review y Vo Bo Arquitectura de Solucion | 1d | 2018-09-21 | 2018-09-21 | 202 |
| 216 | **Diseño y Construcción** | 1d | 2018-09-28 | 2018-09-28 |  |
| 217 | CC - Revision del documento de Arquitectura de Solucion | 1d | 2018-09-28 | 2018-09-28 | 214 |
| 225 | LB - Liberacion Modulo 3 | 1d | 2018-05-29 | 2018-05-29 |  |

Removed: 2 AN_Analisis; 3 AN Analisis de Negocio; 4 AN - Requerimientos de Negocio; 5 AN - Casos de Uso; 6 AT - Revisión interna; 7 AT - Ajustes de comentarios del usuario; 8 AT - Peer Review y Vo Bo; 11 AT - Requerimientos de Negocio; 12 AT - Casos de Uso; 105 AT - Revisión con el usuario; 106 AT - Ajustes de comentarios del usuario; 107 AT - Peer Review y Vo Bo; 108 Validacion de documentacion, ultimos ajustes; 186 Instalacion y Configuracion de Java 7 u 8; 187 Instalacion y Configuracion de Mysql y complementos; 188 Instalacion y Configuracion de Apacte Tomcat; 189 Instalacion y Configuracion AppWeb v1; 190 PI - Pruebas Integrales; 191 PI - Modulo Catalogos Maestros; 192 PI - Catalogo Rol; 193 PI - Catalogo Actores; 194 PI - Catalogo Actores-Roles; 195 PI - Catalogo Contratos; 196 PI - Catalogo Tipos de Tarifa; 197 PI - Catalogo Tarifa; 198 PI - Catalogo Conceptos de Tarifa; 199 PI - Catalogo Choferes; 200 PI - Catalogo Camiones; 201 PI - Catalogo Responsables de Incidencias; 202 PI - Catalogo Tipos de Incidencias; 203 PI - Catalogo Tipos de Viaje; 204 PI - Catalogo Tipos de Carga/Descarga; 205 PI - Catalogo Clientes de Entrega; 206 PI - Catalogo Clientes Solicidates; 207 PI - Modulo Seguridad; 208 PI - Roles; 209 PI - Configuracion; 210 PI - Permisos; 211 PI - Modulo Solicitudes; 212 PI - Cliente - Solicitud de Transporte; 213 PI - Trafico - Valoracion del Viaje; 216 PI - Distribucion - Cierre del Viaje y Facturacion; 217 PI - Modulo Alarmas/Reportes/Indicadores de gestión; 218 PI - Alarmas; 219 PI - Reportes; 220 PI - Indicadores de gestión; 221 PI - Cierre Pruebas Integrales; 222 LB - Liberacion a Produccion; 223 LB - Liberacion y Cierre

Changed:

| ID | Task | Start | Finish | Duration | Complete | Total float | Predecessors | Other |
| --- | --- | --- | --- | --- | --- | --- | --- | --- |
| 1 | **001-ITSC_TMS Plan de Analisis y Desarrollo** | 2018-05-24 A → 2018-05-29 (+5d) | 2018-08-21 → 2018-10-04 (+44d) | 63.11d? → 93d? |  | 1d → 0d |  |  |
| 2 | **Modulo Catalogos Maestros** | 2018-08-01 → 2018-05-29 (-64d) | 2018-08-09 → 2018-07-25 (-15d) | 5.5d? → 42d |  |  |  | was named TD - Termina Desarrollo |
| 3 | **AT Analisis de Tecnico** | 2018-05-24 A → 2018-05-29 (+5d) | 2018-08-02 → 2018-06-27 (-36d) | 50.61d? → 22d | 1% → 0% | 13.5d → 0d |  |  |
| 4 | **IAT - Revisión de documentación entregada por Negocio** | 2018-05-31 → 2018-05-29 (-2d) | 2018-06-13 → 2018-05-30 (-14d) | 9.44d? → 2d |  |  |  |  |
| 5 | AT - Requerimientos de Negocio (Junta de Entendimiento) | 2018-05-24 → 2018-05-29 (+5d) | 2018-05-24 → 2018-05-29 (+5d) | 1d? → 1d |  | 58.61d → 0d |  | was named Monitoreo y Control |
| 7 | **AT - Elaboracion de propuesta de Arquitectura de Solucion** | 2018-06-13 → 2018-05-31 (-13d) | 2018-06-14 → 2018-06-05 (-9d) | 1d? → 4d |  |  | AT - Casos de Uso → none |  |
| 8 | AT - Requerimientos tecnicos | 2018-06-13 → 2018-05-31 (-13d) | 2018-06-14 → 2018-05-31 (-14d) | 1d? → 1d |  | 0d → 15d | none → 6 | resources Omar Santiago [87.5%] → none |
| 9 | AT - Analisis tecnico | 2018-06-13 → 2018-05-31 (-13d) | 2018-06-14 → 2018-05-31 (-14d) | 1d? → 1d |  |  | none → 6 | resources Omar Santiago [87.5%] → none |
| 10 | AT - Requerimientos de solucion | 2018-06-13 → 2018-06-01 (-12d) | 2018-06-14 → 2018-06-01 (-13d) | 1d? → 1d |  | 0d → 14d | none → 9 | resources Omar Santiago [87.5%] → none |
| 11 | AT - Escalabilidad | 2018-06-13 → 2018-06-01 (-12d) | 2018-06-14 → 2018-06-01 (-13d) | 1d? → 1d |  |  | none → 9 | resources Omar Santiago [87.5%] → none |
| 12 | AT - Modelado BD | 2018-06-13 → 2018-06-04 (-9d) | 2018-06-14 → 2018-06-04 (-10d) | 1d? → 1d |  | 0d → 13d | none → 11 | resources Omar Santiago [87.5%] → none |
| 13 | AT - Herramientas para solucion | 2018-06-13 → 2018-06-04 (-9d) | 2018-06-14 → 2018-06-04 (-10d) | 1d? → 1d |  |  | none → 11 | resources Omar Santiago [62.5%] → none |
| 14 | AT - Aplicación responsiva para navegadores web | 2018-06-13 → 2018-06-05 (-8d) | 2018-06-14 → 2018-06-05 (-9d) | 1d? → 1d |  | 0d → 12d | none → 13 | resources Omar Santiago [62.5%] → none |
| 15 | AT - Peer Review y Vo Bo Arquitectura de Solucion | 2018-06-14 → 2018-06-05 (-9d) | 2018-06-15 → 2018-06-05 (-10d) |  |  |  | 7 → 13 | resources Omar Santiago [25%] → none |
| 16 | **AT - Elaboración de documentos AT** | 2018-05-24 A → 2018-06-06 (+13d) | 2018-07-30 → 2018-06-27 (-33d) | 47.61d? → 16d | 1% → 0% | 16.5d → 0d |  |  |
| 17 | **AT - Modulo Catalogos Maestros** | 2018-05-24 A → 2018-06-06 (+13d) | 2018-07-05 → 2018-06-27 (-8d) | 30.81d? → 16d | 1% → 0% | 33.3d → 0d |  |  |
| 18 | **AT - Catalogo Rol** | 2018-06-15 → 2018-06-06 (-9d) | 2018-06-19 → 2018-06-07 (-12d) | 2.4d → 2d |  | 43.27d → 0d |  |  |
| 19 | AT - Elaboración Bocetos de Archivos | 2018-06-15 → 2018-06-06 (-9d) | 2018-06-18 → 2018-06-06 (-12d) | 1.2d → 1d |  | 38.77d → 0d |  | resources Fernando Nava [31.2%] → none |
| 20 | AT - Elaboración Bocetos de Pantallas | 2018-06-18 → 2018-06-07 (-11d) | 2018-06-19 → 2018-06-07 (-12d) | 1.2d → 1d |  | 38.77d → 0d |  | resources Fernando Nava [31.2%] → none |
| 21 | **AT - Catalogo Actores** | 2018-06-15 → 2018-06-06 (-9d) | 2018-06-18 → 2018-06-07 (-11d) | 0.75d? → 2d |  | 0d → 73d |  |  |
| 22 | AT - Elaboración Bocetos de Archivos | 2018-06-15 → 2018-06-06 (-9d) | 2018-06-15 → 2018-06-06 (-9d) | 0.38d? → 1d |  | 0d → 2d |  | resources Fernando Nava → none |
| 23 | AT - Elaboración Bocetos de Pantallas | 2018-06-15 → 2018-06-07 (-8d) | 2018-06-18 → 2018-06-07 (-11d) | 0.38d? → 1d |  | 0d → 2d |  | resources Fernando Nava → none |
| 24 | **AT - Catalogo Actores-Roles** | 2018-06-18 → 2018-06-08 (-10d) | 2018-06-20 → 2018-06-11 (-9d) | 2.4d? → 2d |  | 42.52d → 0d |  |  |
| 25 | AT - Elaboración Bocetos de Archivos | 2018-06-18 → 2018-06-08 (-10d) | 2018-06-19 → 2018-06-08 (-11d) | 1.2d? → 1d |  | 38.02d → 0d | 23 → 20 | resources Fernando Nava [31.2%] → none |
| 26 | AT - Elaboración Bocetos de Pantallas | 2018-06-19 → 2018-06-11 (-8d) | 2018-06-20 → 2018-06-11 (-9d) | 1.2d? → 1d |  | 38.02d → 0d |  | resources Fernando Nava [31.2%] → none |
| 27 | **AT - Catalogo Contratos** | 2018-06-18 → 2018-06-08 (-10d) | 2018-06-20 → 2018-06-11 (-9d) | 2.4d? → 2d |  | 0d → 73d |  |  |
| 28 | AT - Elaboración Bocetos de Archivos | 2018-06-18 → 2018-06-08 (-10d) | 2018-06-19 → 2018-06-08 (-11d) | 1.2d? → 1d |  | 0d → 2d |  | resources Fernando Nava [31.2%] → none |
| 29 | AT - Elaboración Bocetos de Pantallas | 2018-06-19 → 2018-06-11 (-8d) | 2018-06-20 → 2018-06-11 (-9d) | 1.2d? → 1d |  | 0d → 2d |  | resources Fernando Nava [31.2%] → none |
| 30 | **AT - Catalogo Tipos de Tarifa** | 2018-06-20 → 2018-06-12 (-8d) | 2018-06-22 → 2018-06-13 (-9d) | 2.4d? → 2d |  | 40.12d → 0d |  |  |
| 31 | AT - Elaboración Bocetos de Archivos | 2018-06-20 → 2018-06-12 (-8d) | 2018-06-21 → 2018-06-12 (-9d) | 1.2d? → 1d |  | 35.62d → 0d | 29 → 26 | resources Fernando Nava [31.2%] → none |
| 32 | AT - Elaboración Bocetos de Pantallas | 2018-06-21 → 2018-06-13 (-8d) | 2018-06-22 → 2018-06-13 (-9d) | 1.2d? → 1d |  | 35.62d → 0d |  | resources Fernando Nava [31.2%] → none |
| 33 | **AT - Catalogo Tarifa** | 2018-06-20 → 2018-06-12 (-8d) | 2018-06-22 → 2018-06-13 (-9d) | 2.4d? → 2d |  | 0d → 73d |  |  |
| 34 | AT - Elaboración Bocetos de Archivos | 2018-06-20 → 2018-06-12 (-8d) | 2018-06-21 → 2018-06-12 (-9d) | 1.2d? → 1d |  | 0d → 2d |  | resources Fernando Nava [31.2%] → none |
| 35 | AT - Elaboración Bocetos de Pantallas | 2018-06-21 → 2018-06-13 (-8d) | 2018-06-22 → 2018-06-13 (-9d) | 1.2d? → 1d |  | 0d → 2d |  | resources Fernando Nava [31.2%] → none |
| 36 | **AT - Catalogo Conceptos de Tarifa** | 2018-06-22 → 2018-06-14 (-8d) | 2018-06-27 → 2018-06-15 (-12d) | 2.4d? → 2d |  |  |  |  |
| 37 | AT - Elaboración Bocetos de Archivos | 2018-06-22 → 2018-06-14 (-8d) | 2018-06-26 → 2018-06-14 (-12d) | 1.2d? → 1d |  |  | 35 → 32 | resources Fernando Nava [31.2%] → none |
| 38 | AT - Elaboración Bocetos de Pantallas | 2018-06-26 → 2018-06-15 (-11d) | 2018-06-27 → 2018-06-15 (-12d) | 1.2d? → 1d |  | 33.23d → 0d |  | resources Fernando Nava [31.2%] → none |
| 39 | **AT - Catalogo Choferes** | 2018-06-22 → 2018-06-14 (-8d) | 2018-06-27 → 2018-06-15 (-12d) | 2.4d? → 2d |  | 1.2d → 73d |  |  |
| 40 | AT - Elaboración Bocetos de Archivos | 2018-06-22 → 2018-06-14 (-8d) | 2018-06-26 → 2018-06-14 (-12d) | 1.2d? → 1d |  | 36.42d → 2d |  | resources Fernando Nava [31.2%] → none |
| 41 | AT - Elaboración Bocetos de Pantallas | 2018-06-26 → 2018-06-15 (-11d) | 2018-06-27 → 2018-06-15 (-12d) | 1.2d? → 1d |  | 0d → 2d | 37 → 40 | resources Fernando Nava [31.2%] → none |
| 42 | **AT - Catalogo Camiones** | 2018-06-27 → 2018-06-18 (-9d) | 2018-06-29 → 2018-06-19 (-10d) | 2.4d? → 2d |  | 35.33d → 0d |  |  |
| 43 | AT - Elaboración Bocetos de Archivos | 2018-06-27 → 2018-06-18 (-9d) | 2018-06-28 → 2018-06-18 (-10d) | 1.2d? → 1d |  | 30.82d → 0d | 41 → 38 | resources Fernando Nava [31.2%] → none |
| 44 | AT - Elaboración Bocetos de Pantallas | 2018-06-28 → 2018-06-19 (-9d) | 2018-06-29 → 2018-06-19 (-10d) | 1.2d? → 1d |  | 30.82d → 0d |  | resources Fernando Nava [31.2%] → none |
| 45 | **AT - Catalogo Responsables de Incidencias** | 2018-05-24 A → 2018-06-18 (+25d) | 2018-06-29 → 2018-06-19 (-10d) | 26.01d? → 2d | 24% → 0% | 0d → 73d |  |  |
| 46 | AT - Elaboración Bocetos de Archivos | 2018-05-24 A → 2018-06-18 (+25d) | 2018-06-28 → 2018-06-18 (-10d) | 1.06d? → 1d | 24% → 0% | 0d → 2d |  | resources Fernando Nava → none |
| 47 | AT - Elaboración Bocetos de Pantallas | 2018-05-24 A → 2018-06-19 (+26d) | 2018-06-29 → 2018-06-19 (-10d) | 1.06d? → 1d | 24% → 0% | 0d → 2d |  | resources Fernando Nava → none |
| 48 | **AT - Catalogo Tipos de Incidencias** | 2018-06-29 → 2018-06-20 (-9d) | 2018-07-03 → 2018-06-21 (-12d) | 2.4d? → 2d |  | 33.7d → 0d |  |  |
| 49 | AT - Elaboración Bocetos de Archivos | 2018-06-29 → 2018-06-20 (-9d) | 2018-07-02 → 2018-06-20 (-12d) | 1.2d? → 1d |  | 29.2d → 0d | 47 → 44 | resources Fernando Nava [31.2%] → none |
| 50 | AT - Elaboración Bocetos de Pantallas | 2018-07-02 → 2018-06-21 (-11d) | 2018-07-03 → 2018-06-21 (-12d) | 1.2d? → 1d |  | 29.2d → 0d |  | resources Fernando Nava [31.2%] → none |
| 51 | **AT - Catalogo Tipos de Viaje** | 2018-06-29 → 2018-06-20 (-9d) | 2018-07-03 → 2018-06-21 (-12d) | 2.4d? → 2d |  | 0d → 73d |  |  |
| 52 | AT - Elaboración Bocetos de Archivos | 2018-06-29 → 2018-06-20 (-9d) | 2018-07-02 → 2018-06-20 (-12d) | 1.2d? → 1d |  | 0d → 2d |  | resources Fernando Nava [31.2%] → none |
| 53 | AT - Elaboración Bocetos de Pantallas | 2018-07-02 → 2018-06-21 (-11d) | 2018-07-03 → 2018-06-21 (-12d) | 1.2d? → 1d |  | 0d → 2d |  | resources Fernando Nava [31.2%] → none |
| 54 | **AT - Catalogo Tipos de Carga/Descarga** | 2018-07-03 → 2018-06-22 (-11d) | 2018-07-05 → 2018-06-25 (-10d) | 2.4d? → 2d |  | 31.3d → 0d |  |  |
| 55 | AT - Elaboración Bocetos de Archivos | 2018-07-03 → 2018-06-22 (-11d) | 2018-07-04 → 2018-06-22 (-12d) | 1.2d? → 1d |  | 26.8d → 0d | 53 → 50 | resources Fernando Nava [31.2%] → none |
| 56 | AT - Elaboración Bocetos de Pantallas | 2018-07-04 → 2018-06-25 (-9d) | 2018-07-05 → 2018-06-25 (-10d) | 1.2d? → 1d |  | 26.8d → 0d |  | resources Fernando Nava [31.2%] → none |
| 57 | **AT - Catalogo Clientes de Entrega** | 2018-07-03 → 2018-06-22 (-11d) | 2018-07-05 → 2018-06-25 (-10d) | 2.4d? → 2d |  | 31.3d → 73d |  |  |
| 58 | AT - Elaboración Bocetos de Archivos | 2018-07-03 → 2018-06-22 (-11d) | 2018-07-04 → 2018-06-22 (-12d) | 1.2d? → 1d |  | 26.8d → 2d |  | resources Fernando Nava [31.2%] → none |
| 59 | AT - Elaboración Bocetos de Pantallas | 2018-07-04 → 2018-06-25 (-9d) | 2018-07-05 → 2018-06-25 (-10d) | 1.2d? → 1d |  | 26.8d → 2d |  | resources Fernando Nava [31.2%] → none |
| 60 | **AT - Catalogo Clientes Solicidates** | 2018-07-03 → 2018-06-26 (-7d) | 2018-07-05 → 2018-06-27 (-8d) | 2.4d? → 2d |  |  |  |  |
| 61 | AT - Elaboración Bocetos de Archivos | 2018-07-03 → 2018-06-26 (-7d) | 2018-07-04 → 2018-06-26 (-8d) | 1.2d? → 1d |  |  | 53 → 56 | resources Fernando Nava [31.2%] → none |
| 62 | AT - Elaboración Bocetos de Pantallas | 2018-07-04 → 2018-06-27 (-7d) | 2018-07-05 → 2018-06-27 (-8d) | 1.2d? → 1d |  |  |  | resources Fernando Nava [31.2%] → none |
| 63 | **CC_Desarrollo** | 2018-06-15 → 2018-06-28 (+13d) | 2018-08-21 → 2018-07-24 (-28d) | 46.67d? → 19d |  | 1d → 0d |  |  |
| 64 | **Diseño y Construcción** | 2018-06-15 → 2018-06-28 (+13d) | 2018-08-20 → 2018-07-24 (-27d) | 45.67d? → 19d |  | 2d → 0d |  |  |
| 65 | CC - Revision del documento de Arquitectura de Solucion | 2018-06-15 → 2018-06-28 (+13d) | 2018-06-18 → 2018-06-28 (+10d) | 1d? → 1d |  | 40.17d → 0d | 15 → 62 | resources Omar Santiago [37.5%] → none |
| 66 | **CC - Instalacion y Configuracion** | 2018-06-18 → 2018-06-29 (+11d) | 2018-06-25 → 2018-07-03 (+8d) | 4.67d? → 3d |  | 42.01d → 0d |  |  |
| 67 | CC - Instalacion de herramientas de desarrollo | 2018-06-18 → 2018-06-29 (+11d) | 2018-06-21 → 2018-06-29 (+8d) | 3d? → 1d |  | 43.67d → 0d |  | resources Omar Santiago [37.5%] → none |
| 68 | CC - Instalacion de herramientas de gestion de Bases de Datos | 2018-06-18 → 2018-07-02 (+14d) | 2018-06-21 → 2018-07-02 (+11d) | 3d? → 1d |  | 42.01d → 0d | 65 → 67 | resources Omar Santiago [37.5%] → none |
| 69 | CC - Instalacion de herramienta para soportar aplicaciones web | 2018-06-21 → 2018-07-03 (+12d) | 2018-06-25 → 2018-07-03 (+8d) | 1.67d? → 1d |  | 42.01d → 0d |  | resources Omar Santiago [37.5%] → none |
| 70 | **CC - Desarrollo** | 2018-06-18 → 2018-07-04 (+16d) | 2018-07-31 → 2018-07-24 (-7d) | 31.43d? → 15d |  | 15.5d → 0d |  |  |
| 71 | **CC - Modulo Catalogos Maestros** | 2018-06-18 → 2018-07-04 (+16d) | 2018-07-06 → 2018-07-24 (+18d) | 14.62d? → 15d |  | 32.05d → 0d |  |  |

| ID | Task | Start | Finish | Duration | Total float | Predecessors | Other |
| --- | --- | --- | --- | --- | --- | --- | --- |
| 72 | CC - Catalogo Rol | 2018-06-19 → 2018-07-04 (+15d) | 2018-06-20 → 2018-07-04 (+14d) | 1d? → 1d | 43.27d → 0d | 20 → 69 | resources Omar Santiago [50%] → none |
| 73 | CC - Catalogo Actores | 2018-06-18 → 2018-07-05 (+17d) | 2018-06-19 → 2018-07-05 (+16d) | 1d? → 1d | 45.67d → 0d | 23 → 72 | resources Omar Santiago [50%] → none |
| 74 | CC - Catalogo Actores-Roles | 2018-06-20 → 2018-07-06 (+16d) | 2018-06-21 → 2018-07-06 (+15d) | 1d? → 1d | 42.52d → 0d | 26 → 73 | resources Omar Santiago [50%] → none |
| 75 | CC - Catalogo Contratos | 2018-06-20 → 2018-07-09 (+19d) | 2018-06-21 → 2018-07-09 (+18d) | 1d? → 1d | 42.52d → 0d | 29 → 74 | resources Omar Santiago [50%] → none |
| 76 | CC - Catalogo Tipos de Tarifa | 2018-06-22 → 2018-07-10 (+18d) | 2018-06-25 → 2018-07-10 (+15d) | 1d? → 1d | 40.12d → 0d | 32 → 75 | resources Omar Santiago [50%] → none |
| 77 | CC - Catalogo Tarifa | 2018-06-22 → 2018-07-11 (+19d) | 2018-06-25 → 2018-07-11 (+16d) | 1d? → 1d | 40.12d → 0d | 35 → 76 | resources Omar Santiago [50%] → none |
| 78 | CC - Catalogo Conceptos de Tarifa | 2018-06-27 → 2018-07-12 (+15d) | 2018-06-28 → 2018-07-12 (+14d) | 1d? → 1d | 37.73d → 0d | 38 → 77 | resources Omar Santiago [50%] → none |
| 79 | CC - Catalogo Choferes | 2018-06-27 → 2018-07-13 (+16d) | 2018-06-28 → 2018-07-13 (+15d) | 1d? → 1d | 37.73d → 0d | 41 → 78 | resources Omar Santiago [50%] → none |
| 80 | CC - Catalogo Camiones | 2018-06-29 → 2018-07-16 (+17d) | 2018-07-02 → 2018-07-16 (+14d) | 1d? → 1d | 35.33d → 0d | 44 → 79 | resources Omar Santiago [50%] → none |
| 81 | CC - Catalogo Responsables de Incidencias | 2018-06-29 → 2018-07-17 (+18d) | 2018-07-02 → 2018-07-17 (+15d) | 1d? → 1d | 36.1d → 0d | 47 → 80 | resources Omar Santiago [50%] → none |
| 82 | CC - Catalogo Tipos de Incidencias | 2018-07-03 → 2018-07-18 (+15d) | 2018-07-04 → 2018-07-18 (+14d) | 1d? → 1d | 33.7d → 0d | 50 → 81 | resources Omar Santiago [50%] → none |
| 83 | CC - Catalogo Tipos de Viaje | 2018-07-03 → 2018-07-19 (+16d) | 2018-07-04 → 2018-07-19 (+15d) | 1d? → 1d | 33.7d → 0d | 53 → 82 | resources Omar Santiago [50%] → none |
| 84 | CC - Catalogo Tipos de Carga/Descarga | 2018-07-05 → 2018-07-20 (+15d) | 2018-07-06 → 2018-07-20 (+14d) | 1d? → 1d | 31.3d → 0d | 56 → 83 | resources Omar Santiago [50%] → none |
| 85 | CC - Catalogo Clientes de Entrega | 2018-07-05 → 2018-07-23 (+18d) | 2018-07-06 → 2018-07-23 (+17d) | 1d? → 1d | 31.3d → 0d | 59 → 84 | resources Omar Santiago [50%] → none |
| 86 | CC - Catalogo Clientes Solicidates | 2018-07-05 → 2018-07-24 (+19d) | 2018-07-06 → 2018-07-24 (+18d) | 1d? → 1d | 31.3d → 0d | 62 → 85 | resources Omar Santiago [50%] → none |
| 87 | **PU - Pruebas Untarias** | 2018-06-19 → 2018-07-05 (+16d) | 2018-08-01 → 2018-07-25 (-7d) | 31.43d? → 15d | 14.5d → 14d |  |  |
| 88 | **PU - Modulo Catalogos Maestros** | 2018-06-19 → 2018-07-05 (+16d) | 2018-07-09 → 2018-07-25 (+16d) | 14.62d? → 15d | 31.3d → 14d |  |  |
| 89 | PU - Catalogo Rol | 2018-06-20 → 2018-07-05 (+15d) | 2018-06-21 → 2018-07-05 (+14d) | 1d? → 1d | 38.77d → 17d |  | resources Omar Santiago/Fernando Nava [25%] → none |
| 90 | PU - Catalogo Actores | 2018-06-19 → 2018-07-06 (+17d) | 2018-06-19 → 2018-07-06 (+17d) | 0.25d? → 1d | 41.17d → 16d |  | resources Omar Santiago/Fernando Nava → none |
| 91 | PU - Catalogo Actores-Roles | 2018-06-21 → 2018-07-09 (+18d) | 2018-06-22 → 2018-07-09 (+17d) | 1d? → 1d | 38.02d → 15d |  | resources Omar Santiago/Fernando Nava [25%] → none |
| 92 | PU - Catalogo Contratos | 2018-06-21 → 2018-07-10 (+19d) | 2018-06-22 → 2018-07-10 (+18d) | 1d? → 1d | 38.02d → 14d |  | resources Omar Santiago/Fernando Nava [25%] → none |
| 93 | PU - Catalogo Tipos de Tarifa | 2018-06-25 → 2018-07-11 (+16d) | 2018-06-26 → 2018-07-11 (+15d) | 1d? → 1d | 35.62d → 13d |  | resources Omar Santiago/Fernando Nava [25%] → none |
| 94 | PU - Catalogo Tarifa | 2018-06-25 → 2018-07-12 (+17d) | 2018-06-26 → 2018-07-12 (+16d) | 1d? → 1d | 35.62d → 12d |  | resources Omar Santiago/Fernando Nava [25%] → none |
| 95 | PU - Catalogo Conceptos de Tarifa | 2018-06-28 → 2018-07-13 (+15d) | 2018-06-29 → 2018-07-13 (+14d) | 1d? → 1d | 33.23d → 11d |  | resources Omar Santiago/Fernando Nava [25%] → none |
| 96 | PU - Catalogo Choferes | 2018-06-28 → 2018-07-16 (+18d) | 2018-06-29 → 2018-07-16 (+17d) | 1d? → 1d | 33.23d → 10d |  | resources Omar Santiago/Fernando Nava [25%] → none |
| 97 | PU - Catalogo Camiones | 2018-07-02 → 2018-07-17 (+15d) | 2018-07-03 → 2018-07-17 (+14d) | 1d? → 1d | 30.82d → 9d |  | resources Omar Santiago/Fernando Nava [25%] → none |
| 98 | PU - Catalogo Responsables de Incidencias | 2018-07-02 → 2018-07-18 (+16d) | 2018-07-03 → 2018-07-18 (+15d) | 1d? → 1d | 31.6d → 8d |  | resources Omar Santiago/Fernando Nava [25%] → none |
| 99 | PU - Catalogo Tipos de Incidencias | 2018-07-04 → 2018-07-19 (+15d) | 2018-07-05 → 2018-07-19 (+14d) | 1d? → 1d | 29.2d → 7d |  | resources Omar Santiago/Fernando Nava [25%] → none |
| 100 | PU - Catalogo Tipos de Viaje | 2018-07-04 → 2018-07-20 (+16d) | 2018-07-05 → 2018-07-20 (+15d) | 1d? → 1d | 29.2d → 6d |  | resources Omar Santiago/Fernando Nava [25%] → none |
| 101 | PU - Catalogo Tipos de Carga/Descarga | 2018-07-06 → 2018-07-23 (+17d) | 2018-07-09 → 2018-07-23 (+14d) | 1d? → 1d | 26.8d → 5d |  | resources Omar Santiago/Fernando Nava [25%] → none |
| 102 | PU - Catalogo Clientes de Entrega | 2018-07-06 → 2018-07-24 (+18d) | 2018-07-09 → 2018-07-24 (+15d) | 1d? → 1d | 26.8d → 4d |  | resources Omar Santiago/Fernando Nava [25%] → none |
| 103 | PU - Catalogo Clientes Solicidates | 2018-07-06 → 2018-07-25 (+19d) | 2018-07-09 → 2018-07-25 (+16d) | 1d? → 1d | 26.8d → 0d |  | resources Omar Santiago/Fernando Nava [25%] → none |
| 105 | **Modulo Seguridad** | 2018-08-01 → 2018-07-27 (-5d) | 2018-08-09 → 2018-08-16 (+7d) | 5.5d? → 15d |  |  | was named TD - Instalacion en Ambiente QA o TEST |
| 119 | **AT - Modulo Seguridad** | 2018-07-05 → 2018-08-06 (+32d) | 2018-07-12 → 2018-08-09 (+28d) | 4.8d? → 4d |  |  |  |
| 120 | **AT - Roles** | 2018-07-05 → 2018-08-06 (+32d) | 2018-07-10 → 2018-08-07 (+28d) | 2.4d? → 2d | 28.15d → 0d |  |  |
| 121 | AT - Elaboración Bocetos de Archivos | 2018-07-05 → 2018-08-06 (+32d) | 2018-07-09 → 2018-08-06 (+28d) | 1.2d? → 1d | 24.4d → 0d | 62 → 118 | resources Fernando Nava [31.2%] → none |
| 122 | AT - Elaboración Bocetos de Pantallas | 2018-07-09 → 2018-08-07 (+29d) | 2018-07-10 → 2018-08-07 (+28d) | 1.2d? → 1d | 24.4d → 0d |  | resources Fernando Nava [31.2%] → none |
| 123 | **AT - Configuracion** | 2018-07-05 → 2018-08-06 (+32d) | 2018-07-10 → 2018-08-07 (+28d) | 2.4d? → 2d | 0d → 42d |  |  |
| 124 | AT - Elaboración Bocetos de Archivos | 2018-07-05 → 2018-08-06 (+32d) | 2018-07-09 → 2018-08-06 (+28d) | 1.2d? → 1d | 0d → 8d | 62 → 118 | resources Fernando Nava [31.2%] → none |
| 125 | AT - Elaboración Bocetos de Pantallas | 2018-07-09 → 2018-08-07 (+29d) | 2018-07-10 → 2018-08-07 (+28d) | 1.2d? → 1d | 0d → 8d |  | resources Fernando Nava [31.2%] → none |
| 126 | **AT - Permisos** | 2018-07-10 → 2018-08-08 (+29d) | 2018-07-12 → 2018-08-09 (+28d) | 2.4d? → 2d |  |  |  |
| 127 | AT - Elaboración Bocetos de Archivos | 2018-07-10 → 2018-08-08 (+29d) | 2018-07-11 → 2018-08-08 (+28d) | 1.2d? → 1d |  | 125 → 122 | resources Fernando Nava [31.2%] → none |
| 128 | AT - Elaboración Bocetos de Pantallas | 2018-07-11 → 2018-08-09 (+29d) | 2018-07-12 → 2018-08-09 (+28d) | 1.2d? → 1d |  |  | resources Fernando Nava [31.2%] → none |
| 129 | **CC - Modulo Seguridad** | 2018-07-10 → 2018-08-10 (+31d) | 2018-07-16 → 2018-08-15 (+30d) | 4.4d? → 4d | 25.5d → 0d |  |  |
| 132 | CC - Roles | 2018-07-10 → 2018-08-13 (+34d) | 2018-07-11 → 2018-08-13 (+33d) | 1.75d? → 1d | 28.15d → 0d | 122 → 131 | resources Omar Santiago [50%] → none |
| 133 | CC - Configuracion | 2018-07-10 → 2018-08-14 (+35d) | 2018-07-11 → 2018-08-14 (+34d) | 1.75d? → 1d | 28.15d → 0d | 125 → 132 | resources Omar Santiago [50%] → none |
| 134 | CC - Permisos | 2018-07-12 → 2018-08-15 (+34d) | 2018-07-16 → 2018-08-15 (+30d) | 2d? → 1d | 25.5d → 0d | 128 → 133 | resources Omar Santiago [50%] → none |
| 135 | **PU - Modulo Seguridad** | 2018-07-11 → 2018-08-14 (+34d) | 2018-07-17 → 2018-08-16 (+30d) | 3.65d? → 3d | 25.5d → 2d |  |  |
| 136 | PU - Roles | 2018-07-11 → 2018-08-14 (+34d) | 2018-07-12 → 2018-08-14 (+33d) | 1d? → 1d | 23.65d → 3d |  | resources Omar Santiago/Fernando Nava [25%] → none |
| 137 | PU - Configuracion | 2018-07-11 → 2018-08-15 (+35d) | 2018-07-12 → 2018-08-15 (+34d) | 1d? → 1d | 23.65d → 2d |  | resources Omar Santiago/Fernando Nava [25%] → none |
| 138 | PU - Permisos | 2018-07-16 → 2018-08-16 (+31d) | 2018-07-17 → 2018-08-16 (+30d) | 1d? → 1d | 21d → 0d |  | resources Omar Santiago/Fernando Nava [25%] → none |
| 139 | LB - Liberacion Modulo 2 | 2018-08-14 → 2018-08-17 (+3d) | 2018-08-15 → 2018-08-17 (+2d) |  |  | PI - Permisos → 138 | was named PI - Distribucion - Asugnacion de Unidad y Carga; resources Omar Santiago/Fernando Nava/ITSC [25%] → none |
| 140 | **Modulo Solicitud** | 2018-08-15 → 2018-08-20 (+5d) | 2018-08-16 → 2018-09-17 (+32d) | 1d? → 21d | 4d → 0d | 139 → none | was named PI - Operador CL - Operación y Descarga; resources Omar Santiago/Fernando Nava/ITSC [25%] → none |
| 154 | **AT - Modulo Solicitudes** | 2018-07-12 → 2018-08-27 (+46d) | 2018-07-24 → 2018-09-03 (+41d) | 8d? → 6d |  |  |  |
| 155 | **AT - Cliente - Solicitud de Transporte** | 2018-07-12 → 2018-08-27 (+46d) | 2018-07-17 → 2018-08-28 (+42d) | 2.67d? → 2d | 23.83d → 25d |  |  |
| 156 | AT - Elaboración Bocetos de Archivos | 2018-07-12 → 2018-08-27 (+46d) | 2018-07-13 → 2018-08-27 (+45d) | 1.33d? → 1d | 19.33d → 25d | 128 → 152 | resources Fernando Nava [37.5%] → none |
| 157 | AT - Elaboración Bocetos de Pantallas | 2018-07-13 → 2018-08-28 (+46d) | 2018-07-17 → 2018-08-28 (+42d) | 1.33d? → 1d | 19.33d → 25d |  | resources Fernando Nava [37.5%] → none |
| 158 | **AT - Trafico - Valoracion del Viaje** | 2018-07-12 → 2018-08-27 (+46d) | 2018-07-17 → 2018-08-28 (+42d) | 2.67d? → 2d |  |  |  |
| 159 | AT - Elaboración Bocetos de Archivos | 2018-07-12 → 2018-08-27 (+46d) | 2018-07-13 → 2018-08-27 (+45d) | 1.33d? → 1d |  | 128 → 152 | resources Fernando Nava [37.5%] → none |
| 160 | AT - Elaboración Bocetos de Pantallas | 2018-07-13 → 2018-08-28 (+46d) | 2018-07-17 → 2018-08-28 (+42d) | 1.33d? → 1d |  |  | resources Fernando Nava [37.5%] → none |
| 161 | **AT - Distribucion - Asugnacion de Unidad y Carga** | 2018-07-17 → 2018-08-29 (+43d) | 2018-07-19 → 2018-08-30 (+42d) | 2.67d? → 2d | 21.17d → 25d |  |  |
| 162 | AT - Elaboración Bocetos de Archivos | 2018-07-17 → 2018-08-29 (+43d) | 2018-07-18 → 2018-08-29 (+42d) | 1.33d? → 1d | 16.67d → 25d | 160 → 157 | resources Fernando Nava [37.5%] → none |
| 163 | AT - Elaboración Bocetos de Pantallas | 2018-07-18 → 2018-08-30 (+43d) | 2018-07-19 → 2018-08-30 (+42d) | 1.33d? → 1d | 16.67d → 25d |  | resources Fernando Nava [37.5%] → none |
| 164 | **AT - Operador CL - Operación y Descarga** | 2018-07-17 → 2018-08-29 (+43d) | 2018-07-19 → 2018-08-30 (+42d) | 2.67d? → 2d |  |  |  |
| 165 | AT - Elaboración Bocetos de Archivos | 2018-07-17 → 2018-08-29 (+43d) | 2018-07-18 → 2018-08-29 (+42d) | 1.33d? → 1d |  |  | resources Fernando Nava [37.5%] → none |
| 166 | AT - Elaboración Bocetos de Pantallas | 2018-07-18 → 2018-08-30 (+43d) | 2018-07-19 → 2018-08-30 (+42d) | 1.33d? → 1d |  |  | resources Fernando Nava [37.5%] → none |
| 167 | **AT - Distribucion - Cierre del Viaje y Facturacion** | 2018-07-19 → 2018-08-31 (+43d) | 2018-07-24 → 2018-09-03 (+41d) | 2.67d? → 2d |  |  |  |
| 168 | AT - Elaboración Bocetos de Archivos | 2018-07-19 → 2018-08-31 (+43d) | 2018-07-23 → 2018-08-31 (+39d) | 1.33d? → 1d |  |  | resources Fernando Nava [37.5%] → none |
| 169 | AT - Elaboración Bocetos de Pantallas | 2018-07-23 → 2018-09-03 (+42d) | 2018-07-24 → 2018-09-03 (+41d) | 1.33d? → 1d |  |  | resources Fernando Nava [37.5%] → none |
| 170 | **CC - Modulo Solicitudes** | 2018-07-17 → 2018-09-04 (+49d) | 2018-07-30 → 2018-09-17 (+49d) | 9.49d? → 10d | 16.34d → 0d |  |  |

| ID | Task | Start | Finish | Duration | Total float | Predecessors | Other |
| --- | --- | --- | --- | --- | --- | --- | --- |
| 173 | CC - Cliente - Solicitud de Transporte | 2018-07-17 → 2018-09-05 (+50d) | 2018-07-18 → 2018-09-05 (+49d) | 1d? → 1d | 23.83d → 0d | 157 → 172 | resources Omar Santiago [87.5%] → none |
| 174 | CC - Trafico - Valoracion del Viaje | 2018-07-17 → 2018-09-06 (+51d) | 2018-07-18 → 2018-09-06 (+50d) | 1d? → 1d | 23.83d → 0d | 160 → 173 | resources Omar Santiago [87.5%] → none |
| 175 | CC - Distribucion - Asugnacion de Unidad y Carga | 2018-07-19 → 2018-09-07 (+50d) | 2018-07-20 → 2018-09-07 (+49d) | 1d? → 1d | 21.17d → 0d | 163 → 174 | resources Omar Santiago [87.5%] → none |
| 176 | CC - Operador CL - Operación y Descarga | 2018-07-19 → 2018-09-10 (+53d) | 2018-07-20 → 2018-09-10 (+52d) | 1d? → 1d | 21.17d → 0d | 166 → 175 | resources Omar Santiago [87.5%] → none |
| 177 | CC - Distribucion - Cierre del Viaje y Facturacion | 2018-07-24 → 2018-09-11 (+49d) | 2018-07-25 → 2018-09-11 (+48d) | 1d? → 1d | 16.34d → 0d | 169 → 176 | resources Omar Santiago [87.5%] → none |
| 178 | **CC - Primer Check point operativo** | 2018-07-25 → 2018-09-12 (+49d) | 2018-07-27 → 2018-09-13 (+48d) | 2d? → 2d | 16.34d → 13d |  |  |
| 179 | CC - Primer Check point operativo | 2018-07-25 → 2018-09-12 (+49d) | 2018-07-26 → 2018-09-12 (+48d) | 1d? → 1d | 16.34d → 13d |  | resources Omar Santiago/ITSC [25%] → none |
| 180 | CC - Actualizacion de los puntos del primer Ckeckpoint | 2018-07-26 → 2018-09-13 (+49d) | 2018-07-27 → 2018-09-13 (+48d) | 1d? → 1d | 16.34d → 13d |  | resources Omar Santiago/ITSC [87.5%] → none |
| 181 | **CC - Segundo Check point operativo** | 2018-07-27 → 2018-09-14 (+49d) | 2018-07-30 → 2018-09-17 (+49d) | 1.16d? → 2d | 16.34d → 13d |  |  |
| 182 | CC - Segundo Check point operativo | 2018-07-27 → 2018-09-14 (+49d) | 2018-07-27 → 2018-09-14 (+49d) | 0.29d? → 1d | 16.34d → 13d |  | resources Omar Santiago/ITSC [87.5%] → none |
| 183 | CC - Actualizacion de los puntos del segundo Check point operativo | 2018-07-27 → 2018-09-17 (+52d) | 2018-07-30 → 2018-09-17 (+49d) | 0.88d? → 1d | 16.34d → 13d |  | resources Omar Santiago/ITSC → none |
| 184 | **PU - Modulo Solicitudes** | 2018-07-18 → 2018-09-06 (+50d) | 2018-07-26 → 2018-09-12 (+48d) | 6.33d? → 5d | 18.5d → 4d |  |  |
| 185 | PU - Cliente - Solicitud de Transporte | 2018-07-18 → 2018-09-06 (+50d) | 2018-07-19 → 2018-09-06 (+49d) | 1d? → 1d | 19.33d → 20d |  | resources Omar Santiago/Fernando Nava [37.5%] → none |
| 186 | PU - Trafico - Valoracion del Viaje | 2018-07-18 → 2018-09-07 (+51d) | 2018-07-19 → 2018-09-07 (+50d) | 1d? → 1d | 19.33d → 19d |  | resources Omar Santiago/Fernando Nava [37.5%] → none |
| 187 | PU - Distribucion - Asugnacion de Unidad y Carga | 2018-07-20 → 2018-09-10 (+52d) | 2018-07-23 → 2018-09-10 (+49d) | 1d? → 1d | 16.67d → 18d |  | resources Omar Santiago/Fernando Nava [37.5%] → none |
| 188 | PU - Operador CL - Operación y Descarga | 2018-07-20 → 2018-09-11 (+53d) | 2018-07-23 → 2018-09-11 (+50d) | 1d? → 1d | 16.67d → 17d |  | resources Omar Santiago/Fernando Nava [37.5%] → none |
| 189 | PU - Distribucion - Cierre del Viaje y Facturacion | 2018-07-25 → 2018-09-12 (+49d) | 2018-07-26 → 2018-09-12 (+48d) | 1d? → 1d | 14d → 0d |  | resources Omar Santiago/Fernando Nava [37.5%] → none |
| 205 | **AT - Modulo Alarmas/Reportes/Indicadores de gestión** | 2018-07-24 → 2018-09-24 (+62d) | 2018-07-30 → 2018-09-27 (+59d) | 4d? → 4d |  |  |  |
| 206 | **AT - Alarmas** | 2018-07-24 → 2018-09-24 (+62d) | 2018-07-26 → 2018-09-25 (+61d) | 2d? → 2d | 16.5d → 7d |  |  |
| 207 | AT - Elaboración Bocetos de Archivos | 2018-07-24 → 2018-09-24 (+62d) | 2018-07-25 → 2018-09-24 (+61d) | 1d? → 1d | 12d → 7d | 169 → 204 | resources Fernando Nava [37.5%] → none |
| 208 | AT - Elaboración Bocetos de Pantallas | 2018-07-25 → 2018-09-25 (+62d) | 2018-07-26 → 2018-09-25 (+61d) | 1d? → 1d | 12d → 7d |  | resources Fernando Nava [37.5%] → none |
| 209 | **AT - Reportes** | 2018-07-24 → 2018-09-24 (+62d) | 2018-07-26 → 2018-09-25 (+61d) | 2d? → 2d |  |  |  |
| 210 | AT - Elaboración Bocetos de Archivos | 2018-07-24 → 2018-09-24 (+62d) | 2018-07-25 → 2018-09-24 (+61d) | 1d? → 1d |  | 169 → 204 | resources Fernando Nava [37.5%] → none |
| 211 | AT - Elaboración Bocetos de Pantallas | 2018-07-25 → 2018-09-25 (+62d) | 2018-07-26 → 2018-09-25 (+61d) | 1d? → 1d |  |  | resources Fernando Nava [37.5%] → none |
| 212 | **AT - Indicadores de gestión** | 2018-07-26 → 2018-09-26 (+62d) | 2018-07-30 → 2018-09-27 (+59d) | 2d? → 2d |  |  |  |
| 213 | AT - Elaboración Bocetos de Archivos | 2018-07-26 → 2018-09-26 (+62d) | 2018-07-27 → 2018-09-26 (+61d) | 1d? → 1d |  |  | resources Fernando Nava [37.5%] → none |
| 214 | AT - Elaboración Bocetos de Pantallas | 2018-07-27 → 2018-09-27 (+62d) | 2018-07-30 → 2018-09-27 (+59d) | 1d? → 1d |  |  | resources Fernando Nava [37.5%] → none |
| 215 | **CC - Modulo Alarmas/Reportes/Indicadores de gestión** | 2018-07-26 → 2018-09-28 (+64d) | 2018-07-31 → 2018-10-03 (+64d) | 3d? → 4d | 2d → 0d |  |  |
| 218 | CC - Alarmas | 2018-07-26 → 2018-10-01 (+67d) | 2018-07-27 → 2018-10-01 (+66d) | 1d? → 1d | 16.5d → 0d | 208 → 217 | resources Omar Santiago [75%] → none |
| 219 | CC - Reportes | 2018-07-26 → 2018-10-02 (+68d) | 2018-07-27 → 2018-10-02 (+67d) | 1d? → 1d | 16.5d → 0d | 211 → 218 | resources Omar Santiago [75%] → none |
| 220 | CC - Indicadores de gestión | 2018-07-30 → 2018-10-03 (+65d) | 2018-07-31 → 2018-10-03 (+64d) | 1d? → 1d |  | 214 → 219 | resources Omar Santiago [75%] → none |
| 221 | **PU - Modulo Alarmas/Reportes/Indicadores de gestión** | 2018-07-27 → 2018-10-02 (+67d) | 2018-08-01 → 2018-10-04 (+64d) | 3d? → 3d | 2d → 0d |  |  |
| 222 | PU - Alarmas | 2018-07-27 → 2018-10-02 (+67d) | 2018-07-30 → 2018-10-02 (+64d) | 1d? → 1d | 16.5d → 2d |  | resources Omar Santiago/Fernando Nava [37.5%] → none |
| 223 | PU - Reportes | 2018-07-27 → 2018-10-03 (+68d) | 2018-07-30 → 2018-10-03 (+65d) | 1d? → 1d | 16.5d → 1d |  | resources Omar Santiago/Fernando Nava [37.5%] → none |
| 224 | PU - Indicadores de gestión | 2018-07-31 → 2018-10-04 (+65d) | 2018-08-01 → 2018-10-04 (+64d) | 1d? → 1d |  |  | resources Omar Santiago/Fernando Nava [37.5%] → none |

## Version 10 (saved 2018-05-30, file PLAN_AT_CC_FECHAS_v30052018161500.mpp)

Note of the change: Merge pull request #1 from ProyectoInicial/master

Last finish 2018-10-04 → 2018-09-06 (-28d).

Added:

| ID | Task | Duration | Start | Finish | Constraint |
| --- | --- | --- | --- | --- | --- |
| 2 | Inicio de Actividades | 1d? | 2018-06-01 | 2018-06-01 | start no earlier than 2018-06-01 |

Changed:

| ID | Task | Start | Finish | Duration | Total float | Predecessors |
| --- | --- | --- | --- | --- | --- | --- |
| 1 | **001-ITSC_TMS Plan de Analisis y Desarrollo** |  | 2018-10-04 → 2018-09-06 (-28d) | 93d? → 94d? |  |  |
| 3 | **Modulo Catalogos Maestros** | 2018-05-29 → 2018-06-02 (+4d) | 2018-07-25 → 2018-07-13 (-12d) | 42d → 39d |  |  |
| 4 | **AT Analisis de Tecnico** | 2018-05-29 → 2018-06-02 (+4d) | 2018-06-27 → 2018-06-22 (-5d) | 22d → 19d |  |  |
| 5 | **IAT - Revisión de documentación entregada por Negocio** | 2018-05-29 → 2018-06-02 (+4d) | 2018-05-30 → 2018-06-04 (+5d) |  |  |  |
| 6 | AT - Requerimientos de Negocio (Junta de Entendimiento) | 2018-05-29 → 2018-06-02 (+4d) | 2018-05-29 → 2018-06-02 (+4d) |  |  | none → 2 |
| 7 | AT - Casos de Uso (Junta de Entendimiento) | 2018-05-30 → 2018-06-02 (+3d) | 2018-05-30 → 2018-06-04 (+5d) |  |  |  |
| 8 | **AT - Elaboracion de propuesta de Arquitectura de Solucion** | 2018-05-31 → 2018-06-04 (+4d) | 2018-06-05 → 2018-06-07 (+2d) | 4d → 3d |  |  |
| 9 | AT - Requerimientos tecnicos | 2018-05-31 → 2018-06-04 (+4d) | 2018-05-31 → 2018-06-05 (+5d) |  | 15d → 87d |  |
| 10 | AT - Analisis tecnico | 2018-05-31 → 2018-06-04 (+4d) | 2018-05-31 → 2018-06-05 (+5d) |  |  |  |
| 11 | AT - Requerimientos de solucion | 2018-06-01 → 2018-06-05 (+4d) | 2018-06-01 → 2018-06-06 (+5d) |  | 14d → 86d |  |
| 12 | AT - Escalabilidad | 2018-06-01 → 2018-06-05 (+4d) | 2018-06-01 → 2018-06-06 (+5d) |  |  |  |
| 13 | AT - Modelado BD | 2018-06-04 → 2018-06-06 (+2d) | 2018-06-04 → 2018-06-07 (+3d) |  | 13d → 85d |  |
| 14 | AT - Herramientas para solucion | 2018-06-04 → 2018-06-06 (+2d) | 2018-06-04 → 2018-06-07 (+3d) |  | 0d → 85d |  |
| 15 | AT - Aplicación responsiva para navegadores web | 2018-06-05 → 2018-06-06 (+1d) | 2018-06-05 → 2018-06-07 (+2d) |  | 12d → 85d | 14 → 12 |
| 16 | AT - Peer Review y Vo Bo Arquitectura de Solucion | 2018-06-05 → 2018-06-06 (+1d) | 2018-06-05 → 2018-06-07 (+2d) |  |  | 14 → 12 |
| 17 | **AT - Elaboración de documentos AT** | 2018-06-06 → 2018-06-07 (+1d) | 2018-06-27 → 2018-06-22 (-5d) | 16d → 14d |  |  |
| 18 | **AT - Modulo Catalogos Maestros** | 2018-06-06 → 2018-06-07 (+1d) | 2018-06-27 → 2018-06-22 (-5d) | 16d → 14d |  |  |
| 19 | **AT - Catalogo Rol** | 2018-06-06 → 2018-06-07 (+1d) | 2018-06-07 → 2018-06-09 (+2d) |  |  |  |
| 20 | AT - Elaboración Bocetos de Archivos | 2018-06-06 → 2018-06-07 (+1d) | 2018-06-06 → 2018-06-08 (+2d) |  |  |  |
| 21 | AT - Elaboración Bocetos de Pantallas | 2018-06-07 → 2018-06-08 (+1d) | 2018-06-07 → 2018-06-09 (+2d) |  |  |  |
| 22 | **AT - Catalogo Actores** | 2018-06-06 → 2018-06-07 (+1d) | 2018-06-07 → 2018-06-09 (+2d) |  | 73d → 81d |  |
| 23 | AT - Elaboración Bocetos de Archivos | 2018-06-06 → 2018-06-07 (+1d) | 2018-06-06 → 2018-06-08 (+2d) |  | 2d → 81d |  |
| 24 | AT - Elaboración Bocetos de Pantallas | 2018-06-07 → 2018-06-08 (+1d) | 2018-06-07 → 2018-06-09 (+2d) |  | 2d → 81d |  |
| 25 | **AT - Catalogo Actores-Roles** | 2018-06-08 → 2018-06-09 (+1d) |  |  | 0d → 81d |  |
| 26 | AT - Elaboración Bocetos de Archivos | 2018-06-08 → 2018-06-09 (+1d) | 2018-06-08 → 2018-06-09 (+1d) |  | 0d → 81d |  |
| 28 | **AT - Catalogo Contratos** | 2018-06-08 → 2018-06-09 (+1d) |  |  | 73d → 81d |  |
| 29 | AT - Elaboración Bocetos de Archivos | 2018-06-08 → 2018-06-09 (+1d) | 2018-06-08 → 2018-06-09 (+1d) |  | 2d → 81d |  |
| 31 | **AT - Catalogo Tipos de Tarifa** | 2018-06-12 → 2018-06-09 (-3d) | 2018-06-13 → 2018-06-11 (-2d) |  |  |  |
| 32 | AT - Elaboración Bocetos de Archivos | 2018-06-12 → 2018-06-09 (-3d) | 2018-06-12 → 2018-06-09 (-3d) |  |  | 27 → 21 |
| 33 | AT - Elaboración Bocetos de Pantallas | 2018-06-13 → 2018-06-11 (-2d) | 2018-06-13 → 2018-06-11 (-2d) |  |  |  |
| 34 | **AT - Catalogo Tarifa** | 2018-06-12 → 2018-06-09 (-3d) | 2018-06-13 → 2018-06-11 (-2d) |  |  |  |
| 35 | AT - Elaboración Bocetos de Archivos | 2018-06-12 → 2018-06-09 (-3d) | 2018-06-12 → 2018-06-09 (-3d) |  | 2d → 73d | 30 → 21 |
| 36 | AT - Elaboración Bocetos de Pantallas | 2018-06-13 → 2018-06-11 (-2d) | 2018-06-13 → 2018-06-11 (-2d) |  | 2d → 73d |  |
| 37 | **AT - Catalogo Conceptos de Tarifa** | 2018-06-14 → 2018-06-12 (-2d) | 2018-06-15 → 2018-06-13 (-2d) |  |  |  |
| 38 | AT - Elaboración Bocetos de Archivos | 2018-06-14 → 2018-06-12 (-2d) | 2018-06-14 → 2018-06-12 (-2d) |  |  |  |
| 39 | AT - Elaboración Bocetos de Pantallas | 2018-06-15 → 2018-06-13 (-2d) | 2018-06-15 → 2018-06-13 (-2d) |  |  |  |
| 40 | **AT - Catalogo Choferes** | 2018-06-14 → 2018-06-12 (-2d) | 2018-06-15 → 2018-06-13 (-2d) |  |  |  |
| 41 | AT - Elaboración Bocetos de Archivos | 2018-06-14 → 2018-06-12 (-2d) | 2018-06-14 → 2018-06-12 (-2d) |  | 2d → 73d |  |
| 42 | AT - Elaboración Bocetos de Pantallas | 2018-06-15 → 2018-06-13 (-2d) | 2018-06-15 → 2018-06-13 (-2d) |  | 2d → 73d |  |
| 43 | **AT - Catalogo Camiones** | 2018-06-18 → 2018-06-14 (-4d) | 2018-06-19 → 2018-06-15 (-4d) |  |  |  |
| 44 | AT - Elaboración Bocetos de Archivos | 2018-06-18 → 2018-06-14 (-4d) | 2018-06-18 → 2018-06-14 (-4d) |  |  |  |
| 45 | AT - Elaboración Bocetos de Pantallas | 2018-06-19 → 2018-06-15 (-4d) | 2018-06-19 → 2018-06-15 (-4d) |  |  |  |
| 46 | **AT - Catalogo Responsables de Incidencias** | 2018-06-18 → 2018-06-14 (-4d) | 2018-06-19 → 2018-06-15 (-4d) |  |  |  |
| 47 | AT - Elaboración Bocetos de Archivos | 2018-06-18 → 2018-06-14 (-4d) | 2018-06-18 → 2018-06-14 (-4d) |  | 2d → 73d |  |
| 48 | AT - Elaboración Bocetos de Pantallas | 2018-06-19 → 2018-06-15 (-4d) | 2018-06-19 → 2018-06-15 (-4d) |  | 2d → 73d |  |
| 49 | **AT - Catalogo Tipos de Incidencias** | 2018-06-20 → 2018-06-16 (-4d) | 2018-06-21 → 2018-06-18 (-3d) |  |  |  |
| 50 | AT - Elaboración Bocetos de Archivos | 2018-06-20 → 2018-06-16 (-4d) | 2018-06-20 → 2018-06-16 (-4d) |  |  |  |
| 51 | AT - Elaboración Bocetos de Pantallas | 2018-06-21 → 2018-06-16 (-5d) | 2018-06-21 → 2018-06-18 (-3d) |  |  |  |
| 52 | **AT - Catalogo Tipos de Viaje** | 2018-06-20 → 2018-06-16 (-4d) | 2018-06-21 → 2018-06-18 (-3d) |  |  |  |
| 53 | AT - Elaboración Bocetos de Archivos | 2018-06-20 → 2018-06-16 (-4d) | 2018-06-20 → 2018-06-16 (-4d) |  | 2d → 73d |  |
| 54 | AT - Elaboración Bocetos de Pantallas | 2018-06-21 → 2018-06-16 (-5d) | 2018-06-21 → 2018-06-18 (-3d) |  | 2d → 73d |  |
| 55 | **AT - Catalogo Tipos de Carga/Descarga** | 2018-06-22 → 2018-06-18 (-4d) | 2018-06-25 → 2018-06-20 (-5d) |  |  |  |
| 56 | AT - Elaboración Bocetos de Archivos | 2018-06-22 → 2018-06-18 (-4d) | 2018-06-22 → 2018-06-19 (-3d) |  |  |  |
| 57 | AT - Elaboración Bocetos de Pantallas | 2018-06-25 → 2018-06-19 (-6d) | 2018-06-25 → 2018-06-20 (-5d) |  |  |  |
| 58 | **AT - Catalogo Clientes de Entrega** | 2018-06-22 → 2018-06-18 (-4d) | 2018-06-25 → 2018-06-20 (-5d) |  |  |  |
| 59 | AT - Elaboración Bocetos de Archivos | 2018-06-22 → 2018-06-18 (-4d) | 2018-06-22 → 2018-06-19 (-3d) |  | 2d → 73d |  |
| 60 | AT - Elaboración Bocetos de Pantallas | 2018-06-25 → 2018-06-19 (-6d) | 2018-06-25 → 2018-06-20 (-5d) |  | 2d → 73d |  |
| 61 | **AT - Catalogo Clientes Solicidates** | 2018-06-26 → 2018-06-20 (-6d) | 2018-06-27 → 2018-06-22 (-5d) |  |  |  |
| 62 | AT - Elaboración Bocetos de Archivos | 2018-06-26 → 2018-06-20 (-6d) | 2018-06-26 → 2018-06-21 (-5d) |  |  |  |
| 63 | AT - Elaboración Bocetos de Pantallas | 2018-06-27 → 2018-06-21 (-6d) | 2018-06-27 → 2018-06-22 (-5d) |  |  |  |
| 64 | **CC_Desarrollo** | 2018-06-28 → 2018-06-22 (-6d) | 2018-07-24 → 2018-07-12 (-12d) |  |  |  |
| 65 | **Diseño y Construcción** | 2018-06-28 → 2018-06-22 (-6d) | 2018-07-24 → 2018-07-12 (-12d) |  |  |  |
| 66 | CC - Revision del documento de Arquitectura de Solucion | 2018-06-28 → 2018-06-22 (-6d) | 2018-06-28 → 2018-06-23 (-5d) |  |  |  |
| 67 | **CC - Instalacion y Configuracion** | 2018-06-29 → 2018-06-23 (-6d) | 2018-07-03 → 2018-06-26 (-7d) |  |  |  |
| 68 | CC - Instalacion de herramientas de desarrollo | 2018-06-29 → 2018-06-23 (-6d) | 2018-06-29 → 2018-06-23 (-6d) |  |  |  |
| 69 | CC - Instalacion de herramientas de gestion de Bases de Datos | 2018-07-02 → 2018-06-25 (-7d) | 2018-07-02 → 2018-06-25 (-7d) |  |  |  |
| 70 | CC - Instalacion de herramienta para soportar aplicaciones web | 2018-07-03 → 2018-06-26 (-7d) | 2018-07-03 → 2018-06-26 (-7d) |  |  |  |
| 71 | **CC - Desarrollo** | 2018-07-04 → 2018-06-27 (-7d) | 2018-07-24 → 2018-07-12 (-12d) |  |  |  |
| 72 | **CC - Modulo Catalogos Maestros** | 2018-07-04 → 2018-06-27 (-7d) | 2018-07-24 → 2018-07-12 (-12d) |  |  |  |
| 73 | CC - Catalogo Rol | 2018-07-04 → 2018-06-27 (-7d) | 2018-07-04 → 2018-06-27 (-7d) |  |  |  |

| ID | Task | Start | Finish | Total float |
| --- | --- | --- | --- | --- |
| 74 | CC - Catalogo Actores | 2018-07-05 → 2018-06-28 (-7d) | 2018-07-05 → 2018-06-28 (-7d) |  |
| 75 | CC - Catalogo Actores-Roles | 2018-07-06 → 2018-06-29 (-7d) | 2018-07-06 → 2018-06-29 (-7d) |  |
| 76 | CC - Catalogo Contratos | 2018-07-09 → 2018-06-30 (-9d) | 2018-07-09 → 2018-06-30 (-9d) |  |
| 77 | CC - Catalogo Tipos de Tarifa | 2018-07-10 → 2018-06-30 (-10d) | 2018-07-10 → 2018-07-02 (-8d) |  |
| 78 | CC - Catalogo Tarifa | 2018-07-11 → 2018-07-02 (-9d) | 2018-07-11 → 2018-07-03 (-8d) |  |
| 79 | CC - Catalogo Conceptos de Tarifa | 2018-07-12 → 2018-07-03 (-9d) | 2018-07-12 → 2018-07-04 (-8d) |  |
| 80 | CC - Catalogo Choferes | 2018-07-13 → 2018-07-04 (-9d) | 2018-07-13 → 2018-07-05 (-8d) |  |
| 81 | CC - Catalogo Camiones | 2018-07-16 → 2018-07-05 (-11d) | 2018-07-16 → 2018-07-06 (-10d) |  |
| 82 | CC - Catalogo Responsables de Incidencias | 2018-07-17 → 2018-07-06 (-11d) | 2018-07-17 → 2018-07-07 (-10d) |  |
| 83 | CC - Catalogo Tipos de Incidencias | 2018-07-18 → 2018-07-07 (-11d) | 2018-07-18 → 2018-07-07 (-11d) |  |
| 84 | CC - Catalogo Tipos de Viaje | 2018-07-19 → 2018-07-09 (-10d) | 2018-07-19 → 2018-07-09 (-10d) |  |
| 85 | CC - Catalogo Tipos de Carga/Descarga | 2018-07-20 → 2018-07-10 (-10d) | 2018-07-20 → 2018-07-10 (-10d) |  |
| 86 | CC - Catalogo Clientes de Entrega | 2018-07-23 → 2018-07-11 (-12d) | 2018-07-23 → 2018-07-11 (-12d) |  |
| 87 | CC - Catalogo Clientes Solicidates | 2018-07-24 → 2018-07-12 (-12d) | 2018-07-24 → 2018-07-12 (-12d) |  |
| 88 | **PU - Pruebas Untarias** | 2018-07-05 → 2018-06-28 (-7d) | 2018-07-25 → 2018-07-13 (-12d) |  |
| 89 | **PU - Modulo Catalogos Maestros** | 2018-07-05 → 2018-06-28 (-7d) | 2018-07-25 → 2018-07-13 (-12d) |  |
| 90 | PU - Catalogo Rol | 2018-07-05 → 2018-06-28 (-7d) | 2018-07-05 → 2018-06-28 (-7d) | 17d → 65d |
| 91 | PU - Catalogo Actores | 2018-07-06 → 2018-06-29 (-7d) | 2018-07-06 → 2018-06-29 (-7d) | 16d → 64d |
| 92 | PU - Catalogo Actores-Roles | 2018-07-09 → 2018-06-30 (-9d) | 2018-07-09 → 2018-06-30 (-9d) | 15d → 63d |
| 93 | PU - Catalogo Contratos | 2018-07-10 → 2018-06-30 (-10d) | 2018-07-10 → 2018-07-02 (-8d) | 14d → 62d |
| 94 | PU - Catalogo Tipos de Tarifa | 2018-07-11 → 2018-07-02 (-9d) | 2018-07-11 → 2018-07-03 (-8d) | 13d → 61d |
| 95 | PU - Catalogo Tarifa | 2018-07-12 → 2018-07-03 (-9d) | 2018-07-12 → 2018-07-04 (-8d) | 12d → 60d |
| 96 | PU - Catalogo Conceptos de Tarifa | 2018-07-13 → 2018-07-04 (-9d) | 2018-07-13 → 2018-07-05 (-8d) | 11d → 59d |
| 97 | PU - Catalogo Choferes | 2018-07-16 → 2018-07-05 (-11d) | 2018-07-16 → 2018-07-06 (-10d) | 10d → 58d |
| 98 | PU - Catalogo Camiones | 2018-07-17 → 2018-07-06 (-11d) | 2018-07-17 → 2018-07-07 (-10d) | 9d → 57d |
| 99 | PU - Catalogo Responsables de Incidencias | 2018-07-18 → 2018-07-07 (-11d) | 2018-07-18 → 2018-07-07 (-11d) | 8d → 56d |
| 100 | PU - Catalogo Tipos de Incidencias | 2018-07-19 → 2018-07-09 (-10d) | 2018-07-19 → 2018-07-09 (-10d) | 7d → 55d |
| 101 | PU - Catalogo Tipos de Viaje | 2018-07-20 → 2018-07-10 (-10d) | 2018-07-20 → 2018-07-10 (-10d) | 6d → 54d |
| 102 | PU - Catalogo Tipos de Carga/Descarga | 2018-07-23 → 2018-07-11 (-12d) | 2018-07-23 → 2018-07-11 (-12d) | 5d → 53d |
| 103 | PU - Catalogo Clientes de Entrega | 2018-07-24 → 2018-07-12 (-12d) | 2018-07-24 → 2018-07-12 (-12d) | 4d → 52d |
| 104 | PU - Catalogo Clientes Solicidates | 2018-07-25 → 2018-07-13 (-12d) | 2018-07-25 → 2018-07-13 (-12d) |  |
| 105 | LB - Liberacion Modulo 1 | 2018-07-26 → 2018-07-14 (-12d) | 2018-07-26 → 2018-07-14 (-12d) |  |
| 106 | **Modulo Seguridad** | 2018-07-27 → 2018-07-14 (-13d) | 2018-08-16 → 2018-07-31 (-16d) |  |
| 107 | **AT Analisis de Tecnico** | 2018-07-27 → 2018-07-14 (-13d) | 2018-08-03 → 2018-07-21 (-13d) |  |
| 108 | **IAT - Revisión de documentación entregada por Negocio** | 2018-07-27 → 2018-07-14 (-13d) | 2018-07-30 → 2018-07-17 (-13d) |  |
| 109 | AT - Requerimientos de Negocio (Junta de Entendimiento) | 2018-07-27 → 2018-07-14 (-13d) | 2018-07-27 → 2018-07-16 (-11d) |  |
| 110 | AT - Casos de Uso (Junta de Entendimiento) | 2018-07-30 → 2018-07-16 (-14d) | 2018-07-30 → 2018-07-17 (-13d) |  |
| 111 | **AT - Actualizacion de propuesta de Arquitectura de Solucion** | 2018-07-31 → 2018-07-17 (-14d) | 2018-08-03 → 2018-07-21 (-13d) |  |
| 112 | AT - Requerimientos tecnicos | 2018-07-31 → 2018-07-17 (-14d) | 2018-07-31 → 2018-07-18 (-13d) | 3d → 47d |
| 113 | AT - Analisis tecnico | 2018-07-31 → 2018-07-17 (-14d) | 2018-07-31 → 2018-07-18 (-13d) |  |
| 114 | AT - Requerimientos de solucion | 2018-08-01 → 2018-07-18 (-14d) | 2018-08-01 → 2018-07-19 (-13d) | 2d → 46d |
| 115 | AT - Escalabilidad | 2018-08-01 → 2018-07-18 (-14d) | 2018-08-01 → 2018-07-19 (-13d) |  |
| 116 | AT - Modelado BD | 2018-08-02 → 2018-07-19 (-14d) | 2018-08-02 → 2018-07-20 (-13d) | 1d → 45d |
| 117 | AT - Herramientas para solucion | 2018-08-02 → 2018-07-19 (-14d) | 2018-08-02 → 2018-07-20 (-13d) |  |
| 118 | AT - Aplicación responsiva para navegadores web | 2018-08-03 → 2018-07-20 (-14d) | 2018-08-03 → 2018-07-21 (-13d) | 10d → 44d |
| 119 | AT - Peer Review y Vo Bo Arquitectura de Solucion | 2018-08-03 → 2018-07-20 (-14d) | 2018-08-03 → 2018-07-21 (-13d) |  |
| 120 | **AT - Modulo Seguridad** | 2018-08-06 → 2018-07-21 (-16d) | 2018-08-09 → 2018-07-25 (-15d) |  |
| 121 | **AT - Roles** | 2018-08-06 → 2018-07-21 (-16d) | 2018-08-07 → 2018-07-23 (-15d) |  |
| 122 | AT - Elaboración Bocetos de Archivos | 2018-08-06 → 2018-07-21 (-16d) | 2018-08-06 → 2018-07-21 (-16d) |  |
| 123 | AT - Elaboración Bocetos de Pantallas | 2018-08-07 → 2018-07-23 (-15d) | 2018-08-07 → 2018-07-23 (-15d) |  |
| 124 | **AT - Configuracion** | 2018-08-06 → 2018-07-21 (-16d) | 2018-08-07 → 2018-07-23 (-15d) |  |
| 125 | AT - Elaboración Bocetos de Archivos | 2018-08-06 → 2018-07-21 (-16d) | 2018-08-06 → 2018-07-21 (-16d) | 8d → 42d |
| 126 | AT - Elaboración Bocetos de Pantallas | 2018-08-07 → 2018-07-23 (-15d) | 2018-08-07 → 2018-07-23 (-15d) | 8d → 42d |
| 127 | **AT - Permisos** | 2018-08-08 → 2018-07-24 (-15d) | 2018-08-09 → 2018-07-25 (-15d) |  |
| 128 | AT - Elaboración Bocetos de Archivos | 2018-08-08 → 2018-07-24 (-15d) | 2018-08-08 → 2018-07-24 (-15d) |  |
| 129 | AT - Elaboración Bocetos de Pantallas | 2018-08-09 → 2018-07-25 (-15d) | 2018-08-09 → 2018-07-25 (-15d) |  |
| 130 | **CC - Modulo Seguridad** | 2018-08-10 → 2018-07-26 (-15d) | 2018-08-15 → 2018-07-30 (-16d) |  |
| 131 | **Diseño y Construcción** | 2018-08-10 → 2018-07-26 (-15d) | 2018-08-10 → 2018-07-26 (-15d) |  |
| 132 | CC - Revision del documento de Arquitectura de Solucion | 2018-08-10 → 2018-07-26 (-15d) | 2018-08-10 → 2018-07-26 (-15d) |  |
| 133 | CC - Roles | 2018-08-13 → 2018-07-27 (-17d) | 2018-08-13 → 2018-07-27 (-17d) |  |
| 134 | CC - Configuracion | 2018-08-14 → 2018-07-28 (-17d) | 2018-08-14 → 2018-07-28 (-17d) |  |
| 135 | CC - Permisos | 2018-08-15 → 2018-07-28 (-18d) | 2018-08-15 → 2018-07-30 (-16d) |  |
| 136 | **PU - Modulo Seguridad** | 2018-08-14 → 2018-07-28 (-17d) | 2018-08-16 → 2018-07-31 (-16d) |  |
| 137 | PU - Roles | 2018-08-14 → 2018-07-28 (-17d) | 2018-08-14 → 2018-07-28 (-17d) | 3d → 37d |
| 138 | PU - Configuracion | 2018-08-15 → 2018-07-28 (-18d) | 2018-08-15 → 2018-07-30 (-16d) | 2d → 36d |
| 139 | PU - Permisos | 2018-08-16 → 2018-07-30 (-17d) | 2018-08-16 → 2018-07-31 (-16d) |  |
| 140 | LB - Liberacion Modulo 2 | 2018-08-17 → 2018-07-31 (-17d) | 2018-08-17 → 2018-08-01 (-16d) |  |
| 141 | **Modulo Solicitud** | 2018-08-20 → 2018-08-01 (-19d) | 2018-09-17 → 2018-08-23 (-25d) |  |
| 142 | **AT Analisis de Tecnico** | 2018-08-20 → 2018-08-01 (-19d) | 2018-08-27 → 2018-08-07 (-20d) |  |
| 143 | **IAT - Revisión de documentación entregada por Negocio** | 2018-08-20 → 2018-08-01 (-19d) | 2018-08-21 → 2018-08-03 (-18d) |  |

| ID | Task | Start | Finish |
| --- | --- | --- | --- |
| 144 | AT - Requerimientos de Negocio (Junta de Entendimiento) | 2018-08-20 → 2018-08-01 (-19d) | 2018-08-20 → 2018-08-02 (-18d) |
| 145 | AT - Casos de Uso (Junta de Entendimiento) | 2018-08-21 → 2018-08-02 (-19d) | 2018-08-21 → 2018-08-03 (-18d) |
| 146 | **AT - Actualizacion de propuesta de Arquitectura de Solucion** | 2018-08-21 → 2018-08-02 (-19d) | 2018-08-24 → 2018-08-06 (-18d) |
| 147 | AT - Requerimientos tecnicos | 2018-08-21 → 2018-08-02 (-19d) | 2018-08-21 → 2018-08-03 (-18d) |
| 148 | AT - Analisis tecnico | 2018-08-21 → 2018-08-02 (-19d) | 2018-08-21 → 2018-08-03 (-18d) |
| 149 | AT - Requerimientos de solucion | 2018-08-22 → 2018-08-03 (-19d) | 2018-08-22 → 2018-08-04 (-18d) |
| 150 | AT - Escalabilidad | 2018-08-22 → 2018-08-03 (-19d) | 2018-08-22 → 2018-08-04 (-18d) |
| 151 | AT - Modelado BD | 2018-08-23 → 2018-08-04 (-19d) | 2018-08-23 → 2018-08-04 (-19d) |
| 152 | AT - Herramientas para solucion | 2018-08-23 → 2018-08-04 (-19d) | 2018-08-23 → 2018-08-04 (-19d) |
| 153 | AT - Aplicación responsiva para navegadores web | 2018-08-24 → 2018-08-06 (-18d) | 2018-08-24 → 2018-08-06 (-18d) |
| 154 | AT - Peer Review y Vo Bo Arquitectura de Solucion | 2018-08-27 → 2018-08-07 (-20d) | 2018-08-27 → 2018-08-07 (-20d) |
| 155 | **AT - Modulo Solicitudes** | 2018-08-27 → 2018-08-07 (-20d) | 2018-09-03 → 2018-08-13 (-21d) |
| 156 | **AT - Cliente - Solicitud de Transporte** | 2018-08-27 → 2018-08-07 (-20d) | 2018-08-28 → 2018-08-08 (-20d) |
| 157 | AT - Elaboración Bocetos de Archivos | 2018-08-27 → 2018-08-07 (-20d) | 2018-08-27 → 2018-08-07 (-20d) |
| 158 | AT - Elaboración Bocetos de Pantallas | 2018-08-28 → 2018-08-08 (-20d) | 2018-08-28 → 2018-08-08 (-20d) |
| 159 | **AT - Trafico - Valoracion del Viaje** | 2018-08-27 → 2018-08-07 (-20d) | 2018-08-28 → 2018-08-08 (-20d) |
| 160 | AT - Elaboración Bocetos de Archivos | 2018-08-27 → 2018-08-07 (-20d) | 2018-08-27 → 2018-08-07 (-20d) |
| 161 | AT - Elaboración Bocetos de Pantallas | 2018-08-28 → 2018-08-08 (-20d) | 2018-08-28 → 2018-08-08 (-20d) |
| 162 | **AT - Distribucion - Asugnacion de Unidad y Carga** | 2018-08-29 → 2018-08-09 (-20d) | 2018-08-30 → 2018-08-10 (-20d) |
| 163 | AT - Elaboración Bocetos de Archivos | 2018-08-29 → 2018-08-09 (-20d) | 2018-08-29 → 2018-08-09 (-20d) |
| 164 | AT - Elaboración Bocetos de Pantallas | 2018-08-30 → 2018-08-10 (-20d) | 2018-08-30 → 2018-08-10 (-20d) |
| 165 | **AT - Operador CL - Operación y Descarga** | 2018-08-29 → 2018-08-09 (-20d) | 2018-08-30 → 2018-08-10 (-20d) |
| 166 | AT - Elaboración Bocetos de Archivos | 2018-08-29 → 2018-08-09 (-20d) | 2018-08-29 → 2018-08-09 (-20d) |
| 167 | AT - Elaboración Bocetos de Pantallas | 2018-08-30 → 2018-08-10 (-20d) | 2018-08-30 → 2018-08-10 (-20d) |
| 168 | **AT - Distribucion - Cierre del Viaje y Facturacion** | 2018-08-31 → 2018-08-11 (-20d) | 2018-09-03 → 2018-08-13 (-21d) |
| 169 | AT - Elaboración Bocetos de Archivos | 2018-08-31 → 2018-08-11 (-20d) | 2018-08-31 → 2018-08-11 (-20d) |
| 170 | AT - Elaboración Bocetos de Pantallas | 2018-09-03 → 2018-08-11 (-23d) | 2018-09-03 → 2018-08-13 (-21d) |
| 171 | **CC - Modulo Solicitudes** | 2018-09-04 → 2018-08-13 (-22d) | 2018-09-17 → 2018-08-23 (-25d) |
| 172 | **Diseño y Construcción** | 2018-09-04 → 2018-08-13 (-22d) | 2018-09-04 → 2018-08-14 (-21d) |
| 173 | CC - Revision del documento de Arquitectura de Solucion | 2018-09-04 → 2018-08-13 (-22d) | 2018-09-04 → 2018-08-14 (-21d) |
| 174 | CC - Cliente - Solicitud de Transporte | 2018-09-05 → 2018-08-14 (-22d) | 2018-09-05 → 2018-08-15 (-21d) |
| 175 | CC - Trafico - Valoracion del Viaje | 2018-09-06 → 2018-08-15 (-22d) | 2018-09-06 → 2018-08-16 (-21d) |
| 176 | CC - Distribucion - Asugnacion de Unidad y Carga | 2018-09-07 → 2018-08-16 (-22d) | 2018-09-07 → 2018-08-17 (-21d) |
| 177 | CC - Operador CL - Operación y Descarga | 2018-09-10 → 2018-08-17 (-24d) | 2018-09-10 → 2018-08-18 (-23d) |
| 178 | CC - Distribucion - Cierre del Viaje y Facturacion | 2018-09-11 → 2018-08-18 (-24d) | 2018-09-11 → 2018-08-18 (-24d) |
| 179 | **CC - Primer Check point operativo** | 2018-09-12 → 2018-08-20 (-23d) | 2018-09-13 → 2018-08-21 (-23d) |
| 180 | CC - Primer Check point operativo | 2018-09-12 → 2018-08-20 (-23d) | 2018-09-12 → 2018-08-20 (-23d) |
| 181 | CC - Actualizacion de los puntos del primer Ckeckpoint | 2018-09-13 → 2018-08-21 (-23d) | 2018-09-13 → 2018-08-21 (-23d) |
| 182 | **CC - Segundo Check point operativo** | 2018-09-14 → 2018-08-22 (-23d) | 2018-09-17 → 2018-08-23 (-25d) |
| 183 | CC - Segundo Check point operativo | 2018-09-14 → 2018-08-22 (-23d) | 2018-09-14 → 2018-08-22 (-23d) |
| 184 | CC - Actualizacion de los puntos del segundo Check point operativo | 2018-09-17 → 2018-08-23 (-25d) | 2018-09-17 → 2018-08-23 (-25d) |
| 185 | **PU - Modulo Solicitudes** | 2018-09-06 → 2018-08-15 (-22d) | 2018-09-12 → 2018-08-20 (-23d) |
| 186 | PU - Cliente - Solicitud de Transporte | 2018-09-06 → 2018-08-15 (-22d) | 2018-09-06 → 2018-08-16 (-21d) |
| 187 | PU - Trafico - Valoracion del Viaje | 2018-09-07 → 2018-08-16 (-22d) | 2018-09-07 → 2018-08-17 (-21d) |
| 188 | PU - Distribucion - Asugnacion de Unidad y Carga | 2018-09-10 → 2018-08-17 (-24d) | 2018-09-10 → 2018-08-18 (-23d) |
| 189 | PU - Operador CL - Operación y Descarga | 2018-09-11 → 2018-08-18 (-24d) | 2018-09-11 → 2018-08-18 (-24d) |
| 190 | PU - Distribucion - Cierre del Viaje y Facturacion | 2018-09-12 → 2018-08-20 (-23d) | 2018-09-12 → 2018-08-20 (-23d) |
| 191 | LB - Liberacion Modulo 2 | 2018-09-13 → 2018-08-21 (-23d) | 2018-09-13 → 2018-08-21 (-23d) |
| 192 | **Modulo Alarmas** | 2018-09-14 → 2018-08-22 (-23d) | 2018-10-04 → 2018-09-06 (-28d) |
| 193 | **AT Analisis de Tecnico** | 2018-09-14 → 2018-08-22 (-23d) | 2018-09-21 → 2018-08-28 (-24d) |
| 194 | **IAT - Revisión de documentación entregada por Negocio** | 2018-09-14 → 2018-08-22 (-23d) | 2018-09-17 → 2018-08-23 (-25d) |
| 195 | AT - Requerimientos de Negocio (Junta de Entendimiento) | 2018-09-14 → 2018-08-22 (-23d) | 2018-09-14 → 2018-08-22 (-23d) |
| 196 | AT - Casos de Uso (Junta de Entendimiento) | 2018-09-17 → 2018-08-23 (-25d) | 2018-09-17 → 2018-08-23 (-25d) |
| 197 | **AT - Actualizacion de propuesta de Arquitectura de Solucion** | 2018-09-18 → 2018-08-24 (-25d) | 2018-09-21 → 2018-08-28 (-24d) |
| 198 | AT - Requerimientos tecnicos | 2018-09-18 → 2018-08-24 (-25d) | 2018-09-18 → 2018-08-24 (-25d) |
| 199 | AT - Analisis tecnico | 2018-09-18 → 2018-08-24 (-25d) | 2018-09-18 → 2018-08-24 (-25d) |
| 200 | AT - Requerimientos de solucion | 2018-09-19 → 2018-08-25 (-25d) | 2018-09-19 → 2018-08-25 (-25d) |
| 201 | AT - Escalabilidad | 2018-09-19 → 2018-08-25 (-25d) | 2018-09-19 → 2018-08-25 (-25d) |
| 202 | AT - Modelado BD | 2018-09-20 → 2018-08-25 (-26d) | 2018-09-20 → 2018-08-27 (-24d) |
| 203 | AT - Herramientas para solucion | 2018-09-20 → 2018-08-25 (-26d) | 2018-09-20 → 2018-08-27 (-24d) |
| 204 | AT - Aplicación responsiva para navegadores web | 2018-09-21 → 2018-08-27 (-25d) | 2018-09-21 → 2018-08-28 (-24d) |
| 205 | AT - Peer Review y Vo Bo Arquitectura de Solucion | 2018-09-21 → 2018-08-27 (-25d) | 2018-09-21 → 2018-08-28 (-24d) |
| 206 | **AT - Modulo Alarmas/Reportes/Indicadores de gestión** | 2018-09-24 → 2018-08-28 (-27d) | 2018-09-27 → 2018-09-01 (-26d) |
| 207 | **AT - Alarmas** | 2018-09-24 → 2018-08-28 (-27d) | 2018-09-25 → 2018-08-30 (-26d) |
| 208 | AT - Elaboración Bocetos de Archivos | 2018-09-24 → 2018-08-28 (-27d) | 2018-09-24 → 2018-08-29 (-26d) |
| 209 | AT - Elaboración Bocetos de Pantallas | 2018-09-25 → 2018-08-29 (-27d) | 2018-09-25 → 2018-08-30 (-26d) |
| 210 | **AT - Reportes** | 2018-09-24 → 2018-08-28 (-27d) | 2018-09-25 → 2018-08-30 (-26d) |
| 211 | AT - Elaboración Bocetos de Archivos | 2018-09-24 → 2018-08-28 (-27d) | 2018-09-24 → 2018-08-29 (-26d) |
| 212 | AT - Elaboración Bocetos de Pantallas | 2018-09-25 → 2018-08-29 (-27d) | 2018-09-25 → 2018-08-30 (-26d) |
| 213 | **AT - Indicadores de gestión** | 2018-09-26 → 2018-08-30 (-27d) | 2018-09-27 → 2018-09-01 (-26d) |

| ID | Task | Start | Finish |
| --- | --- | --- | --- |
| 214 | AT - Elaboración Bocetos de Archivos | 2018-09-26 → 2018-08-30 (-27d) | 2018-09-26 → 2018-08-31 (-26d) |
| 215 | AT - Elaboración Bocetos de Pantallas | 2018-09-27 → 2018-08-31 (-27d) | 2018-09-27 → 2018-09-01 (-26d) |
| 216 | **CC - Modulo Alarmas/Reportes/Indicadores de gestión** | 2018-09-28 → 2018-09-01 (-27d) | 2018-10-03 → 2018-09-05 (-28d) |
| 217 | **Diseño y Construcción** | 2018-09-28 → 2018-09-01 (-27d) | 2018-09-28 → 2018-09-01 (-27d) |
| 218 | CC - Revision del documento de Arquitectura de Solucion | 2018-09-28 → 2018-09-01 (-27d) | 2018-09-28 → 2018-09-01 (-27d) |
| 219 | CC - Alarmas | 2018-10-01 → 2018-09-03 (-28d) | 2018-10-01 → 2018-09-03 (-28d) |
| 220 | CC - Reportes | 2018-10-02 → 2018-09-04 (-28d) | 2018-10-02 → 2018-09-04 (-28d) |
| 221 | CC - Indicadores de gestión | 2018-10-03 → 2018-09-05 (-28d) | 2018-10-03 → 2018-09-05 (-28d) |
| 222 | **PU - Modulo Alarmas/Reportes/Indicadores de gestión** | 2018-10-02 → 2018-09-04 (-28d) | 2018-10-04 → 2018-09-06 (-28d) |
| 223 | PU - Alarmas | 2018-10-02 → 2018-09-04 (-28d) | 2018-10-02 → 2018-09-04 (-28d) |
| 224 | PU - Reportes | 2018-10-03 → 2018-09-05 (-28d) | 2018-10-03 → 2018-09-05 (-28d) |
| 225 | PU - Indicadores de gestión | 2018-10-04 → 2018-09-06 (-28d) | 2018-10-04 → 2018-09-06 (-28d) |

## Version 11 (saved 2018-05-31, file PLAN_AT_CC_FECHAS_v30052018161500.mpp)

Note of the change: planes

Last finish 2018-09-06 → 2018-09-13 (+7d).

Added:

| ID | Task | Duration | Start | Finish | Predecessors |
| --- | --- | --- | --- | --- | --- |
| 64 | AT - Revisión con el usuario | 1d? | 2018-06-22 | 2018-06-23 | 63 |
| 65 | AT - Ajustes de comentarios del usuario | 1d? | 2018-06-22 | 2018-06-23 | 63 |
| 66 | AT - Peer Review y Vo Bo | 1d? | 2018-06-23 | 2018-06-23 | 65 |
| 108 | **PI - Modulo Catalogos Maestros** | 4d? | 2018-07-14 | 2018-07-18 |  |
| 109 | PI - Catalogo Rol | 1d? | 2018-07-14 | 2018-07-14 | 107 |
| 110 | PI - Catalogo Actores | 1d? | 2018-07-14 | 2018-07-14 | 107 |
| 111 | PI - Catalogo Actores-Roles | 1d? | 2018-07-14 | 2018-07-14 | 107 |
| 112 | PI - Catalogo Contratos | 1d? | 2018-07-14 | 2018-07-14 | 107 |
| 113 | PI - Catalogo Tipos de Tarifa | 1d? | 2018-07-14 | 2018-07-14 | 107 |
| 114 | PI - Catalogo Tarifa | 1d? | 2018-07-14 | 2018-07-16 | 113 |
| 115 | PI - Catalogo Conceptos de Tarifa | 1d? | 2018-07-14 | 2018-07-16 | 113 |
| 116 | PI - Catalogo Choferes | 1d? | 2018-07-14 | 2018-07-16 | 113 |
| 117 | PI - Catalogo Camiones | 1d? | 2018-07-14 | 2018-07-16 | 113 |
| 118 | PI - Catalogo Responsables de Incidencias | 1d? | 2018-07-16 | 2018-07-17 | 117 |
| 119 | PI - Catalogo Tipos de Incidencias | 1d? | 2018-07-16 | 2018-07-17 | 117 |
| 120 | PI - Catalogo Tipos de Viaje | 1d? | 2018-07-16 | 2018-07-17 | 117 |
| 121 | PI - Catalogo Tipos de Carga/Descarga | 1d? | 2018-07-16 | 2018-07-17 | 117 |
| 122 | PI - Catalogo Clientes de Entrega | 1d? | 2018-07-17 | 2018-07-18 | 121 |
| 123 | PI - Catalogo Clientes Solicidates | 1d? | 2018-07-17 | 2018-07-18 | 121 |
| 149 | AT - Revisión con el usuario | 1d? | 2018-07-28 | 2018-07-30 | 148 |
| 150 | AT - Ajustes de comentarios del usuario | 1d? | 2018-07-28 | 2018-07-30 | 148 |
| 151 | AT - Peer Review y Vo Bo | 1d? | 2018-07-30 | 2018-07-31 | 150 |
| 162 | **PI - Modulo Seguridad** | 2d? | 2018-08-03 | 2018-08-04 |  |
| 163 | PI - Roles | 1d? | 2018-08-03 | 2018-08-04 | 161 |
| 164 | PI - Configuracion | 1d? | 2018-08-03 | 2018-08-04 | 161 |
| 165 | PI - Permisos | 1d? | 2018-08-04 | 2018-08-04 | 164 |
| 197 | AT - Revisión con el usuario | 1d? | 2018-08-17 | 2018-08-18 | 196 |
| 198 | AT - Ajustes de comentarios del usuario | 1d? | 2018-08-17 | 2018-08-18 | 196 |
| 199 | AT - Peer Review y Vo Bo | 1d? | 2018-08-18 | 2018-08-18 | 198 |
| 220 | **PI - Modulo Solicitudes** | 3d? | 2018-08-25 | 2018-08-28 |  |
| 221 | PI - Cliente - Solicitud de Transporte | 1d? | 2018-08-25 | 2018-08-25 | 219 |
| 222 | PI - Trafico - Valoracion del Viaje | 1d? | 2018-08-25 | 2018-08-25 | 219 |
| 223 | PI - Distribucion - Asugnacion de Unidad y Carga | 1d? | 2018-08-25 | 2018-08-27 | 222 |
| 224 | PI - Operador CL - Operación y Descarga | 1d? | 2018-08-25 | 2018-08-27 | 222 |
| 225 | PI - Distribucion - Cierre del Viaje y Facturacion | 1d? | 2018-08-27 | 2018-08-28 | 224 |
| 251 | AT - Revisión con el usuario | 1d? | 2018-09-06 | 2018-09-06 | 250 |
| 252 | AT - Ajustes de comentarios del usuario | 1d? | 2018-09-06 | 2018-09-06 | 250 |
| 253 | AT - Peer Review y Vo Bo | 1d | 2018-09-07 | 2018-09-07 | 252 |
| 264 | **PI - Modulo Alarmas/Reportes/Indicadores de gestión** | 2d? | 2018-09-11 | 2018-09-13 |  |
| 265 | PI - Alarmas | 1d? | 2018-09-11 | 2018-09-12 | 263 |
| 266 | PI - Reportes | 1d? | 2018-09-11 | 2018-09-12 | 263 |
| 267 | PI - Indicadores de gestión | 1d? | 2018-09-12 | 2018-09-13 | 266 |

Changed:

| ID | Task | Start | Finish | Duration | Total float | Predecessors |
| --- | --- | --- | --- | --- | --- | --- |
| 1 | **001-ITSC_TMS Plan de Analisis y Desarrollo** |  | 2018-09-06 → 2018-09-13 (+7d) | 94d? → 100d? |  |  |
| 3 | **Modulo Catalogos Maestros** |  | 2018-07-13 → 2018-07-18 (+5d) | 39d → 43d? |  |  |
| 4 | **AT Analisis de Tecnico** |  | 2018-06-22 → 2018-06-23 (+1d) | 19d → 21d? |  |  |
| 67 | **CC_Desarrollo** |  | 2018-07-12 → 2018-07-18 (+6d) | 19d → 24d? |  |  |
| 91 | **PU - Pruebas Untarias** |  | 2018-07-13 → 2018-07-18 (+5d) | 15d → 19d? |  |  |
| 124 | LB - Liberacion Modulo 1 | 2018-07-14 → 2018-07-17 (+3d) | 2018-07-14 → 2018-07-18 (+4d) |  |  | 107 → 121 |
| 125 | **Modulo Seguridad** | 2018-07-14 → 2018-07-18 (+4d) | 2018-07-31 → 2018-08-04 (+4d) | 15d → 17d? |  |  |
| 126 | **AT Analisis de Tecnico** | 2018-07-14 → 2018-07-18 (+4d) | 2018-07-21 → 2018-07-31 (+10d) | 6d → 12d? |  |  |
| 127 | **IAT - Revisión de documentación entregada por Negocio** | 2018-07-14 → 2018-07-18 (+4d) | 2018-07-17 → 2018-07-20 (+3d) |  |  |  |
| 128 | AT - Requerimientos de Negocio (Junta de Entendimiento) | 2018-07-14 → 2018-07-18 (+4d) | 2018-07-16 → 2018-07-19 (+3d) |  |  |  |
| 129 | AT - Casos de Uso (Junta de Entendimiento) | 2018-07-16 → 2018-07-19 (+3d) | 2018-07-17 → 2018-07-20 (+3d) |  |  |  |
| 130 | **AT - Actualizacion de propuesta de Arquitectura de Solucion** | 2018-07-17 → 2018-07-20 (+3d) | 2018-07-21 → 2018-07-24 (+3d) |  |  |  |
| 131 | AT - Requerimientos tecnicos | 2018-07-17 → 2018-07-20 (+3d) | 2018-07-18 → 2018-07-21 (+3d) |  | 47d → 50d |  |
| 132 | AT - Analisis tecnico | 2018-07-17 → 2018-07-20 (+3d) | 2018-07-18 → 2018-07-21 (+3d) |  |  |  |
| 133 | AT - Requerimientos de solucion | 2018-07-18 → 2018-07-21 (+3d) | 2018-07-19 → 2018-07-21 (+2d) |  | 46d → 49d |  |
| 134 | AT - Escalabilidad | 2018-07-18 → 2018-07-21 (+3d) | 2018-07-19 → 2018-07-21 (+2d) |  |  |  |
| 135 | AT - Modelado BD | 2018-07-19 → 2018-07-23 (+4d) | 2018-07-20 → 2018-07-23 (+3d) |  | 45d → 48d |  |
| 136 | AT - Herramientas para solucion | 2018-07-19 → 2018-07-23 (+4d) | 2018-07-20 → 2018-07-23 (+3d) |  |  |  |
| 137 | AT - Aplicación responsiva para navegadores web | 2018-07-20 → 2018-07-24 (+4d) | 2018-07-21 → 2018-07-24 (+3d) |  | 44d → 47d |  |
| 138 | AT - Peer Review y Vo Bo Arquitectura de Solucion | 2018-07-20 → 2018-07-24 (+4d) | 2018-07-21 → 2018-07-24 (+3d) |  |  |  |
| 139 | **AT - Modulo Seguridad** | 2018-07-21 → 2018-07-25 (+4d) | 2018-07-25 → 2018-07-28 (+3d) |  |  |  |
| 140 | **AT - Roles** | 2018-07-21 → 2018-07-25 (+4d) | 2018-07-23 → 2018-07-26 (+3d) |  |  |  |
| 141 | AT - Elaboración Bocetos de Archivos | 2018-07-21 → 2018-07-25 (+4d) | 2018-07-21 → 2018-07-25 (+4d) |  |  |  |
| 142 | AT - Elaboración Bocetos de Pantallas | 2018-07-23 → 2018-07-26 (+3d) | 2018-07-23 → 2018-07-26 (+3d) |  |  |  |
| 143 | **AT - Configuracion** | 2018-07-21 → 2018-07-25 (+4d) | 2018-07-23 → 2018-07-26 (+3d) |  | 42d → 45d |  |
| 144 | AT - Elaboración Bocetos de Archivos | 2018-07-21 → 2018-07-25 (+4d) | 2018-07-21 → 2018-07-25 (+4d) |  | 42d → 45d |  |
| 145 | AT - Elaboración Bocetos de Pantallas | 2018-07-23 → 2018-07-26 (+3d) | 2018-07-23 → 2018-07-26 (+3d) |  | 42d → 45d |  |
| 146 | **AT - Permisos** | 2018-07-24 → 2018-07-27 (+3d) | 2018-07-25 → 2018-07-28 (+3d) |  |  |  |
| 147 | AT - Elaboración Bocetos de Archivos | 2018-07-24 → 2018-07-27 (+3d) | 2018-07-24 → 2018-07-27 (+3d) |  |  |  |
| 148 | AT - Elaboración Bocetos de Pantallas | 2018-07-25 → 2018-07-28 (+3d) | 2018-07-25 → 2018-07-28 (+3d) |  |  |  |
| 152 | **CC - Modulo Seguridad** | 2018-07-26 → 2018-07-28 (+2d) | 2018-07-30 → 2018-08-04 (+5d) | 4d → 7d? |  |  |
| 153 | **Diseño y Construcción** | 2018-07-26 → 2018-07-28 (+2d) | 2018-07-26 → 2018-07-30 (+4d) |  |  |  |
| 154 | CC - Revision del documento de Arquitectura de Solucion | 2018-07-26 → 2018-07-28 (+2d) | 2018-07-26 → 2018-07-30 (+4d) |  |  |  |
| 155 | CC - Roles | 2018-07-27 → 2018-07-30 (+3d) | 2018-07-27 → 2018-07-31 (+4d) |  |  |  |
| 156 | CC - Configuracion | 2018-07-28 → 2018-07-31 (+3d) | 2018-07-28 → 2018-08-01 (+4d) |  |  |  |
| 157 | CC - Permisos | 2018-07-28 → 2018-08-01 (+4d) | 2018-07-30 → 2018-08-02 (+3d) |  |  |  |
| 158 | **PU - Modulo Seguridad** | 2018-07-28 → 2018-07-31 (+3d) | 2018-07-31 → 2018-08-03 (+3d) |  |  |  |
| 159 | PU - Roles | 2018-07-28 → 2018-07-31 (+3d) | 2018-07-28 → 2018-08-01 (+4d) |  | 37d → 40d |  |
| 160 | PU - Configuracion | 2018-07-28 → 2018-08-01 (+4d) | 2018-07-30 → 2018-08-02 (+3d) |  | 36d → 39d |  |
| 161 | PU - Permisos | 2018-07-30 → 2018-08-02 (+3d) | 2018-07-31 → 2018-08-03 (+3d) |  |  |  |
| 166 | LB - Liberacion Modulo 2 | 2018-07-31 → 2018-08-04 (+4d) | 2018-08-01 → 2018-08-04 (+3d) |  |  | 161 → 164 |
| 167 | **Modulo Solicitud** | 2018-08-01 → 2018-08-06 (+5d) | 2018-08-23 → 2018-08-28 (+5d) | 21d → 21d? |  |  |
| 168 | **AT Analisis de Tecnico** | 2018-08-01 → 2018-08-06 (+5d) | 2018-08-07 → 2018-08-18 (+11d) | 6d → 13d? |  |  |
| 169 | **IAT - Revisión de documentación entregada por Negocio** | 2018-08-01 → 2018-08-06 (+5d) | 2018-08-03 → 2018-08-07 (+4d) |  |  |  |
| 170 | AT - Requerimientos de Negocio (Junta de Entendimiento) | 2018-08-01 → 2018-08-06 (+5d) | 2018-08-02 → 2018-08-06 (+4d) |  |  |  |
| 171 | AT - Casos de Uso (Junta de Entendimiento) | 2018-08-02 → 2018-08-07 (+5d) | 2018-08-03 → 2018-08-07 (+4d) |  | 32d → 34d |  |
| 172 | **AT - Actualizacion de propuesta de Arquitectura de Solucion** | 2018-08-02 → 2018-08-07 (+5d) | 2018-08-06 → 2018-08-10 (+4d) |  |  |  |
| 173 | AT - Requerimientos tecnicos | 2018-08-02 → 2018-08-07 (+5d) | 2018-08-03 → 2018-08-07 (+4d) |  | 32d → 34d |  |
| 174 | AT - Analisis tecnico | 2018-08-02 → 2018-08-07 (+5d) | 2018-08-03 → 2018-08-07 (+4d) |  |  |  |
| 175 | AT - Requerimientos de solucion | 2018-08-03 → 2018-08-08 (+5d) | 2018-08-04 → 2018-08-08 (+4d) |  | 31d → 33d |  |
| 176 | AT - Escalabilidad | 2018-08-03 → 2018-08-08 (+5d) | 2018-08-04 → 2018-08-08 (+4d) |  |  |  |
| 177 | AT - Modelado BD | 2018-08-04 → 2018-08-09 (+5d) | 2018-08-04 → 2018-08-09 (+5d) |  | 30d → 32d |  |
| 178 | AT - Herramientas para solucion | 2018-08-04 → 2018-08-09 (+5d) | 2018-08-04 → 2018-08-09 (+5d) |  |  |  |
| 179 | AT - Aplicación responsiva para navegadores web | 2018-08-06 → 2018-08-10 (+4d) | 2018-08-06 → 2018-08-10 (+4d) |  |  |  |
| 180 | AT - Peer Review y Vo Bo Arquitectura de Solucion | 2018-08-07 → 2018-08-11 (+4d) | 2018-08-07 → 2018-08-11 (+4d) |  | 28d → 30d |  |
| 181 | **AT - Modulo Solicitudes** | 2018-08-07 → 2018-08-11 (+4d) | 2018-08-13 → 2018-08-17 (+4d) |  |  |  |
| 182 | **AT - Cliente - Solicitud de Transporte** | 2018-08-07 → 2018-08-11 (+4d) | 2018-08-08 → 2018-08-13 (+5d) |  | 25d → 27d |  |
| 183 | AT - Elaboración Bocetos de Archivos | 2018-08-07 → 2018-08-11 (+4d) | 2018-08-07 → 2018-08-11 (+4d) |  | 25d → 27d |  |
| 184 | AT - Elaboración Bocetos de Pantallas | 2018-08-08 → 2018-08-11 (+3d) | 2018-08-08 → 2018-08-13 (+5d) |  | 25d → 27d |  |
| 185 | **AT - Trafico - Valoracion del Viaje** | 2018-08-07 → 2018-08-11 (+4d) | 2018-08-08 → 2018-08-13 (+5d) |  |  |  |
| 186 | AT - Elaboración Bocetos de Archivos | 2018-08-07 → 2018-08-11 (+4d) | 2018-08-07 → 2018-08-11 (+4d) |  |  |  |
| 187 | AT - Elaboración Bocetos de Pantallas | 2018-08-08 → 2018-08-11 (+3d) | 2018-08-08 → 2018-08-13 (+5d) |  |  |  |
| 188 | **AT - Distribucion - Asugnacion de Unidad y Carga** | 2018-08-09 → 2018-08-13 (+4d) | 2018-08-10 → 2018-08-15 (+5d) |  | 25d → 27d |  |
| 189 | AT - Elaboración Bocetos de Archivos | 2018-08-09 → 2018-08-13 (+4d) | 2018-08-09 → 2018-08-14 (+5d) |  | 25d → 27d |  |
| 190 | AT - Elaboración Bocetos de Pantallas | 2018-08-10 → 2018-08-14 (+4d) | 2018-08-10 → 2018-08-15 (+5d) |  | 25d → 27d |  |
| 191 | **AT - Operador CL - Operación y Descarga** | 2018-08-09 → 2018-08-13 (+4d) | 2018-08-10 → 2018-08-15 (+5d) |  |  |  |
| 192 | AT - Elaboración Bocetos de Archivos | 2018-08-09 → 2018-08-13 (+4d) | 2018-08-09 → 2018-08-14 (+5d) |  |  |  |
| 193 | AT - Elaboración Bocetos de Pantallas | 2018-08-10 → 2018-08-14 (+4d) | 2018-08-10 → 2018-08-15 (+5d) |  |  |  |
| 194 | **AT - Distribucion - Cierre del Viaje y Facturacion** | 2018-08-11 → 2018-08-15 (+4d) | 2018-08-13 → 2018-08-17 (+4d) |  |  |  |
| 195 | AT - Elaboración Bocetos de Archivos | 2018-08-11 → 2018-08-15 (+4d) | 2018-08-11 → 2018-08-16 (+5d) |  |  |  |

| ID | Task | Start | Finish | Duration | Total float |
| --- | --- | --- | --- | --- | --- |
| 196 | AT - Elaboración Bocetos de Pantallas | 2018-08-11 → 2018-08-16 (+5d) | 2018-08-13 → 2018-08-17 (+4d) |  |  |
| 200 | **CC - Modulo Solicitudes** | 2018-08-13 → 2018-08-17 (+4d) | 2018-08-23 → 2018-08-28 (+5d) | 10d → 10d? |  |
| 201 | **Diseño y Construcción** | 2018-08-13 → 2018-08-17 (+4d) | 2018-08-14 → 2018-08-18 (+4d) |  |  |
| 202 | CC - Revision del documento de Arquitectura de Solucion | 2018-08-13 → 2018-08-17 (+4d) | 2018-08-14 → 2018-08-18 (+4d) |  |  |
| 203 | CC - Cliente - Solicitud de Transporte | 2018-08-14 → 2018-08-18 (+4d) | 2018-08-15 → 2018-08-18 (+3d) |  |  |
| 204 | CC - Trafico - Valoracion del Viaje | 2018-08-15 → 2018-08-20 (+5d) | 2018-08-16 → 2018-08-20 (+4d) |  |  |
| 205 | CC - Distribucion - Asugnacion de Unidad y Carga | 2018-08-16 → 2018-08-21 (+5d) | 2018-08-17 → 2018-08-21 (+4d) |  |  |
| 206 | CC - Operador CL - Operación y Descarga | 2018-08-17 → 2018-08-22 (+5d) | 2018-08-18 → 2018-08-22 (+4d) |  |  |
| 207 | CC - Distribucion - Cierre del Viaje y Facturacion | 2018-08-18 → 2018-08-23 (+5d) | 2018-08-18 → 2018-08-23 (+5d) |  |  |
| 208 | **CC - Primer Check point operativo** | 2018-08-20 → 2018-08-24 (+4d) | 2018-08-21 → 2018-08-25 (+4d) |  | 13d → 15d |
| 209 | CC - Primer Check point operativo | 2018-08-20 → 2018-08-24 (+4d) | 2018-08-20 → 2018-08-24 (+4d) |  | 13d → 15d |
| 210 | CC - Actualizacion de los puntos del primer Ckeckpoint | 2018-08-21 → 2018-08-25 (+4d) | 2018-08-21 → 2018-08-25 (+4d) |  | 13d → 15d |
| 211 | **CC - Segundo Check point operativo** | 2018-08-22 → 2018-08-25 (+3d) | 2018-08-23 → 2018-08-28 (+5d) |  | 13d → 15d |
| 212 | CC - Segundo Check point operativo | 2018-08-22 → 2018-08-25 (+3d) | 2018-08-22 → 2018-08-27 (+5d) |  | 13d → 15d |
| 213 | CC - Actualizacion de los puntos del segundo Check point operativo | 2018-08-23 → 2018-08-27 (+4d) | 2018-08-23 → 2018-08-28 (+5d) |  | 13d → 15d |
| 214 | **PU - Modulo Solicitudes** | 2018-08-15 → 2018-08-20 (+5d) | 2018-08-20 → 2018-08-24 (+4d) |  |  |
| 215 | PU - Cliente - Solicitud de Transporte | 2018-08-15 → 2018-08-20 (+5d) | 2018-08-16 → 2018-08-20 (+4d) |  | 20d → 22d |
| 216 | PU - Trafico - Valoracion del Viaje | 2018-08-16 → 2018-08-21 (+5d) | 2018-08-17 → 2018-08-21 (+4d) |  | 19d → 21d |
| 217 | PU - Distribucion - Asugnacion de Unidad y Carga | 2018-08-17 → 2018-08-22 (+5d) | 2018-08-18 → 2018-08-22 (+4d) |  | 18d → 20d |
| 218 | PU - Operador CL - Operación y Descarga | 2018-08-18 → 2018-08-23 (+5d) | 2018-08-18 → 2018-08-23 (+5d) |  | 17d → 19d |
| 219 | PU - Distribucion - Cierre del Viaje y Facturacion | 2018-08-20 → 2018-08-24 (+4d) | 2018-08-20 → 2018-08-24 (+4d) |  |  |
| 226 | LB - Liberacion Modulo 2 | 2018-08-21 → 2018-08-25 (+4d) | 2018-08-21 → 2018-08-25 (+4d) |  |  |
| 227 | **Modulo Alarmas** | 2018-08-22 → 2018-08-25 (+3d) | 2018-09-06 → 2018-09-13 (+7d) | 15d → 17d? |  |
| 228 | **AT Analisis de Tecnico** | 2018-08-22 → 2018-08-25 (+3d) | 2018-08-28 → 2018-09-07 (+10d) | 6d → 12d? |  |
| 229 | **IAT - Revisión de documentación entregada por Negocio** | 2018-08-22 → 2018-08-25 (+3d) | 2018-08-23 → 2018-08-28 (+5d) |  |  |
| 230 | AT - Requerimientos de Negocio (Junta de Entendimiento) | 2018-08-22 → 2018-08-25 (+3d) | 2018-08-22 → 2018-08-27 (+5d) |  |  |
| 231 | AT - Casos de Uso (Junta de Entendimiento) | 2018-08-23 → 2018-08-27 (+4d) | 2018-08-23 → 2018-08-28 (+5d) |  |  |
| 232 | **AT - Actualizacion de propuesta de Arquitectura de Solucion** | 2018-08-24 → 2018-08-28 (+4d) | 2018-08-28 → 2018-09-01 (+4d) |  |  |
| 233 | AT - Requerimientos tecnicos | 2018-08-24 → 2018-08-28 (+4d) | 2018-08-24 → 2018-08-29 (+5d) |  | 12d → 14d |
| 234 | AT - Analisis tecnico | 2018-08-24 → 2018-08-28 (+4d) | 2018-08-24 → 2018-08-29 (+5d) |  |  |
| 235 | AT - Requerimientos de solucion | 2018-08-25 → 2018-08-29 (+4d) | 2018-08-25 → 2018-08-30 (+5d) |  | 11d → 13d |
| 236 | AT - Escalabilidad | 2018-08-25 → 2018-08-29 (+4d) | 2018-08-25 → 2018-08-30 (+5d) |  |  |
| 237 | AT - Modelado BD | 2018-08-25 → 2018-08-30 (+5d) | 2018-08-27 → 2018-08-31 (+4d) |  | 10d → 12d |
| 238 | AT - Herramientas para solucion | 2018-08-25 → 2018-08-30 (+5d) | 2018-08-27 → 2018-08-31 (+4d) |  |  |
| 239 | AT - Aplicación responsiva para navegadores web | 2018-08-27 → 2018-08-31 (+4d) | 2018-08-28 → 2018-09-01 (+4d) |  | 9d → 11d |
| 240 | AT - Peer Review y Vo Bo Arquitectura de Solucion | 2018-08-27 → 2018-08-31 (+4d) | 2018-08-28 → 2018-09-01 (+4d) |  |  |
| 241 | **AT - Modulo Alarmas/Reportes/Indicadores de gestión** | 2018-08-28 → 2018-09-01 (+4d) | 2018-09-01 → 2018-09-07 (+6d) | 4d → 6d? |  |
| 242 | **AT - Alarmas** | 2018-08-28 → 2018-09-01 (+4d) | 2018-08-30 → 2018-09-03 (+4d) |  | 7d → 9d |
| 243 | AT - Elaboración Bocetos de Archivos | 2018-08-28 → 2018-09-01 (+4d) | 2018-08-29 → 2018-09-01 (+3d) |  | 7d → 9d |
| 244 | AT - Elaboración Bocetos de Pantallas | 2018-08-29 → 2018-09-03 (+5d) | 2018-08-30 → 2018-09-03 (+4d) |  | 7d → 9d |
| 245 | **AT - Reportes** | 2018-08-28 → 2018-09-01 (+4d) | 2018-08-30 → 2018-09-03 (+4d) |  |  |
| 246 | AT - Elaboración Bocetos de Archivos | 2018-08-28 → 2018-09-01 (+4d) | 2018-08-29 → 2018-09-01 (+3d) |  |  |
| 247 | AT - Elaboración Bocetos de Pantallas | 2018-08-29 → 2018-09-03 (+5d) | 2018-08-30 → 2018-09-03 (+4d) |  |  |
| 248 | **AT - Indicadores de gestión** | 2018-08-30 → 2018-09-04 (+5d) | 2018-09-01 → 2018-09-05 (+4d) |  |  |
| 249 | AT - Elaboración Bocetos de Archivos | 2018-08-30 → 2018-09-04 (+5d) | 2018-08-31 → 2018-09-04 (+4d) |  |  |
| 250 | AT - Elaboración Bocetos de Pantallas | 2018-08-31 → 2018-09-05 (+5d) | 2018-09-01 → 2018-09-05 (+4d) |  |  |
| 254 | **CC - Modulo Alarmas/Reportes/Indicadores de gestión** | 2018-09-01 → 2018-09-06 (+5d) | 2018-09-05 → 2018-09-13 (+8d) | 4d → 7d? |  |
| 255 | **Diseño y Construcción** | 2018-09-01 → 2018-09-06 (+5d) | 2018-09-01 → 2018-09-06 (+5d) |  |  |
| 256 | CC - Revision del documento de Arquitectura de Solucion | 2018-09-01 → 2018-09-06 (+5d) | 2018-09-01 → 2018-09-06 (+5d) |  |  |
| 257 | CC - Alarmas | 2018-09-03 → 2018-09-07 (+4d) | 2018-09-03 → 2018-09-07 (+4d) |  |  |
| 258 | CC - Reportes | 2018-09-04 → 2018-09-08 (+4d) | 2018-09-04 → 2018-09-08 (+4d) |  |  |
| 259 | CC - Indicadores de gestión | 2018-09-05 → 2018-09-08 (+3d) | 2018-09-05 → 2018-09-10 (+5d) |  |  |
| 260 | **PU - Modulo Alarmas/Reportes/Indicadores de gestión** | 2018-09-04 → 2018-09-08 (+4d) | 2018-09-06 → 2018-09-11 (+5d) |  | 0d → 2d |
| 261 | PU - Alarmas | 2018-09-04 → 2018-09-08 (+4d) | 2018-09-04 → 2018-09-08 (+4d) |  | 2d → 4d |
| 262 | PU - Reportes | 2018-09-05 → 2018-09-08 (+3d) | 2018-09-05 → 2018-09-10 (+5d) |  | 1d → 3d |
| 263 | PU - Indicadores de gestión | 2018-09-06 → 2018-09-10 (+4d) | 2018-09-06 → 2018-09-11 (+5d) |  |  |

## Version 12 (data date 2018-05-29, saved 2018-05-31, file Plan_AN_AT_CC_v29052018.xls.mpp)

Note of the change: planes

Last finish 2018-09-13 → 2018-08-17 (-27d). Complete tasks 0 → 4.

Added:

| ID | Task | Duration | Start | Finish | Predecessors | Resources |
| --- | --- | --- | --- | --- | --- | --- |
| 2 | **AN_Analisis** | 65.64d? | 2018-05-24 A | 2018-07-09 |  |  |
| 3 | **AN Analisis de Negocio** | 57.02d? | 2018-05-24 A | 2018-07-03 |  |  |
| 4 | **AN - Modulo Catalogos Maestros** | 46.55d? | 2018-05-24 A | 2018-06-26 |  |  |
| 5 | **AN - Catalogo Rol** | 5.6d | 2018-05-24 | 2018-05-28 |  |  |
| 7 | AN - Casos de Uso | 4d | 2018-05-24 | 2018-05-28 | 6 | Fernando Nava [31.2%] |
| 8 | **AN - Catalogo Actores** | 1.75d? | 2018-05-28 | 2018-05-29 |  |  |
| 12 | AN - Requerimientos de Negocio | 1.6d? | 2018-05-29 | 2018-05-30 | 10 | Fernando Nava [31.2%] |
| 16 | AN - Casos de Uso | 4d? | 2018-06-04 | 2018-06-06 | 15 | Fernando Nava [31.2%] |
| 17 | **AN - Catalogo Tipos de Tarifa** | 5.6d? | 2018-06-06 | 2018-06-11 |  |  |
| 18 | AN - Requerimientos de Negocio | 1.6d? | 2018-06-06 | 2018-06-07 | 16 | Fernando Nava [31.2%] |
| 19 | AN - Casos de Uso | 4d? | 2018-06-07 | 2018-06-11 | 18 | Fernando Nava [31.2%] |
| 20 | **AN - Catalogo Tarifa** | 5.6d? | 2018-06-11 | 2018-06-13 |  |  |
| 21 | AN - Requerimientos de Negocio | 1.6d? | 2018-06-11 | 2018-06-11 | 19 | Fernando Nava [31.2%] |
| 22 | AN - Casos de Uso | 4d? | 2018-06-11 | 2018-06-13 | 21 | Fernando Nava [31.2%] |
| 23 | **AN - Catalogo Conceptos de Tarifa** | 5.6d? | 2018-06-13 | 2018-06-18 |  |  |
| 24 | AN - Requerimientos de Negocio | 1.6d? | 2018-06-13 | 2018-06-14 | 22 | Fernando Nava [31.2%] |
| 25 | AN - Casos de Uso | 4d? | 2018-06-14 | 2018-06-18 | 24 | Fernando Nava [31.2%] |
| 26 | **AN - Catalogo Choferes** | 5.6d? | 2018-06-18 | 2018-06-21 |  |  |
| 27 | AN - Requerimientos de Negocio | 1.6d? | 2018-06-18 | 2018-06-19 | 25 | Fernando Nava [31.2%] |
| 28 | AN - Casos de Uso | 4d? | 2018-06-19 | 2018-06-21 | 27 | Fernando Nava [31.2%] |
| 29 | **AN - Catalogo Camiones** | 5.6d? | 2018-06-21 | 2018-06-26 |  |  |
| 30 | AN - Requerimientos de Negocio | 1.6d? | 2018-06-21 | 2018-06-22 | 28 | Fernando Nava [31.2%] |
| 31 | AN - Casos de Uso | 4d? | 2018-06-22 | 2018-06-26 | 30 | Fernando Nava [31.2%] |
| 32 | **AN - Catalogo Responsables de Incidencias** | 2.62d? | 2018-05-24 A | 2018-05-25 |  |  |
| 33 | AN - Requerimientos de Negocio | 0.5d? | 2018-05-24 A | 2018-05-24 A | 31 | Fernando Nava |
| 34 | AN - Casos de Uso | 2.62d? | 2018-05-24 A | 2018-05-25 | 33 | Fernando Nava |
| 35 | **AN - Catalogo Tipos de Incidencias** | 5.6d? | 2018-05-25 | 2018-05-30 |  |  |
| 36 | AN - Requerimientos de Negocio | 1.6d? | 2018-05-25 | 2018-05-28 | 34 | Fernando Nava [31.2%] |
| 37 | AN - Casos de Uso | 4d? | 2018-05-28 | 2018-05-30 | 36 | Fernando Nava [31.2%] |
| 38 | **AN - Catalogo Tipos de Viaje** | 5.6d? | 2018-05-30 | 2018-06-01 |  |  |
| 39 | AN - Requerimientos de Negocio | 1.6d? | 2018-05-30 | 2018-05-30 | 37 | Fernando Nava [31.2%] |
| 40 | AN - Casos de Uso | 4d? | 2018-05-30 | 2018-06-01 | 39 | Fernando Nava [31.2%] |
| 41 | **AN - Catalogo Tipos de Carga/Descarga** | 5.6d? | 2018-06-01 | 2018-06-06 |  |  |
| 42 | AN - Requerimientos de Negocio | 1.6d? | 2018-06-01 | 2018-06-04 | 40 | Fernando Nava [31.2%] |
| 43 | AN - Casos de Uso | 4d? | 2018-06-04 | 2018-06-06 | 42 | Fernando Nava [31.2%] |
| 44 | **AN - Catalogo Clientes de Entrega** | 5.6d? | 2018-06-06 | 2018-06-11 |  |  |
| 45 | AN - Requerimientos de Negocio | 1.6d? | 2018-06-06 | 2018-06-07 | 43 | Fernando Nava [31.2%] |
| 46 | AN - Casos de Uso | 4d? | 2018-06-07 | 2018-06-11 | 45 | Fernando Nava [31.2%] |
| 47 | **AN - Catalogo Clientes Solicidates** | 5.6d? | 2018-06-11 | 2018-06-14 |  |  |
| 48 | AN - Requerimientos de Negocio | 1.6d? | 2018-06-11 | 2018-06-12 | 46 | Fernando Nava [31.2%] |
| 49 | AN - Casos de Uso | 4d? | 2018-06-12 | 2018-06-14 | 48 | Fernando Nava [31.2%] |
| 50 | **AN - Modulo Seguridad** | 14.4d? | 2018-06-14 | 2018-06-25 |  |  |
| 51 | **AN - Roles** | 4.8d? | 2018-06-14 | 2018-06-18 |  |  |
| 52 | AN - Requerimientos de Negocio | 2.4d? | 2018-06-14 | 2018-06-15 | 49 | Fernando Nava [31.2%] |
| 53 | AN - Casos de Uso | 2.4d? | 2018-06-15 | 2018-06-18 | 52 | Fernando Nava [31.2%] |
| 54 | **AN - Configuracion** | 4.8d? | 2018-06-18 | 2018-06-21 |  |  |
| 55 | AN - Requerimientos de Negocio | 2.4d? | 2018-06-18 | 2018-06-19 | 53 | Fernando Nava [31.2%] |
| 56 | AN - Casos de Uso | 2.4d? | 2018-06-19 | 2018-06-21 | 55 | Fernando Nava [31.2%] |
| 57 | **AN - Permisos** | 4.8d? | 2018-06-21 | 2018-06-25 |  |  |
| 58 | AN - Requerimientos de Negocio | 2.4d? | 2018-06-21 | 2018-06-22 | 56 | Fernando Nava [31.2%] |
| 59 | AN - Casos de Uso | 2.4d? | 2018-06-22 | 2018-06-25 | 58 | Fernando Nava [31.2%] |
| 60 | **AN - Modulo Alarmas/Reportes/Indicadores de gestión** | 12d? | 2018-06-25 | 2018-07-03 |  |  |
| 61 | **AN - Alarmas** | 4d? | 2018-06-25 | 2018-06-27 |  |  |
| 62 | AN - Requerimientos de Negocio | 2d? | 2018-06-25 | 2018-06-26 | 59 | Fernando Nava [37.5%] |
| 63 | AN - Casos de Uso | 2d? | 2018-06-26 | 2018-06-27 | 62 | Fernando Nava [37.5%] |
| 64 | **AN - Reportes** | 4d? | 2018-06-27 | 2018-06-29 |  |  |
| 65 | AN - Requerimientos de Negocio | 2d? | 2018-06-27 | 2018-06-28 | 63 | Fernando Nava [37.5%] |
| 66 | AN - Casos de Uso | 2d? | 2018-06-28 | 2018-06-29 | 65 | Fernando Nava [37.5%] |
| 67 | **AN - Indicadores de gestión** | 4d? | 2018-06-29 | 2018-07-03 |  |  |
| 68 | AN - Requerimientos de Negocio | 2d? | 2018-06-29 | 2018-07-02 | 66 | Fernando Nava [37.5%] |
| 69 | AN - Casos de Uso | 2d? | 2018-07-02 | 2018-07-03 | 68 | Fernando Nava [37.5%] |
| 70 | AT - Revisión interna | 2d | 2018-05-28 A | 2018-05-28 A | 69 | ITSC [12.5%] |
| 75 | AT - Requerimientos de Negocio | 2d | 2018-05-30 | 2018-05-31 | 72 | Omar Santiago/Fernando Nava [75%] |
| 76 | AT - Casos de Uso | 16.88d? | 2018-05-31 | 2018-06-12 | 75 | Omar Santiago/Fernando Nava |
| 172 | Validacion de documentacion, ultimos ajustes | 2d? | 2018-07-09 | 2018-07-10 | 171 | Omar Santiago/Fernando Nava [75%] |
| 250 | Configuracion de Java 7 u 8 | 2d? | 2018-06-04 | 2018-06-05 | 247 | Omar Santiago [75%] |
| 251 | Configuracion de Mysql y complementos | 2d? | 2018-06-05 | 2018-06-06 | 250 | Omar Santiago [75%] |
| 252 | Configuracion de Apache Tomcat | 2d? | 2018-06-06 | 2018-06-07 | 251 | Omar Santiago [75%] |
| 253 | Configuracion AppWeb v1 | 5d? | 2018-06-07 | 2018-06-12 | 252 | Omar Santiago |
| 254 | **PI - Pruebas Integrales** | 14d? | 2018-06-12 | 2018-06-21 |  |  |
| 285 | PI - Cierre Pruebas Integrales | 2d? | 2018-06-21 | 2018-06-22 | 284 | Omar Santiago/Fernando Nava/ITSC [25%] |
| 286 | **LB - Liberacion a Produccion** | 2d? | 2018-06-22 | 2018-06-25 |  |  |
| 287 | LB - Liberacion y Cierre | 2d? | 2018-06-22 | 2018-06-25 | 285 | Omar Santiago/Fernando Nava/ITSC |

Removed: 2 Inicio de Actividades; 7 AT - Casos de Uso (Junta de Entendimiento); 124 LB - Liberacion Modulo 1; 126 AT Analisis de Tecnico; 127 IAT - Revisión de documentación entregada por Negocio; 128 AT - Requerimientos de Negocio (Junta de Entendimiento); 129 AT - Casos de Uso (Junta de Entendimiento); 130 AT - Actualizacion de propuesta de Arquitectura de Solucion; 131 AT - Requerimientos tecnicos; 132 AT - Analisis tecnico; 133 AT - Requerimientos de solucion; 134 AT - Escalabilidad; 135 AT - Modelado BD; 136 AT - Herramientas para solucion; 137 AT - Aplicación responsiva para navegadores web; 138 AT - Peer Review y Vo Bo Arquitectura de Solucion; 153 Diseño y Construcción; 154 CC - Revision del documento de Arquitectura de Solucion; 166 LB - Liberacion Modulo 2; 167 Modulo Solicitud; 168 AT Analisis de Tecnico; 169 IAT - Revisión de documentación entregada por Negocio; 170 AT - Requerimientos de Negocio (Junta de Entendimiento); 171 AT - Casos de Uso (Junta de Entendimiento); 172 AT - Actualizacion de propuesta de Arquitectura de Solucion; 173 AT - Requerimientos tecnicos; 174 AT - Analisis tecnico; 175 AT - Requerimientos de solucion; 176 AT - Escalabilidad; 177 AT - Modelado BD; 178 AT - Herramientas para solucion; 179 AT - Aplicación responsiva para navegadores web; 180 AT - Peer Review y Vo Bo Arquitectura de Solucion; 201 Diseño y Construcción; 202 CC - Revision del documento de Arquitectura de Solucion; 226 LB - Liberacion Modulo 2; 227 Modulo Alarmas; 228 AT Analisis de Tecnico; 229 IAT - Revisión de documentación entregada por Negocio; 230 AT - Requerimientos de Negocio (Junta de Entendimiento); 231 AT - Casos de Uso (Junta de Entendimiento); 232 AT - Actualizacion de propuesta de Arquitectura de Solucion; 233 AT - Requerimientos tecnicos; 234 AT - Analisis tecnico; 235 AT - Requerimientos de solucion; 236 AT - Escalabilidad; 237 AT - Modelado BD; 238 AT - Herramientas para solucion; 239 AT - Aplicación responsiva para navegadores web; 240 AT - Peer Review y Vo Bo Arquitectura de Solucion; 255 Diseño y Construcción; 256 CC - Revision del documento de Arquitectura de Solucion; 268 LB - Liberacion Modulo 3

Changed:

| ID | Task | Start | Finish | Duration | Complete | Total float | Predecessors | Other |
| --- | --- | --- | --- | --- | --- | --- | --- | --- |
| 1 | **001-ITSC_TMS Plan de Analisis y Desarrollo** | 2018-05-29 → 2018-05-24 A (-5d) | 2018-09-13 → 2018-08-17 (-27d) | 100d? → 124d? | 0% → 1% |  |  | baseline start none → 2018-05-24; baseline finish none → 2018-08-21 |
| 6 | AN - Requerimientos de Negocio | 2018-07-28 → 2018-05-24 (-65d) | 2018-07-30 → 2018-05-24 (-67d) | 1d? → 1.6d |  | 42d → 77.45d | 142 → none | was named AT - Revisión con el usuario; resources none → Fernando Nava [31.2%]; baseline start none → 2018-06-15; baseline finish none → 2018-06-18 |
| 9 | AN - Requerimientos de Negocio | 2018-08-18 → 2018-05-28 (-82d) | 2018-08-18 → 2018-05-29 (-81d) | 1d? → 0.5d? |  | 23d → 77.45d | 11 → 7 | was named AT - Peer Review y Vo Bo; resources none → Fernando Nava; baseline start none → 2018-06-15; baseline finish none → 2018-06-15 |
| 10 | AN - Casos de Uso | 2018-08-17 → 2018-05-29 (-80d) | 2018-08-18 → 2018-05-29 (-81d) | 1d? → 1.25d? |  | 24d → 77.45d | 158 → 9 | was named AT - Revisión con el usuario; resources none → Fernando Nava; baseline start none → 2018-06-15; baseline finish none → 2018-06-18 |
| 11 | **AN - Catalogo Actores-Roles** | 2018-08-17 → 2018-05-29 (-80d) | 2018-08-18 → 2018-06-01 (-78d) | 1d? → 5.6d? |  | 23d → 77.45d | 158 → none | was named AT - Ajustes de comentarios del usuario; baseline start none → 2018-06-18; baseline finish none → 2018-06-20 |
| 13 | AN - Casos de Uso | 2018-09-07 → 2018-05-30 (-100d) | 2018-09-07 → 2018-06-01 (-98d) | 1d → 4d? |  | 5d → 77.45d | 15 → 12 | was named AT - Peer Review y Vo Bo; resources none → Fernando Nava [31.2%]; baseline start none → 2018-06-19; baseline finish none → 2018-06-20 |
| 14 | **AN - Catalogo Contratos** | 2018-09-06 → 2018-06-01 (-97d) | 2018-09-06 → 2018-06-06 (-92d) | 1d? → 5.6d? |  | 6d → 77.45d | 168 → none | was named AT - Revisión con el usuario; baseline start none → 2018-06-18; baseline finish none → 2018-06-20 |
| 15 | AN - Requerimientos de Negocio | 2018-09-06 → 2018-06-01 (-97d) | 2018-09-06 → 2018-06-04 (-94d) | 1d? → 1.6d? |  | 5d → 77.45d | 168 → 13 | was named AT - Ajustes de comentarios del usuario; resources none → Fernando Nava [31.2%]; baseline start none → 2018-06-18; baseline finish none → 2018-06-19 |
| 71 | AT - Ajustes de comentarios del usuario | 2018-06-22 → 2018-05-29 (-24d) | 2018-06-23 → 2018-05-29 (-25d) | 1d? → 1.33d |  | 75d → 58.36d | 132 → 70 | resources none → ITSC [12.5%]; cliente; baseline start none → 2018-05-29; baseline finish none → 2018-05-29 |
| 72 | AT - Peer Review y Vo Bo | 2018-06-23 → 2018-05-29 (-25d) | 2018-06-23 → 2018-05-30 (-24d) | 1d? → 0.73d |  | 75d → 58.36d |  | resources none → ITSC; Omar Santiago; baseline start none → 2018-05-30; baseline finish none → 2018-05-30 |
| 73 | **AT Analisis de Tecnico** | 2018-06-02 → 2018-05-24 A (-9d) | 2018-06-23 → 2018-07-09 (+16d) | 21d? → 65.64d? | 0% → 1% | 0d → 58.36d |  | baseline start none → 2018-05-24; baseline finish none → 2018-08-02 |
| 74 | **IAT - Revisión de documentación entregada por Negocio** | 2018-06-02 → 2018-05-30 (-3d) | 2018-06-04 → 2018-06-12 (+8d) | 2d → 18.88d? |  | 0d → 58.36d |  | baseline start none → 2018-05-31; baseline finish none → 2018-06-13 |
| 77 | **AT - Elaboracion de propuesta de Arquitectura de Solucion** | 2018-06-04 → 2018-06-12 (+8d) | 2018-06-07 → 2018-06-21 (+14d) | 3d → 14d? |  | 0d → 58.36d |  | baseline start none → 2018-06-13; baseline finish none → 2018-06-14 |
| 78 | AT - Requerimientos tecnicos | 2018-06-04 → 2018-06-12 (+8d) | 2018-06-05 → 2018-06-13 (+8d) | 1d → 2d? |  | 93d → 58.36d | AT - Casos de Uso (Junta de Entendimiento) → 76 | resources none → Omar Santiago [87.5%]; baseline start none → 2018-06-13; baseline finish none → 2018-06-14 |
| 79 | AT - Analisis tecnico | 2018-06-04 → 2018-06-13 (+9d) | 2018-06-05 → 2018-06-14 (+9d) | 1d → 2d? |  | 0d → 58.36d | AT - Casos de Uso (Junta de Entendimiento) → 78 | resources none → Omar Santiago [87.5%]; baseline start none → 2018-06-13; baseline finish none → 2018-06-14 |
| 80 | AT - Requerimientos de solucion | 2018-06-05 → 2018-06-14 (+9d) | 2018-06-06 → 2018-06-15 (+9d) | 1d → 2d? |  | 92d → 58.36d |  | resources none → Omar Santiago [87.5%]; baseline start none → 2018-06-13; baseline finish none → 2018-06-14 |
| 81 | AT - Escalabilidad | 2018-06-05 → 2018-06-15 (+10d) | 2018-06-06 → 2018-06-18 (+12d) | 1d → 2d? |  | 0d → 58.36d | 79 → 80 | resources none → Omar Santiago [87.5%]; baseline start none → 2018-06-13; baseline finish none → 2018-06-14 |
| 82 | AT - Modelado BD | 2018-06-06 → 2018-06-18 (+12d) | 2018-06-07 → 2018-06-19 (+12d) | 1d → 2d? |  | 91d → 58.36d |  | resources none → Omar Santiago [87.5%]; baseline start none → 2018-06-13; baseline finish none → 2018-06-14 |
| 83 | AT - Herramientas para solucion | 2018-06-06 → 2018-06-19 (+13d) | 2018-06-07 → 2018-06-20 (+13d) | 1d → 2d? |  | 91d → 58.36d | 81 → 82 | resources none → Omar Santiago [62.5%]; baseline start none → 2018-06-13; baseline finish none → 2018-06-14 |
| 84 | AT - Aplicación responsiva para navegadores web | 2018-06-06 → 2018-06-20 (+14d) | 2018-06-07 → 2018-06-21 (+14d) | 1d → 2d? |  | 91d → 58.36d | 81 → 83 | resources none → Omar Santiago [62.5%]; baseline start none → 2018-06-13; baseline finish none → 2018-06-14 |
| 85 | AT - Peer Review y Vo Bo Arquitectura de Solucion | 2018-06-06 → 2018-06-21 (+15d) | 2018-06-07 → 2018-06-25 (+18d) | 1d → 4d |  | 0d → 58.36d | 81 → 84 | resources none → Omar Santiago [25%]; baseline start none → 2018-06-14; baseline finish none → 2018-06-15 |
| 86 | **AT - Elaboración de documentos AT** | 2018-06-07 → 2018-05-24 A (-14d) | 2018-06-22 → 2018-07-09 (+17d) | 14d → 65.64d? | 0% → 1% | 0d → 58.36d |  | baseline start none → 2018-05-24; baseline finish none → 2018-07-30 |
| 87 | **AT - Modulo Catalogos Maestros** | 2018-06-07 → 2018-05-24 A (-14d) | 2018-06-22 → 2018-07-09 (+17d) | 14d → 65.64d? | 0% → 1% | 0d → 58.36d |  | baseline start none → 2018-05-24; baseline finish none → 2018-07-05 |
| 88 | **AT - Catalogo Rol** | 2018-06-07 → 2018-06-25 (+18d) | 2018-06-09 → 2018-06-27 (+18d) | 2d → 4.8d |  | 0d → 74.26d |  | baseline start none → 2018-06-15; baseline finish none → 2018-06-19 |
| 89 | AT - Elaboración Bocetos de Archivos | 2018-06-07 → 2018-06-25 (+18d) | 2018-06-08 → 2018-06-26 (+18d) | 1d → 1.6d |  | 0d → 74.26d |  | resources none → Fernando Nava [31.2%]; baseline start none → 2018-06-15; baseline finish none → 2018-06-18 |
| 90 | AT - Elaboración Bocetos de Pantallas | 2018-06-08 → 2018-06-26 (+18d) | 2018-06-09 → 2018-06-27 (+18d) | 1d → 3.2d |  | 0d → 74.26d |  | resources none → Fernando Nava [31.2%]; baseline start none → 2018-06-18; baseline finish none → 2018-06-19 |
| 91 | **AT - Catalogo Actores** | 2018-06-07 → 2018-06-25 (+18d) | 2018-06-09 → 2018-06-26 (+17d) | 2d → 1.5d? |  | 87d → 58.36d |  | baseline start none → 2018-06-15; baseline finish none → 2018-06-18 |
| 92 | AT - Elaboración Bocetos de Archivos | 2018-06-07 → 2018-06-25 (+18d) | 2018-06-08 → 2018-06-25 (+17d) | 1d → 0.5d? |  | 87d → 58.36d |  | resources none → Fernando Nava; baseline start none → 2018-06-15; baseline finish none → 2018-06-15 |
| 93 | AT - Elaboración Bocetos de Pantallas | 2018-06-08 → 2018-06-25 (+17d) | 2018-06-09 → 2018-06-26 (+17d) | 1d → 1d? |  | 87d → 58.36d |  | resources none → Fernando Nava; baseline start none → 2018-06-15; baseline finish none → 2018-06-18 |
| 94 | **AT - Catalogo Actores-Roles** | 2018-06-09 → 2018-06-26 (+17d) | 2018-06-11 → 2018-06-28 (+17d) | 2d → 4.8d? |  | 87d → 72.76d |  | baseline start none → 2018-06-18; baseline finish none → 2018-06-20 |
| 95 | AT - Elaboración Bocetos de Archivos | 2018-06-09 → 2018-06-26 (+17d) | 2018-06-09 → 2018-06-27 (+18d) | 1d → 1.6d? |  | 87d → 72.76d | 90 → 93 | resources none → Fernando Nava [31.2%]; baseline start none → 2018-06-18; baseline finish none → 2018-06-19 |
| 96 | AT - Elaboración Bocetos de Pantallas | 2018-06-11 → 2018-06-27 (+16d) | 2018-06-11 → 2018-06-28 (+17d) | 1d → 3.2d? |  | 87d → 72.76d |  | resources none → Fernando Nava [31.2%]; baseline start none → 2018-06-19; baseline finish none → 2018-06-20 |
| 97 | **AT - Catalogo Contratos** | 2018-06-09 → 2018-06-26 (+17d) | 2018-06-11 → 2018-06-28 (+17d) | 2d → 4.8d? |  | 87d → 58.36d |  | baseline start none → 2018-06-18; baseline finish none → 2018-06-20 |
| 98 | AT - Elaboración Bocetos de Archivos | 2018-06-09 → 2018-06-26 (+17d) | 2018-06-09 → 2018-06-27 (+18d) | 1d → 1.6d? |  | 87d → 58.36d |  | resources none → Fernando Nava [31.2%]; baseline start none → 2018-06-18; baseline finish none → 2018-06-19 |
| 99 | AT - Elaboración Bocetos de Pantallas | 2018-06-11 → 2018-06-27 (+16d) | 2018-06-11 → 2018-06-28 (+17d) | 1d → 3.2d? |  | 87d → 58.36d |  | resources none → Fernando Nava [31.2%]; baseline start none → 2018-06-19; baseline finish none → 2018-06-20 |
| 100 | **AT - Catalogo Tipos de Tarifa** | 2018-06-09 → 2018-06-28 (+19d) | 2018-06-11 → 2018-07-03 (+22d) | 2d → 4.8d? |  | 0d → 67.96d |  | baseline start none → 2018-06-20; baseline finish none → 2018-06-22 |
| 101 | AT - Elaboración Bocetos de Archivos | 2018-06-09 → 2018-06-28 (+19d) | 2018-06-09 → 2018-06-29 (+20d) | 1d → 1.6d? |  | 0d → 67.96d | 90 → 99 | resources none → Fernando Nava [31.2%]; baseline start none → 2018-06-20; baseline finish none → 2018-06-21 |
| 102 | AT - Elaboración Bocetos de Pantallas | 2018-06-11 → 2018-06-29 (+18d) | 2018-06-11 → 2018-07-03 (+22d) | 1d → 3.2d? |  | 0d → 67.96d |  | resources none → Fernando Nava [31.2%]; baseline start none → 2018-06-21; baseline finish none → 2018-06-22 |
| 103 | **AT - Catalogo Tarifa** | 2018-06-09 → 2018-06-28 (+19d) | 2018-06-11 → 2018-07-03 (+22d) | 2d → 4.8d? |  | 79d → 58.36d |  | baseline start none → 2018-06-20; baseline finish none → 2018-06-22 |
| 104 | AT - Elaboración Bocetos de Archivos | 2018-06-09 → 2018-06-28 (+19d) | 2018-06-09 → 2018-06-29 (+20d) | 1d → 1.6d? |  | 79d → 58.36d | 90 → 99 | resources none → Fernando Nava [31.2%]; baseline start none → 2018-06-20; baseline finish none → 2018-06-21 |
| 105 | AT - Elaboración Bocetos de Pantallas | 2018-06-11 → 2018-06-29 (+18d) | 2018-06-11 → 2018-07-03 (+22d) | 1d → 3.2d? |  | 79d → 58.36d |  | resources none → Fernando Nava [31.2%]; baseline start none → 2018-06-21; baseline finish none → 2018-06-22 |
| 106 | **AT - Catalogo Conceptos de Tarifa** | 2018-06-12 → 2018-07-03 (+21d) | 2018-06-13 → 2018-07-05 (+22d) | 2d → 4.8d? |  | 0d → 58.36d |  | baseline start none → 2018-06-22; baseline finish none → 2018-06-27 |
| 107 | AT - Elaboración Bocetos de Archivos | 2018-06-12 → 2018-07-03 (+21d) | 2018-06-12 → 2018-07-03 (+21d) | 1d → 1.6d? |  | 0d → 58.36d | 102 → 105 | resources none → Fernando Nava [31.2%]; baseline start none → 2018-06-22; baseline finish none → 2018-06-26 |
| 108 | AT - Elaboración Bocetos de Pantallas | 2018-06-13 → 2018-07-03 (+20d) | 2018-06-13 → 2018-07-05 (+22d) | 1d → 3.2d? |  | 0d → 63.16d |  | resources none → Fernando Nava [31.2%]; baseline start none → 2018-06-26; baseline finish none → 2018-06-27 |
| 109 | **AT - Catalogo Choferes** | 2018-06-12 → 2018-07-03 (+21d) | 2018-06-13 → 2018-07-05 (+22d) | 2d → 4.8d? |  | 79d → 59.96d |  | baseline start none → 2018-06-22; baseline finish none → 2018-06-27 |
| 110 | AT - Elaboración Bocetos de Archivos | 2018-06-12 → 2018-07-03 (+21d) | 2018-06-12 → 2018-07-03 (+21d) | 1d → 1.6d? |  | 79d → 66.36d |  | resources none → Fernando Nava [31.2%]; baseline start none → 2018-06-22; baseline finish none → 2018-06-26 |
| 111 | AT - Elaboración Bocetos de Pantallas | 2018-06-13 → 2018-07-03 (+20d) | 2018-06-13 → 2018-07-05 (+22d) | 1d → 3.2d? |  | 79d → 58.36d | 110 → 107 | resources none → Fernando Nava [31.2%]; baseline start none → 2018-06-26; baseline finish none → 2018-06-27 |
| 112 | **AT - Catalogo Camiones** | 2018-06-14 → 2018-07-05 (+21d) | 2018-06-15 → 2018-07-09 (+24d) | 2d → 4.8d? |  | 0d → 58.36d |  | baseline start none → 2018-06-27; baseline finish none → 2018-06-29 |
| 113 | AT - Elaboración Bocetos de Archivos | 2018-06-14 → 2018-07-05 (+21d) | 2018-06-14 → 2018-07-06 (+22d) | 1d → 1.6d? |  | 0d → 58.36d | 108 → 111 | resources none → Fernando Nava [31.2%]; baseline start none → 2018-06-27; baseline finish none → 2018-06-28 |
| 114 | AT - Elaboración Bocetos de Pantallas | 2018-06-15 → 2018-07-06 (+21d) | 2018-06-15 → 2018-07-09 (+24d) | 1d → 3.2d? |  | 0d → 58.36d |  | resources none → Fernando Nava [31.2%]; baseline start none → 2018-06-28; baseline finish none → 2018-06-29 |
| 115 | **AT - Catalogo Responsables de Incidencias** | 2018-06-14 → 2018-05-24 A (-21d) | 2018-06-15 → 2018-05-25 (-21d) | 2d → 2.38d? | 0% → 35% | 79d → 0d |  | baseline start none → 2018-05-24; baseline finish none → 2018-06-29 |
| 116 | AT - Elaboración Bocetos de Archivos | 2018-06-14 → 2018-05-24 A (-21d) | 2018-06-14 → 2018-05-24 A (-21d) | 1d → 0.5d? | 0% → 100% | 79d → none |  | resources none → Fernando Nava; baseline start none → 2018-05-24; baseline finish none → 2018-06-28 |
| 117 | AT - Elaboración Bocetos de Pantallas | 2018-06-15 → 2018-05-24 A (-22d) | 2018-06-15 → 2018-05-25 (-21d) | 1d → 2.38d? | 0% → 21% | 79d → 0d |  | resources none → Fernando Nava; baseline start none → 2018-05-24; baseline finish none → 2018-06-29 |
| 118 | **AT - Catalogo Tipos de Incidencias** | 2018-06-16 → 2018-05-25 (-22d) | 2018-06-18 → 2018-05-29 (-20d) | 2d → 4.8d? |  | 0d → 116.82d |  | baseline start none → 2018-06-29; baseline finish none → 2018-07-03 |
| 119 | AT - Elaboración Bocetos de Archivos | 2018-06-16 → 2018-05-25 (-22d) | 2018-06-16 → 2018-05-25 (-22d) | 1d → 1.6d? |  | 0d → 116.82d | 114 → 117 | resources none → Fernando Nava [31.2%]; baseline start none → 2018-06-29; baseline finish none → 2018-07-02 |
| 120 | AT - Elaboración Bocetos de Pantallas | 2018-06-16 → 2018-05-25 (-22d) | 2018-06-18 → 2018-05-29 (-20d) | 1d → 3.2d? |  | 0d → 116.82d |  | resources none → Fernando Nava [31.2%]; baseline start none → 2018-07-02; baseline finish none → 2018-07-03 |
| 121 | **AT - Catalogo Tipos de Viaje** | 2018-06-16 → 2018-05-25 (-22d) | 2018-06-18 → 2018-05-29 (-20d) | 2d → 4.8d? |  | 79d → 0d |  | baseline start none → 2018-06-29; baseline finish none → 2018-07-03 |
| 122 | AT - Elaboración Bocetos de Archivos | 2018-06-16 → 2018-05-25 (-22d) | 2018-06-16 → 2018-05-25 (-22d) | 1d → 1.6d? |  | 79d → 0d |  | resources none → Fernando Nava [31.2%]; baseline start none → 2018-06-29; baseline finish none → 2018-07-02 |
| 123 | AT - Elaboración Bocetos de Pantallas | 2018-06-16 → 2018-05-25 (-22d) | 2018-06-18 → 2018-05-29 (-20d) | 1d → 3.2d? |  | 79d → 0d |  | resources none → Fernando Nava [31.2%]; baseline start none → 2018-07-02; baseline finish none → 2018-07-03 |
| 124 | **AT - Catalogo Tipos de Carga/Descarga** | 2018-06-18 → 2018-05-29 (-20d) | 2018-06-20 → 2018-05-31 (-20d) | 2d → 4.8d? |  | 0d → 112.02d |  | baseline start none → 2018-07-03; baseline finish none → 2018-07-05 |
| 125 | AT - Elaboración Bocetos de Archivos | 2018-06-18 → 2018-05-29 (-20d) | 2018-06-19 → 2018-05-30 (-20d) | 1d → 1.6d? |  | 0d → 112.02d | 120 → 123 | resources none → Fernando Nava [31.2%]; baseline start none → 2018-07-03; baseline finish none → 2018-07-04 |
| 126 | AT - Elaboración Bocetos de Pantallas | 2018-06-19 → 2018-05-30 (-20d) | 2018-06-20 → 2018-05-31 (-20d) | 1d → 3.2d? |  | 0d → 112.02d |  | resources none → Fernando Nava [31.2%]; baseline start none → 2018-07-04; baseline finish none → 2018-07-05 |
| 127 | **AT - Catalogo Clientes de Entrega** | 2018-06-18 → 2018-05-29 (-20d) | 2018-06-20 → 2018-05-31 (-20d) | 2d → 4.8d? |  | 79d → 112.02d |  | baseline start none → 2018-07-03; baseline finish none → 2018-07-05 |
| 128 | AT - Elaboración Bocetos de Archivos | 2018-06-18 → 2018-05-29 (-20d) | 2018-06-19 → 2018-05-30 (-20d) | 1d → 1.6d? |  | 79d → 112.02d |  | resources none → Fernando Nava [31.2%]; baseline start none → 2018-07-03; baseline finish none → 2018-07-04 |
| 129 | AT - Elaboración Bocetos de Pantallas | 2018-06-19 → 2018-05-30 (-20d) | 2018-06-20 → 2018-05-31 (-20d) | 1d → 3.2d? |  | 79d → 112.02d |  | resources none → Fernando Nava [31.2%]; baseline start none → 2018-07-04; baseline finish none → 2018-07-05 |
| 130 | **AT - Catalogo Clientes Solicidates** | 2018-06-20 → 2018-05-29 (-22d) | 2018-06-22 → 2018-05-31 (-22d) | 2d → 4.8d? |  |  |  | baseline start none → 2018-07-03; baseline finish none → 2018-07-05 |
| 131 | AT - Elaboración Bocetos de Archivos | 2018-06-20 → 2018-05-29 (-22d) | 2018-06-21 → 2018-05-30 (-22d) | 1d → 1.6d? |  |  | 126 → 123 | resources none → Fernando Nava [31.2%]; baseline start none → 2018-07-03; baseline finish none → 2018-07-04 |
| 132 | AT - Elaboración Bocetos de Pantallas | 2018-06-21 → 2018-05-30 (-22d) | 2018-06-22 → 2018-05-31 (-22d) | 1d → 3.2d? |  |  |  | resources none → Fernando Nava [31.2%]; baseline start none → 2018-07-04; baseline finish none → 2018-07-05 |
| 133 | **AT - Modulo Seguridad** | 2018-07-25 → 2018-05-31 (-55d) | 2018-07-28 → 2018-06-08 (-50d) | 4d → 11.2d? |  |  |  | baseline start none → 2018-07-05; baseline finish none → 2018-07-12 |
| 134 | **AT - Roles** | 2018-07-25 → 2018-05-31 (-55d) | 2018-07-26 → 2018-06-06 (-50d) | 2d → 6.4d? |  | 0d → 105.62d |  | baseline start none → 2018-07-05; baseline finish none → 2018-07-10 |

| ID | Task | Start | Finish | Duration | Total float | Predecessors | Other |
| --- | --- | --- | --- | --- | --- | --- | --- |
| 135 | AT - Elaboración Bocetos de Archivos | 2018-07-25 → 2018-05-31 (-55d) | 2018-07-25 → 2018-06-04 (-51d) | 1d → 2.4d? | 0d → 105.62d | AT - Peer Review y Vo Bo Arquitectura de Solucion → 132 | resources none → Fernando Nava [31.2%]; baseline start none → 2018-07-05; baseline finish none → 2018-07-09 |
| 136 | AT - Elaboración Bocetos de Pantallas | 2018-07-26 → 2018-06-04 (-52d) | 2018-07-26 → 2018-06-06 (-50d) | 1d → 4d? | 0d → 105.62d |  | resources none → Fernando Nava [31.2%]; baseline start none → 2018-07-09; baseline finish none → 2018-07-10 |
| 137 | **AT - Configuracion** | 2018-07-25 → 2018-05-31 (-55d) | 2018-07-26 → 2018-06-06 (-50d) | 2d → 6.4d? | 45d → 0d |  | baseline start none → 2018-07-05; baseline finish none → 2018-07-10 |
| 138 | AT - Elaboración Bocetos de Archivos | 2018-07-25 → 2018-05-31 (-55d) | 2018-07-25 → 2018-06-04 (-51d) | 1d → 2.4d? | 45d → 0d | AT - Peer Review y Vo Bo Arquitectura de Solucion → 132 | resources none → Fernando Nava [31.2%]; baseline start none → 2018-07-05; baseline finish none → 2018-07-09 |
| 139 | AT - Elaboración Bocetos de Pantallas | 2018-07-26 → 2018-06-04 (-52d) | 2018-07-26 → 2018-06-06 (-50d) | 1d → 4d? | 45d → 0d |  | resources none → Fernando Nava [31.2%]; baseline start none → 2018-07-09; baseline finish none → 2018-07-10 |
| 140 | **AT - Permisos** | 2018-07-27 → 2018-06-06 (-51d) | 2018-07-28 → 2018-06-08 (-50d) | 2d → 4.8d? |  |  | baseline start none → 2018-07-10; baseline finish none → 2018-07-12 |
| 141 | AT - Elaboración Bocetos de Archivos | 2018-07-27 → 2018-06-06 (-51d) | 2018-07-27 → 2018-06-07 (-50d) | 1d → 2.4d? |  | 136 → 139 | resources none → Fernando Nava [31.2%]; baseline start none → 2018-07-10; baseline finish none → 2018-07-11 |
| 142 | AT - Elaboración Bocetos de Pantallas | 2018-07-28 → 2018-06-07 (-51d) | 2018-07-28 → 2018-06-08 (-50d) | 1d → 2.4d? |  |  | resources none → Fernando Nava [31.2%]; baseline start none → 2018-07-11; baseline finish none → 2018-07-12 |
| 143 | **AT - Modulo Solicitudes** | 2018-08-11 → 2018-06-08 (-64d) | 2018-08-17 → 2018-06-27 (-51d) | 6d → 26.67d? |  |  | baseline start none → 2018-07-12; baseline finish none → 2018-07-24 |
| 144 | **AT - Cliente - Solicitud de Transporte** | 2018-08-11 → 2018-06-08 (-64d) | 2018-08-13 → 2018-06-13 (-61d) | 2d → 5.33d? | 27d → 0d |  | baseline start none → 2018-07-12; baseline finish none → 2018-07-17 |
| 145 | AT - Elaboración Bocetos de Archivos | 2018-08-11 → 2018-06-08 (-64d) | 2018-08-11 → 2018-06-11 (-61d) | 1d → 2d? | 27d → 0d | AT - Aplicación responsiva para navegadores web → 142 | resources none → Fernando Nava [37.5%]; baseline start none → 2018-07-12; baseline finish none → 2018-07-13 |
| 146 | AT - Elaboración Bocetos de Pantallas | 2018-08-11 → 2018-06-11 (-61d) | 2018-08-13 → 2018-06-13 (-61d) | 1d → 3.33d? | 27d → 0d |  | resources none → Fernando Nava [37.5%]; baseline start none → 2018-07-13; baseline finish none → 2018-07-17 |
| 147 | **AT - Trafico - Valoracion del Viaje** | 2018-08-11 → 2018-06-13 (-59d) | 2018-08-13 → 2018-06-15 (-59d) | 2d → 5.33d? |  |  | baseline start none → 2018-07-12; baseline finish none → 2018-07-17 |
| 148 | AT - Elaboración Bocetos de Archivos | 2018-08-11 → 2018-06-13 (-59d) | 2018-08-11 → 2018-06-14 (-58d) | 1d → 2d? |  | AT - Aplicación responsiva para navegadores web → 146 | resources none → Fernando Nava [37.5%]; baseline start none → 2018-07-12; baseline finish none → 2018-07-13 |
| 149 | AT - Elaboración Bocetos de Pantallas | 2018-08-11 → 2018-06-14 (-58d) | 2018-08-13 → 2018-06-15 (-59d) | 1d → 3.33d? |  |  | resources none → Fernando Nava [37.5%]; baseline start none → 2018-07-13; baseline finish none → 2018-07-17 |
| 150 | **AT - Distribucion - Asugnacion de Unidad y Carga** | 2018-08-13 → 2018-06-15 (-59d) | 2018-08-15 → 2018-06-20 (-56d) | 2d → 5.33d? | 27d → 0d |  | baseline start none → 2018-07-17; baseline finish none → 2018-07-19 |
| 151 | AT - Elaboración Bocetos de Archivos | 2018-08-13 → 2018-06-15 (-59d) | 2018-08-14 → 2018-06-18 (-57d) | 1d → 2d? | 27d → 0d | 146 → 149 | resources none → Fernando Nava [37.5%]; baseline start none → 2018-07-17; baseline finish none → 2018-07-18 |
| 152 | AT - Elaboración Bocetos de Pantallas | 2018-08-14 → 2018-06-18 (-57d) | 2018-08-15 → 2018-06-20 (-56d) | 1d → 3.33d? | 27d → 0d |  | resources none → Fernando Nava [37.5%]; baseline start none → 2018-07-18; baseline finish none → 2018-07-19 |
| 153 | **AT - Operador CL - Operación y Descarga** | 2018-08-13 → 2018-06-20 (-54d) | 2018-08-15 → 2018-06-25 (-51d) | 2d → 5.33d? |  |  | baseline start none → 2018-07-17; baseline finish none → 2018-07-19 |
| 154 | AT - Elaboración Bocetos de Archivos | 2018-08-13 → 2018-06-20 (-54d) | 2018-08-14 → 2018-06-21 (-54d) | 1d → 2d? |  | 149 → 152 | resources none → Fernando Nava [37.5%]; baseline start none → 2018-07-17; baseline finish none → 2018-07-18 |
| 155 | AT - Elaboración Bocetos de Pantallas | 2018-08-14 → 2018-06-21 (-54d) | 2018-08-15 → 2018-06-25 (-51d) | 1d → 3.33d? |  |  | resources none → Fernando Nava [37.5%]; baseline start none → 2018-07-18; baseline finish none → 2018-07-19 |
| 156 | **AT - Distribucion - Cierre del Viaje y Facturacion** | 2018-08-15 → 2018-06-25 (-51d) | 2018-08-17 → 2018-06-27 (-51d) | 2d → 5.33d? |  |  | baseline start none → 2018-07-19; baseline finish none → 2018-07-24 |
| 157 | AT - Elaboración Bocetos de Archivos | 2018-08-15 → 2018-06-25 (-51d) | 2018-08-16 → 2018-06-26 (-51d) | 1d → 2d? |  |  | resources none → Fernando Nava [37.5%]; baseline start none → 2018-07-19; baseline finish none → 2018-07-23 |
| 158 | AT - Elaboración Bocetos de Pantallas | 2018-08-16 → 2018-06-26 (-51d) | 2018-08-17 → 2018-06-27 (-51d) | 1d → 3.33d? |  |  | resources none → Fernando Nava [37.5%]; baseline start none → 2018-07-23; baseline finish none → 2018-07-24 |
| 159 | **AT - Modulo Alarmas/Reportes/Indicadores de gestión** | 2018-09-01 → 2018-06-27 (-66d) | 2018-09-07 → 2018-07-04 (-65d) | 6d? → 9.33d? |  |  | baseline start none → 2018-07-24; baseline finish none → 2018-07-30 |
| 160 | **AT - Alarmas** | 2018-09-01 → 2018-06-27 (-66d) | 2018-09-03 → 2018-07-02 (-63d) | 2d → 4.67d? | 9d → 69.49d |  | baseline start none → 2018-07-24; baseline finish none → 2018-07-26 |
| 161 | AT - Elaboración Bocetos de Archivos | 2018-09-01 → 2018-06-27 (-66d) | 2018-09-01 → 2018-06-29 (-64d) | 1d → 2.67d? | 9d → 69.49d | AT - Peer Review y Vo Bo Arquitectura de Solucion → 158 | resources none → Fernando Nava [37.5%]; baseline start none → 2018-07-24; baseline finish none → 2018-07-25 |
| 162 | AT - Elaboración Bocetos de Pantallas | 2018-09-03 → 2018-06-29 (-66d) | 2018-09-03 → 2018-07-02 (-63d) | 1d → 2d? | 9d → 69.49d |  | resources none → Fernando Nava [37.5%]; baseline start none → 2018-07-25; baseline finish none → 2018-07-26 |
| 163 | **AT - Reportes** | 2018-09-01 → 2018-06-27 (-66d) | 2018-09-03 → 2018-07-02 (-63d) | 2d → 4.67d? |  |  | baseline start none → 2018-07-24; baseline finish none → 2018-07-26 |
| 164 | AT - Elaboración Bocetos de Archivos | 2018-09-01 → 2018-06-27 (-66d) | 2018-09-01 → 2018-06-29 (-64d) | 1d → 2.67d? |  | AT - Peer Review y Vo Bo Arquitectura de Solucion → 158 | resources none → Fernando Nava [37.5%]; baseline start none → 2018-07-24; baseline finish none → 2018-07-25 |
| 165 | AT - Elaboración Bocetos de Pantallas | 2018-09-03 → 2018-06-29 (-66d) | 2018-09-03 → 2018-07-02 (-63d) | 1d → 2d? |  |  | resources none → Fernando Nava [37.5%]; baseline start none → 2018-07-25; baseline finish none → 2018-07-26 |
| 166 | **AT - Indicadores de gestión** | 2018-09-04 → 2018-07-02 (-64d) | 2018-09-05 → 2018-07-04 (-63d) | 2d → 4.67d? |  |  | baseline start none → 2018-07-26; baseline finish none → 2018-07-30 |
| 167 | AT - Elaboración Bocetos de Archivos | 2018-09-04 → 2018-07-02 (-64d) | 2018-09-04 → 2018-07-03 (-63d) | 1d → 2.67d? |  |  | resources none → Fernando Nava [37.5%]; baseline start none → 2018-07-26; baseline finish none → 2018-07-27 |
| 168 | AT - Elaboración Bocetos de Pantallas | 2018-09-05 → 2018-07-03 (-64d) | 2018-09-05 → 2018-07-04 (-63d) | 1d → 2d? |  |  | resources none → Fernando Nava [37.5%]; baseline start none → 2018-07-27; baseline finish none → 2018-07-30 |
| 169 | AT - Revisión con el usuario | 2018-06-22 → 2018-07-04 (+12d) | 2018-06-23 → 2018-07-05 (+12d) |  | 76d → 0d | 132 → 142, 158, 168, 59, 69 | resources none → Omar Santiago/Fernando Nava/ITSC; baseline start none → 2018-07-30; baseline finish none → 2018-07-31 |
| 170 | AT - Ajustes de comentarios del usuario | 2018-07-28 → 2018-07-05 (-23d) | 2018-07-30 → 2018-07-09 (-21d) | 1d? → 4d? | 41d → 0d | 142 → 169 | resources none → Omar Santiago/Fernando Nava [37.5%]; baseline start none → 2018-07-31; baseline finish none → 2018-08-01 |
| 171 | AT - Peer Review y Vo Bo | 2018-07-30 → 2018-07-09 (-21d) | 2018-07-31 → 2018-07-09 (-22d) | 1d? → 0.5d? | 41d → 0d |  | resources none → Omar Santiago/Fernando Nava/ITSC; baseline start none → 2018-08-01; baseline finish none → 2018-08-02 |
| 173 | **CC_Desarrollo** | 2018-06-22 → 2018-05-29 (-24d) | 2018-07-18 → 2018-08-17 (+30d) | 24d? → 116.82d? |  |  | baseline start none → 2018-06-15; baseline finish none → 2018-08-21 |
| 174 | **Diseño y Construcción** | 2018-06-22 → 2018-05-29 (-24d) | 2018-07-12 → 2018-08-17 (+36d) | 19d → 116.82d? |  |  | baseline start none → 2018-06-15; baseline finish none → 2018-08-20 |
| 175 | CC - Revision del documento de Arquitectura de Solucion | 2018-06-22 → 2018-06-25 (+3d) | 2018-06-23 → 2018-06-26 (+3d) | 1d → 2d? | 0d → 67.73d | 132 → 85 | resources none → Omar Santiago [37.5%]; baseline start none → 2018-06-15; baseline finish none → 2018-06-18 |
| 176 | **CC - Instalacion y Configuracion** | 2018-06-23 → 2018-06-26 (+3d) | 2018-06-26 → 2018-07-03 (+7d) | 3d → 9.33d? | 0d → 67.73d |  | baseline start none → 2018-06-18; baseline finish none → 2018-06-25 |
| 177 | CC - Instalacion de herramientas de desarrollo | 2018-06-23 → 2018-06-26 (+3d) | 2018-06-23 → 2018-06-29 (+6d) | 1d → 6d? | 0d → 71.06d |  | resources none → Omar Santiago [37.5%]; baseline start none → 2018-06-18; baseline finish none → 2018-06-21 |
| 178 | CC - Instalacion de herramientas de gestion de Bases de Datos | 2018-06-25 → 2018-06-26 (+1d) | 2018-06-25 → 2018-06-29 (+4d) | 1d → 6d? | 0d → 67.73d | 177 → 175 | resources none → Omar Santiago [37.5%]; baseline start none → 2018-06-18; baseline finish none → 2018-06-21 |
| 179 | CC - Instalacion de herramienta para soportar aplicaciones web | 2018-06-26 → 2018-06-29 (+3d) | 2018-06-26 → 2018-07-03 (+7d) | 1d → 3.33d? | 0d → 67.73d |  | resources none → Omar Santiago [37.5%]; baseline start none → 2018-06-21; baseline finish none → 2018-06-25 |
| 180 | **CC - Desarrollo** | 2018-06-27 → 2018-05-29 (-29d) | 2018-07-12 → 2018-08-17 (+36d) | 15d → 116.82d? |  |  | baseline start none → 2018-06-18; baseline finish none → 2018-07-31 |
| 181 | **CC - Modulo Catalogos Maestros** | 2018-06-27 → 2018-07-10 (+13d) | 2018-07-12 → 2018-07-31 (+19d) | 15d → 30d? |  |  | baseline start none → 2018-06-18; baseline finish none → 2018-07-06 |
| 182 | CC - Catalogo Rol | 2018-06-27 → 2018-07-10 (+13d) | 2018-06-27 → 2018-07-11 (+14d) | 1d → 2d? |  | 179 → 172 | resources none → Omar Santiago [50%]; baseline start none → 2018-06-19; baseline finish none → 2018-06-20 |
| 183 | CC - Catalogo Actores | 2018-06-28 → 2018-07-11 (+13d) | 2018-06-28 → 2018-07-12 (+14d) | 1d → 2d? |  |  | resources none → Omar Santiago [50%]; baseline start none → 2018-06-18; baseline finish none → 2018-06-19 |
| 184 | CC - Catalogo Actores-Roles | 2018-06-29 → 2018-07-12 (+13d) | 2018-06-29 → 2018-07-13 (+14d) | 1d → 2d? |  |  | resources none → Omar Santiago [50%]; baseline start none → 2018-06-20; baseline finish none → 2018-06-21 |
| 185 | CC - Catalogo Contratos | 2018-06-30 → 2018-07-13 (+13d) | 2018-06-30 → 2018-07-16 (+16d) | 1d → 2d? |  |  | resources none → Omar Santiago [50%]; baseline start none → 2018-06-20; baseline finish none → 2018-06-21 |
| 186 | CC - Catalogo Tipos de Tarifa | 2018-06-30 → 2018-07-16 (+16d) | 2018-07-02 → 2018-07-17 (+15d) | 1d → 2d? |  |  | resources none → Omar Santiago [50%]; baseline start none → 2018-06-22; baseline finish none → 2018-06-25 |
| 187 | CC - Catalogo Tarifa | 2018-07-02 → 2018-07-17 (+15d) | 2018-07-03 → 2018-07-18 (+15d) | 1d → 2d? |  |  | resources none → Omar Santiago [50%]; baseline start none → 2018-06-22; baseline finish none → 2018-06-25 |
| 188 | CC - Catalogo Conceptos de Tarifa | 2018-07-03 → 2018-07-18 (+15d) | 2018-07-04 → 2018-07-19 (+15d) | 1d → 2d? |  |  | resources none → Omar Santiago [50%]; baseline start none → 2018-06-27; baseline finish none → 2018-06-28 |
| 189 | CC - Catalogo Choferes | 2018-07-04 → 2018-07-19 (+15d) | 2018-07-05 → 2018-07-20 (+15d) | 1d → 2d? |  |  | resources none → Omar Santiago [50%]; baseline start none → 2018-06-27; baseline finish none → 2018-06-28 |
| 190 | CC - Catalogo Camiones | 2018-07-05 → 2018-07-20 (+15d) | 2018-07-06 → 2018-07-23 (+17d) | 1d → 2d? |  |  | resources none → Omar Santiago [50%]; baseline start none → 2018-06-29; baseline finish none → 2018-07-02 |
| 191 | CC - Catalogo Responsables de Incidencias | 2018-07-06 → 2018-07-23 (+17d) | 2018-07-07 → 2018-07-24 (+17d) | 1d → 2d? |  |  | resources none → Omar Santiago [50%]; baseline start none → 2018-06-29; baseline finish none → 2018-07-02 |
| 192 | CC - Catalogo Tipos de Incidencias | 2018-07-07 → 2018-07-24 (+17d) | 2018-07-07 → 2018-07-25 (+18d) | 1d → 2d? |  |  | resources none → Omar Santiago [50%]; baseline start none → 2018-07-03; baseline finish none → 2018-07-04 |
| 193 | CC - Catalogo Tipos de Viaje | 2018-07-09 → 2018-07-25 (+16d) | 2018-07-09 → 2018-07-26 (+17d) | 1d → 2d? |  |  | resources none → Omar Santiago [50%]; baseline start none → 2018-07-03; baseline finish none → 2018-07-04 |
| 194 | CC - Catalogo Tipos de Carga/Descarga | 2018-07-10 → 2018-07-26 (+16d) | 2018-07-10 → 2018-07-27 (+17d) | 1d → 2d? |  |  | resources none → Omar Santiago [50%]; baseline start none → 2018-07-05; baseline finish none → 2018-07-06 |
| 195 | CC - Catalogo Clientes de Entrega | 2018-07-11 → 2018-07-27 (+16d) | 2018-07-11 → 2018-07-30 (+19d) | 1d → 2d? |  |  | resources none → Omar Santiago [50%]; baseline start none → 2018-07-05; baseline finish none → 2018-07-06 |
| 196 | CC - Catalogo Clientes Solicidates | 2018-07-12 → 2018-07-30 (+18d) | 2018-07-12 → 2018-07-31 (+19d) | 1d → 2d? |  |  | resources none → Omar Santiago [50%]; baseline start none → 2018-07-05; baseline finish none → 2018-07-06 |
| 197 | **CC - Modulo Seguridad** | 2018-07-28 → 2018-07-31 (+3d) | 2018-08-04 → 2018-08-07 (+3d) | 7d? → 11d? |  |  | baseline start none → 2018-07-10; baseline finish none → 2018-07-16 |
| 198 | CC - Roles | 2018-07-30 → 2018-07-31 (+1d) | 2018-07-31 → 2018-08-02 (+2d) | 1d → 3.5d? |  | CC - Revision del documento de Arquitectura de Solucion → 196 | resources none → Omar Santiago [50%]; baseline start none → 2018-07-10; baseline finish none → 2018-07-11 |
| 199 | CC - Configuracion | 2018-07-31 → 2018-08-02 (+2d) | 2018-08-01 → 2018-08-03 (+2d) | 1d → 3.5d? |  |  | resources none → Omar Santiago [50%]; baseline start none → 2018-07-10; baseline finish none → 2018-07-11 |
| 200 | CC - Permisos | 2018-08-01 → 2018-08-03 (+2d) | 2018-08-02 → 2018-08-07 (+5d) | 1d → 4d? |  |  | resources none → Omar Santiago [50%]; baseline start none → 2018-07-12; baseline finish none → 2018-07-16 |
| 201 | **CC - Modulo Solicitudes** | 2018-08-17 → 2018-08-07 (-10d) | 2018-08-28 → 2018-08-17 (-11d) | 10d? → 16.32d? |  |  | baseline start none → 2018-07-17; baseline finish none → 2018-07-30 |
| 202 | CC - Cliente - Solicitud de Transporte | 2018-08-18 → 2018-08-07 (-11d) | 2018-08-18 → 2018-08-08 (-10d) | 1d → 2d? |  | CC - Revision del documento de Arquitectura de Solucion → 200 | resources none → Omar Santiago [87.5%]; baseline start none → 2018-07-17; baseline finish none → 2018-07-18 |
| 203 | CC - Trafico - Valoracion del Viaje | 2018-08-20 → 2018-08-08 (-12d) | 2018-08-20 → 2018-08-09 (-11d) | 1d → 2d? |  |  | resources none → Omar Santiago [87.5%]; baseline start none → 2018-07-17; baseline finish none → 2018-07-18 |
| 204 | CC - Distribucion - Asugnacion de Unidad y Carga | 2018-08-21 → 2018-08-09 (-12d) | 2018-08-21 → 2018-08-10 (-11d) | 1d → 2d? |  |  | resources none → Omar Santiago [87.5%]; baseline start none → 2018-07-19; baseline finish none → 2018-07-20 |
| 205 | CC - Operador CL - Operación y Descarga | 2018-08-22 → 2018-08-10 (-12d) | 2018-08-22 → 2018-08-13 (-9d) | 1d → 2d? |  |  | resources none → Omar Santiago [87.5%]; baseline start none → 2018-07-19; baseline finish none → 2018-07-20 |

| ID | Task | Start | Finish | Duration | Total float | Predecessors | Other |
| --- | --- | --- | --- | --- | --- | --- | --- |
| 206 | CC - Distribucion - Cierre del Viaje y Facturacion | 2018-08-23 → 2018-08-13 (-10d) | 2018-08-23 → 2018-08-14 (-9d) | 1d → 2d? |  |  | resources none → Omar Santiago [87.5%]; baseline start none → 2018-07-24; baseline finish none → 2018-07-25 |
| 207 | **CC - Primer Check point operativo** | 2018-08-24 → 2018-08-14 (-10d) | 2018-08-25 → 2018-08-16 (-9d) | 2d → 4d? | 15d → 0d |  | baseline start none → 2018-07-25; baseline finish none → 2018-07-27 |
| 208 | CC - Primer Check point operativo | 2018-08-24 → 2018-08-14 (-10d) | 2018-08-24 → 2018-08-15 (-9d) | 1d → 2d? | 15d → 0d |  | resources none → Omar Santiago/ITSC [25%]; baseline start none → 2018-07-25; baseline finish none → 2018-07-26 |
| 209 | CC - Actualizacion de los puntos del primer Ckeckpoint | 2018-08-25 → 2018-08-15 (-10d) | 2018-08-25 → 2018-08-16 (-9d) | 1d → 2d? | 15d → 0d |  | resources none → Omar Santiago/ITSC [87.5%]; baseline start none → 2018-07-26; baseline finish none → 2018-07-27 |
| 210 | **CC - Segundo Check point operativo** | 2018-08-25 → 2018-08-16 (-9d) | 2018-08-28 → 2018-08-17 (-11d) | 2d → 2.32d? | 15d → 0d |  | baseline start none → 2018-07-27; baseline finish none → 2018-07-30 |
| 211 | CC - Segundo Check point operativo | 2018-08-25 → 2018-08-16 (-9d) | 2018-08-27 → 2018-08-17 (-10d) | 1d → 0.57d? | 15d → 0d |  | resources none → Omar Santiago/ITSC [87.5%]; baseline start none → 2018-07-27; baseline finish none → 2018-07-27 |
| 212 | CC - Actualizacion de los puntos del segundo Check point operativo | 2018-08-27 → 2018-08-17 (-10d) | 2018-08-28 → 2018-08-17 (-11d) | 1d → 1.75d? | 15d → 0d |  | resources none → Omar Santiago/ITSC; baseline start none → 2018-07-27; baseline finish none → 2018-07-30 |
| 213 | **CC - Modulo Alarmas/Reportes/Indicadores de gestión** | 2018-09-06 → 2018-05-29 (-100d) | 2018-09-13 → 2018-06-01 (-104d) | 7d? → 6d? | 0d → 79.82d |  | baseline start none → 2018-07-26; baseline finish none → 2018-07-31 |
| 214 | CC - Alarmas | 2018-09-07 → 2018-05-29 (-101d) | 2018-09-07 → 2018-05-30 (-100d) | 1d → 2d? | 0d → 79.82d | CC - Revision del documento de Arquitectura de Solucion → 121 | resources none → Omar Santiago [75%]; baseline start none → 2018-07-26; baseline finish none → 2018-07-27 |
| 215 | CC - Reportes | 2018-09-08 → 2018-05-30 (-101d) | 2018-09-08 → 2018-05-31 (-100d) | 1d → 2d? | 0d → 79.82d |  | resources none → Omar Santiago [75%]; baseline start none → 2018-07-26; baseline finish none → 2018-07-27 |
| 216 | CC - Indicadores de gestión | 2018-09-08 → 2018-05-31 (-100d) | 2018-09-10 → 2018-06-01 (-101d) | 1d → 2d? | 0d → 79.82d |  | resources none → Omar Santiago [75%]; baseline start none → 2018-07-30; baseline finish none → 2018-07-31 |
| 217 | **PU - Pruebas Untarias** | 2018-06-28 → 2018-05-30 (-29d) | 2018-07-18 → 2018-08-15 (+28d) | 19d? → 110.5d? | 14d → 4.32d |  | baseline start none → 2018-06-19; baseline finish none → 2018-08-01 |
| 218 | **PU - Modulo Catalogos Maestros** | 2018-06-28 → 2018-07-11 (+13d) | 2018-07-13 → 2018-08-01 (+19d) | 15d → 30d? | 14d → 25.32d |  | baseline start none → 2018-06-19; baseline finish none → 2018-07-09 |
| 219 | PU - Catalogo Rol | 2018-06-28 → 2018-07-11 (+13d) | 2018-06-28 → 2018-07-12 (+14d) | 1d → 2d? | 71d → 53.32d |  | resources none → Omar Santiago/Fernando Nava [25%]; baseline start none → 2018-06-20; baseline finish none → 2018-06-21 |
| 220 | PU - Catalogo Actores | 2018-06-29 → 2018-07-12 (+13d) | 2018-06-29 → 2018-07-12 (+13d) | 1d → 0.5d? | 70d → 52.82d |  | resources none → Omar Santiago/Fernando Nava; baseline start none → 2018-06-19; baseline finish none → 2018-06-19 |
| 221 | PU - Catalogo Actores-Roles | 2018-06-30 → 2018-07-13 (+13d) | 2018-06-30 → 2018-07-16 (+16d) | 1d → 2d? | 69d → 49.32d |  | resources none → Omar Santiago/Fernando Nava [25%]; baseline start none → 2018-06-21; baseline finish none → 2018-06-22 |
| 222 | PU - Catalogo Contratos | 2018-06-30 → 2018-07-16 (+16d) | 2018-07-02 → 2018-07-17 (+15d) | 1d → 2d? | 68d → 47.32d |  | resources none → Omar Santiago/Fernando Nava [25%]; baseline start none → 2018-06-21; baseline finish none → 2018-06-22 |
| 223 | PU - Catalogo Tipos de Tarifa | 2018-07-02 → 2018-07-17 (+15d) | 2018-07-03 → 2018-07-18 (+15d) | 1d → 2d? | 67d → 45.32d |  | resources none → Omar Santiago/Fernando Nava [25%]; baseline start none → 2018-06-25; baseline finish none → 2018-06-26 |
| 224 | PU - Catalogo Tarifa | 2018-07-03 → 2018-07-18 (+15d) | 2018-07-04 → 2018-07-19 (+15d) | 1d → 2d? | 66d → 43.32d |  | resources none → Omar Santiago/Fernando Nava [25%]; baseline start none → 2018-06-25; baseline finish none → 2018-06-26 |
| 225 | PU - Catalogo Conceptos de Tarifa | 2018-07-04 → 2018-07-19 (+15d) | 2018-07-05 → 2018-07-20 (+15d) | 1d → 2d? | 65d → 41.32d |  | resources none → Omar Santiago/Fernando Nava [25%]; baseline start none → 2018-06-28; baseline finish none → 2018-06-29 |
| 226 | PU - Catalogo Choferes | 2018-07-05 → 2018-07-20 (+15d) | 2018-07-06 → 2018-07-23 (+17d) | 1d → 2d? | 64d → 39.32d |  | resources none → Omar Santiago/Fernando Nava [25%]; baseline start none → 2018-06-28; baseline finish none → 2018-06-29 |
| 227 | PU - Catalogo Camiones | 2018-07-06 → 2018-07-23 (+17d) | 2018-07-07 → 2018-07-24 (+17d) | 1d → 2d? | 63d → 37.32d |  | resources none → Omar Santiago/Fernando Nava [25%]; baseline start none → 2018-07-02; baseline finish none → 2018-07-03 |
| 228 | PU - Catalogo Responsables de Incidencias | 2018-07-07 → 2018-07-24 (+17d) | 2018-07-07 → 2018-07-25 (+18d) | 1d → 2d? | 62d → 35.32d |  | resources none → Omar Santiago/Fernando Nava [25%]; baseline start none → 2018-07-02; baseline finish none → 2018-07-03 |
| 229 | PU - Catalogo Tipos de Incidencias | 2018-07-09 → 2018-07-25 (+16d) | 2018-07-09 → 2018-07-26 (+17d) | 1d → 2d? | 61d → 33.32d |  | resources none → Omar Santiago/Fernando Nava [25%]; baseline start none → 2018-07-04; baseline finish none → 2018-07-05 |
| 230 | PU - Catalogo Tipos de Viaje | 2018-07-10 → 2018-07-26 (+16d) | 2018-07-10 → 2018-07-27 (+17d) | 1d → 2d? | 60d → 31.32d |  | resources none → Omar Santiago/Fernando Nava [25%]; baseline start none → 2018-07-04; baseline finish none → 2018-07-05 |
| 231 | PU - Catalogo Tipos de Carga/Descarga | 2018-07-11 → 2018-07-27 (+16d) | 2018-07-11 → 2018-07-30 (+19d) | 1d → 2d? | 59d → 29.32d |  | resources none → Omar Santiago/Fernando Nava [25%]; baseline start none → 2018-07-06; baseline finish none → 2018-07-09 |
| 232 | PU - Catalogo Clientes de Entrega | 2018-07-12 → 2018-07-30 (+18d) | 2018-07-12 → 2018-07-31 (+19d) | 1d → 2d? | 58d → 27.32d |  | resources none → Omar Santiago/Fernando Nava [25%]; baseline start none → 2018-07-06; baseline finish none → 2018-07-09 |
| 233 | PU - Catalogo Clientes Solicidates | 2018-07-13 → 2018-07-31 (+18d) | 2018-07-13 → 2018-08-01 (+19d) | 1d → 2d? | 0d → 25.32d |  | resources none → Omar Santiago/Fernando Nava [25%]; baseline start none → 2018-07-06; baseline finish none → 2018-07-09 |
| 234 | **PU - Modulo Seguridad** | 2018-07-31 → 2018-08-02 (+2d) | 2018-08-03 → 2018-08-08 (+5d) | 3d → 9.5d? | 2d → 14.32d |  | baseline start none → 2018-07-11; baseline finish none → 2018-07-17 |
| 235 | PU - Roles | 2018-07-31 → 2018-08-02 (+2d) | 2018-08-01 → 2018-08-03 (+2d) | 1d → 2d? | 40d → 21.82d |  | resources none → Omar Santiago/Fernando Nava [25%]; baseline start none → 2018-07-11; baseline finish none → 2018-07-12 |
| 236 | PU - Configuracion | 2018-08-01 → 2018-08-03 (+2d) | 2018-08-02 → 2018-08-06 (+4d) | 1d → 2d? | 39d → 18.32d |  | resources none → Omar Santiago/Fernando Nava [25%]; baseline start none → 2018-07-11; baseline finish none → 2018-07-12 |
| 237 | PU - Permisos | 2018-08-02 → 2018-08-07 (+5d) | 2018-08-03 → 2018-08-08 (+5d) | 1d → 2d? | 0d → 14.32d |  | resources none → Omar Santiago/Fernando Nava [25%]; baseline start none → 2018-07-16; baseline finish none → 2018-07-17 |
| 238 | **PU - Modulo Solicitudes** | 2018-08-20 → 2018-08-08 (-12d) | 2018-08-24 → 2018-08-15 (-9d) | 5d → 10d? | 4d → 4.32d |  | baseline start none → 2018-07-18; baseline finish none → 2018-07-26 |
| 239 | PU - Cliente - Solicitud de Transporte | 2018-08-20 → 2018-08-08 (-12d) | 2018-08-20 → 2018-08-09 (-11d) | 1d → 2d? | 22d → 12.32d |  | resources none → Omar Santiago/Fernando Nava [37.5%]; baseline start none → 2018-07-18; baseline finish none → 2018-07-19 |
| 240 | PU - Trafico - Valoracion del Viaje | 2018-08-21 → 2018-08-09 (-12d) | 2018-08-21 → 2018-08-10 (-11d) | 1d → 2d? | 21d → 10.32d |  | resources none → Omar Santiago/Fernando Nava [37.5%]; baseline start none → 2018-07-18; baseline finish none → 2018-07-19 |
| 241 | PU - Distribucion - Asugnacion de Unidad y Carga | 2018-08-22 → 2018-08-10 (-12d) | 2018-08-22 → 2018-08-13 (-9d) | 1d → 2d? | 20d → 8.32d |  | resources none → Omar Santiago/Fernando Nava [37.5%]; baseline start none → 2018-07-20; baseline finish none → 2018-07-23 |
| 242 | PU - Operador CL - Operación y Descarga | 2018-08-23 → 2018-08-13 (-10d) | 2018-08-23 → 2018-08-14 (-9d) | 1d → 2d? | 19d → 6.32d |  | resources none → Omar Santiago/Fernando Nava [37.5%]; baseline start none → 2018-07-20; baseline finish none → 2018-07-23 |
| 243 | PU - Distribucion - Cierre del Viaje y Facturacion | 2018-08-24 → 2018-08-14 (-10d) | 2018-08-24 → 2018-08-15 (-9d) | 1d → 2d? | 0d → 4.32d |  | resources none → Omar Santiago/Fernando Nava [37.5%]; baseline start none → 2018-07-25; baseline finish none → 2018-07-26 |
| 244 | **PU - Modulo Alarmas/Reportes/Indicadores de gestión** | 2018-09-08 → 2018-05-30 (-101d) | 2018-09-11 → 2018-06-04 (-99d) | 3d → 6d? | 2d → 83.82d |  | baseline start none → 2018-07-27; baseline finish none → 2018-08-01 |
| 245 | PU - Alarmas | 2018-09-08 → 2018-05-30 (-101d) | 2018-09-08 → 2018-05-31 (-100d) | 1d → 2d? | 4d → 112.82d |  | resources none → Omar Santiago/Fernando Nava [37.5%]; baseline start none → 2018-07-27; baseline finish none → 2018-07-30 |
| 246 | PU - Reportes | 2018-09-08 → 2018-05-31 (-100d) | 2018-09-10 → 2018-06-01 (-101d) | 1d → 2d? | 3d → 110.82d |  | resources none → Omar Santiago/Fernando Nava [37.5%]; baseline start none → 2018-07-27; baseline finish none → 2018-07-30 |
| 247 | PU - Indicadores de gestión | 2018-09-10 → 2018-06-01 (-101d) | 2018-09-11 → 2018-06-04 (-99d) | 1d → 2d? | 0d → 79.82d |  | resources none → Omar Santiago/Fernando Nava [37.5%]; baseline start none → 2018-07-31; baseline finish none → 2018-08-01 |
| 248 | **TD - Termina Desarrollo** | 2018-06-02 → 2018-06-04 (+2d) | 2018-07-18 → 2018-06-12 (-36d) | 43d? → 11d? | 0d → 79.82d |  | was named Modulo Catalogos Maestros; baseline start none → 2018-08-01; baseline finish none → 2018-08-09 |
| 249 | **TD - Configuracion en Ambiente QA o TEST** | 2018-07-18 → 2018-06-04 (-44d) | 2018-08-04 → 2018-06-12 (-53d) | 17d? → 11d? | 0d → 79.82d |  | was named Modulo Seguridad; baseline start none → 2018-08-01; baseline finish none → 2018-08-09 |
| 255 | **PI - Modulo Catalogos Maestros** | 2018-07-14 → 2018-06-12 (-32d) | 2018-07-18 → 2018-06-14 (-34d) |  | 0d → 79.82d |  | baseline start none → 2018-08-09; baseline finish none → 2018-08-13 |
| 256 | PI - Catalogo Rol | 2018-07-14 → 2018-06-12 (-32d) | 2018-07-14 → 2018-06-13 (-31d) | 1d? → 2d? | 56d → 95.82d | 233 → 249 | resources none → Omar Santiago/Fernando Nava/ITSC [12.5%]; baseline start none → 2018-08-09; baseline finish none → 2018-08-10 |
| 257 | PI - Catalogo Actores | 2018-07-14 → 2018-06-12 (-32d) | 2018-07-14 → 2018-06-13 (-31d) | 1d? → 2d? | 56d → 95.82d | 233 → 249 | resources none → Omar Santiago/Fernando Nava/ITSC [12.5%]; baseline start none → 2018-08-09; baseline finish none → 2018-08-10 |
| 258 | PI - Catalogo Actores-Roles | 2018-07-14 → 2018-06-12 (-32d) | 2018-07-14 → 2018-06-13 (-31d) | 1d? → 2d? | 56d → 95.82d | 233 → 249 | resources none → Omar Santiago/Fernando Nava/ITSC [12.5%]; baseline start none → 2018-08-09; baseline finish none → 2018-08-10 |
| 259 | PI - Catalogo Contratos | 2018-07-14 → 2018-06-12 (-32d) | 2018-07-14 → 2018-06-13 (-31d) | 1d? → 2d? | 56d → 95.82d | 233 → 249 | resources none → Omar Santiago/Fernando Nava/ITSC [12.5%]; baseline start none → 2018-08-09; baseline finish none → 2018-08-10 |
| 260 | PI - Catalogo Tipos de Tarifa | 2018-07-14 → 2018-06-12 (-32d) | 2018-07-14 → 2018-06-13 (-31d) | 1d? → 2d? | 0d → 95.82d | 233 → 249 | resources none → Omar Santiago/Fernando Nava/ITSC [12.5%]; baseline start none → 2018-08-09; baseline finish none → 2018-08-10 |
| 261 | PI - Catalogo Tarifa | 2018-07-14 → 2018-06-12 (-32d) | 2018-07-16 → 2018-06-13 (-33d) | 1d? → 2d? | 55d → 95.82d | 260 → 249 | resources none → Omar Santiago/Fernando Nava/ITSC [12.5%]; baseline start none → 2018-08-09; baseline finish none → 2018-08-10 |
| 262 | PI - Catalogo Conceptos de Tarifa | 2018-07-14 → 2018-06-12 (-32d) | 2018-07-16 → 2018-06-13 (-33d) | 1d? → 2d? | 55d → 95.82d | 260 → 249 | resources none → Omar Santiago/Fernando Nava/ITSC [12.5%]; baseline start none → 2018-08-09; baseline finish none → 2018-08-10 |
| 263 | PI - Catalogo Choferes | 2018-07-14 → 2018-06-12 (-32d) | 2018-07-16 → 2018-06-13 (-33d) | 1d? → 2d? | 55d → 95.82d | 260 → 249 | resources none → Omar Santiago/Fernando Nava/ITSC [12.5%]; baseline start none → 2018-08-09; baseline finish none → 2018-08-10 |
| 264 | PI - Catalogo Camiones | 2018-07-14 → 2018-06-12 (-32d) | 2018-07-16 → 2018-06-13 (-33d) | 1d? → 2d? | 0d → 95.82d | 260 → 249 | resources none → Omar Santiago/Fernando Nava/ITSC [12.5%]; baseline start none → 2018-08-09; baseline finish none → 2018-08-10 |
| 265 | PI - Catalogo Responsables de Incidencias | 2018-07-16 → 2018-06-12 (-34d) | 2018-07-17 → 2018-06-13 (-34d) | 1d? → 2d? | 54d → 79.82d | 264 → 249 | resources none → Omar Santiago/Fernando Nava/ITSC [12.5%]; baseline start none → 2018-08-09; baseline finish none → 2018-08-10 |
| 266 | PI - Catalogo Tipos de Incidencias | 2018-07-16 → 2018-06-13 (-33d) | 2018-07-17 → 2018-06-14 (-33d) | 1d? → 2d? | 54d → 93.82d | 264 → 265 | resources none → Omar Santiago/Fernando Nava/ITSC [12.5%]; baseline start none → 2018-08-10; baseline finish none → 2018-08-13 |
| 267 | PI - Catalogo Tipos de Viaje | 2018-07-16 → 2018-06-13 (-33d) | 2018-07-17 → 2018-06-14 (-33d) | 1d? → 2d? | 54d → 93.82d | 264 → 265 | resources none → Omar Santiago/Fernando Nava/ITSC [12.5%]; baseline start none → 2018-08-10; baseline finish none → 2018-08-13 |
| 268 | PI - Catalogo Tipos de Carga/Descarga | 2018-07-16 → 2018-06-13 (-33d) | 2018-07-17 → 2018-06-14 (-33d) | 1d? → 2d? | 0d → 93.82d | 264 → 265 | resources none → Omar Santiago/Fernando Nava/ITSC [12.5%]; baseline start none → 2018-08-10; baseline finish none → 2018-08-13 |
| 269 | PI - Catalogo Clientes de Entrega | 2018-07-17 → 2018-06-13 (-34d) | 2018-07-18 → 2018-06-14 (-34d) | 1d? → 2d? | 53d → 93.82d | 268 → 265 | resources none → Omar Santiago/Fernando Nava/ITSC [12.5%]; baseline start none → 2018-08-10; baseline finish none → 2018-08-13 |
| 270 | PI - Catalogo Clientes Solicidates | 2018-07-17 → 2018-06-13 (-34d) | 2018-07-18 → 2018-06-14 (-34d) | 1d? → 2d? | 53d → 79.82d | 268 → 265 | resources none → Omar Santiago/Fernando Nava/ITSC [12.5%]; baseline start none → 2018-08-10; baseline finish none → 2018-08-13 |
| 271 | **PI - Modulo Seguridad** | 2018-08-03 → 2018-06-14 (-50d) | 2018-08-04 → 2018-06-15 (-50d) |  | 0d → 79.82d |  | baseline start none → 2018-08-13; baseline finish none → 2018-08-14 |
| 272 | PI - Roles | 2018-08-03 → 2018-06-14 (-50d) | 2018-08-04 → 2018-06-15 (-50d) | 1d? → 2d? | 37d → 91.82d | 237 → 270 | resources none → Omar Santiago/Fernando Nava/ITSC [12.5%]; baseline start none → 2018-08-13; baseline finish none → 2018-08-14 |
| 273 | PI - Configuracion | 2018-08-03 → 2018-06-14 (-50d) | 2018-08-04 → 2018-06-15 (-50d) | 1d? → 2d? | 0d → 91.82d | 237 → 270 | resources none → Omar Santiago/Fernando Nava/ITSC [12.5%]; baseline start none → 2018-08-13; baseline finish none → 2018-08-14 |
| 274 | PI - Permisos | 2018-08-04 → 2018-06-14 (-51d) | 2018-08-04 → 2018-06-15 (-50d) | 1d? → 2d? | 36d → 79.82d | 273 → 270 | resources none → Omar Santiago/Fernando Nava/ITSC [12.5%]; baseline start none → 2018-08-13; baseline finish none → 2018-08-14 |
| 275 | **PI - Modulo Solicitudes** | 2018-08-25 → 2018-06-15 (-71d) | 2018-08-28 → 2018-06-19 (-70d) | 3d? → 4d? | 15d → 79.82d |  | baseline start none → 2018-08-14; baseline finish none → 2018-08-16 |
| 276 | PI - Cliente - Solicitud de Transporte | 2018-08-25 → 2018-06-15 (-71d) | 2018-08-25 → 2018-06-18 (-68d) | 1d? → 2d? | 17d → 89.82d | 243 → 274 | resources none → Omar Santiago/Fernando Nava/ITSC [25%]; baseline start none → 2018-08-14; baseline finish none → 2018-08-15 |
| 277 | PI - Trafico - Valoracion del Viaje | 2018-08-25 → 2018-06-15 (-71d) | 2018-08-25 → 2018-06-18 (-68d) | 1d? → 2d? | 15d → 89.82d | 243 → 274 | resources none → Omar Santiago/Fernando Nava/ITSC [25%]; baseline start none → 2018-08-14; baseline finish none → 2018-08-15 |
| 278 | PI - Distribucion - Asugnacion de Unidad y Carga | 2018-08-25 → 2018-06-15 (-71d) | 2018-08-27 → 2018-06-18 (-70d) | 1d? → 2d? | 16d → 79.82d | 277 → 274 | resources none → Omar Santiago/Fernando Nava/ITSC [25%]; baseline start none → 2018-08-14; baseline finish none → 2018-08-15 |
| 279 | PI - Operador CL - Operación y Descarga | 2018-08-25 → 2018-06-18 (-68d) | 2018-08-27 → 2018-06-19 (-69d) | 1d? → 2d? | 15d → 87.82d | 277 → 278 | resources none → Omar Santiago/Fernando Nava/ITSC [25%]; baseline start none → 2018-08-15; baseline finish none → 2018-08-16 |
| 280 | PI - Distribucion - Cierre del Viaje y Facturacion | 2018-08-27 → 2018-06-18 (-70d) | 2018-08-28 → 2018-06-19 (-70d) | 1d? → 2d? | 15d → 79.82d | 279 → 278 | resources none → Omar Santiago/Fernando Nava/ITSC [25%]; baseline start none → 2018-08-15; baseline finish none → 2018-08-16 |

| ID | Task | Start | Finish | Duration | Complete | Total float | Predecessors | Other |
| --- | --- | --- | --- | --- | --- | --- | --- | --- |
| 281 | **PI - Modulo Alarmas/Reportes/Indicadores de gestión** | 2018-09-11 → 2018-06-19 (-84d) | 2018-09-13 → 2018-06-21 (-84d) | 2d? → 4d? |  | 0d → 79.82d |  | baseline start none → 2018-08-16; baseline finish none → 2018-08-20 |
| 282 | PI - Alarmas | 2018-09-11 → 2018-06-19 (-84d) | 2018-09-12 → 2018-06-20 (-84d) | 1d? → 2d? |  | 1d → 85.82d | 247 → 280 | resources none → Omar Santiago/Fernando Nava/ITSC [25%]; baseline start none → 2018-08-16; baseline finish none → 2018-08-17 |
| 283 | PI - Reportes | 2018-09-11 → 2018-06-19 (-84d) | 2018-09-12 → 2018-06-20 (-84d) | 1d? → 2d? |  | 0d → 79.82d | 247 → 280 | resources none → Omar Santiago/Fernando Nava/ITSC [25%]; baseline start none → 2018-08-16; baseline finish none → 2018-08-17 |
| 284 | PI - Indicadores de gestión | 2018-09-12 → 2018-06-20 (-84d) | 2018-09-13 → 2018-06-21 (-84d) | 1d? → 2d? |  | 0d → 79.82d |  | resources none → Omar Santiago/Fernando Nava/ITSC [25%]; baseline start none → 2018-08-17; baseline finish none → 2018-08-20 |
| 288 | Monitoreo y Control | 2018-06-02 → 2018-05-24 A (-9d) | 2018-06-02 → 2018-05-24 A (-9d) | 1d → 2d? | 0% → 100% | 0d → none | Inicio de Actividades → none | was named AT - Requerimientos de Negocio (Junta de Entendimiento); baseline start none → 2018-05-24; baseline finish none → 2018-05-24 |
